# SAP Activate Methodology for Business Suite and On-Premise- Agile & Waterfall (2018)

Schedule from MS Project, 2018-12-12 to 2020-05-28.

## Calendars

- Standard: Mon-Fri 08:00-12:00, 13:00-17:00; Sat-Sun off.

## Resources

| Resource | Group |
| --- | --- |
| Руководитель проекта (PM) | Основной |
| Руководитель функционального направления (Functional Lead) | Основной |
| Технический руководитель / Архитектор (Technical Lead / Basis) | Основной |
| Специалист по миграции данных (Data Migration Specialist) | Привлекаемый |
| Специалист по интеграциям (Integration Specialist) | Привлекаемый |
| Руководитель тестирования / QA (Testing Lead) | Привлекаемый |
| Управление изменениями и обучение (Change Management & Training) | Привлекаемый |
| Бизнес-аналитик (BA) | Основной |
| Функциональный консультант | Основной |
| Технический консультант | Основной |
| Специалист по обучению и коммуникациям | Основной |
| Офис управления проектом / PMO (PMO) | Основной |
| Координатор проекта / Администратор проекта (PC) | Основной |

## Schedule

| ID | WBS | Task | Duration | Start | Finish | Predecessors | Total slack | Free slack | Constraint | Resources | Work | Workstream | FLAVORS |
| --- | --- | --- | --- | --- | --- | --- | --- | --- | --- | --- | --- | --- | --- |
| 2 | 1 | **Discover** | 21d | 2018-12-12 | 2019-01-09 |  | 51d | 0d |  |  | 296h |  |  |
| 3 | 1.1 | **Strategic Planning** | 7d | 2018-12-12 | 2018-12-20 |  | 51d | 0d |  | Координатор проекта / Администратор проекта (PC) | 56h | Application: Design & Configuration |  |
| 4 | 1.2 | Application Value and Scoping | 7d | 2019-01-01 | 2019-01-09 | 3 | 51d |  |  | Руководитель проекта (PM) | 56h | Application: Design & Configuration |  |
| 5 | 1.1.2 | Trial System Provisioning | 14d | 2018-12-12 | 2018-12-31 |  | 58d |  |  | Руководитель проекта (PM) | 112h | System & Data Migration |  |
| 6 | 1.1.3 | Stakeholder Identification | 4d | 2018-12-24 | 2018-12-31 |  | 58d | 0d | start no earlier than 2018-12-24 | Управление изменениями и обучение (Change Management & Training) | 32h | Application: Solution Adoption | Agile |
| 7 | 1.1.4 | **Value Discovery** | 5d | 2018-12-24 | 2018-12-28 | 6SS | 59d |  |  |  | 40h | Application: Solution Adoption | Waterfall ,Agile |
| 8 | 1.1.4.1 | Perform a benchmarking analysis | 1d | 2018-12-24 | 2018-12-24 |  | 59d | 0d |  | Бизнес-аналитик (BA) | 8h | Application: Solution Adoption | Waterfall ,Agile |
| 9 | 1.5.2 | Create a Value Case (Business Case) | 2d | 2018-12-25 | 2018-12-26 | 8 | 59d | 0d |  | Бизнес-аналитик (BA) | 16h | Application: Solution Adoption | Waterfall ,Agile |
| 10 | 1.1.4.3 | Create a Point of View (POV) document | 2d | 2018-12-27 | 2018-12-28 | 9 | 59d |  |  | Бизнес-аналитик (BA) | 16h | Application: Solution Adoption | Waterfall ,Agile |
| 11 | 2 | **Prepare** | 52d | 2019-01-10 | 2019-03-22 | 2 | 45d | 0d |  |  | 2136h |  |  |
| 12 | 2.1 | **Project Initiation** | 7d | 2019-01-10 | 2019-01-18 |  | 69d | 0d |  |  | 56h | Project Management | Waterfall ,Agile |
| 13 | 2.1.1 | Conduct Handover Meeting(s) from Opportunity Phase | 1d | 2019-01-10 | 2019-01-10 |  | 69d | 0d |  | Офис управления проектом / PMO (PMO) | 8h | Project Management | Waterfall ,Agile |
| 14 | 2.1.2 | Review Order Form with Customer | 1d | 2019-01-11 | 2019-01-11 | 13 | 69d | 0d | start no earlier than 2018-12-26 | Офис управления проектом / PMO (PMO) | 8h | Project Management | Waterfall ,Agile |
| 15 | 2.1.3 | Create Project Charter | 1d | 2019-01-14 | 2019-01-14 | 14 | 69d | 0d |  | Руководитель проекта (PM) | 8h | Project Management | Waterfall ,Agile |
| 16 | 2.1.4 | Identify Stakeholders, Stakeholders' Requirements and Expectations and Project/deliverable Acceptance Criteria | 1d | 2019-01-15 | 2019-01-15 | 15 | 69d | 0d |  | Руководитель функционального направления (Functional Lead) | 8h | Project Management | Waterfall ,Agile |
| 17 | 2.1.5 | Create Project Management Plan | 3d | 2019-01-16 | 2019-01-18 | 16 | 69d |  |  | Координатор проекта / Администратор проекта (PC) | 24h | Project Management | Waterfall ,Agile |
| 18 | 2.2 | **Establish Project Governance** | 5d | 2019-01-21 | 2019-01-25 | 12 | 69d | 0d |  |  | 40h | Project Management | Waterfall ,Agile |
| 19 | 2.2.1 | Define Roles and Responsibilities | 2d | 2019-01-21 | 2019-01-22 |  | 69d | 0d |  | Технический руководитель / Архитектор (Technical Lead / Basis) | 16h | Project Management | Waterfall ,Agile |
| 20 | 2.2.2 | Define Project Organization | 2d | 2019-01-23 | 2019-01-24 | 19 | 69d | 0d |  | Руководитель проекта (PM) | 16h | Project Management | Waterfall ,Agile |
| 21 | 2.2.3 | Review Project Management Plan | 1d | 2019-01-25 | 2019-01-25 | 20 | 69d |  |  | Офис управления проектом / PMO (PMO) | 8h | Project Management | Waterfall ,Agile |
| 22 | 2.3 | **Plan Project** | 16d | 2019-01-28 | 2019-02-18 | 18 | 69d |  |  |  | 128h | Project Management | Waterfall ,Agile |
| 23 | 2.3.1 | Create Scope Statement | 1d | 2019-01-28 | 2019-01-28 |  | 69d | 0d |  | Руководитель проекта (PM) | 8h | Project Management | Waterfall ,Agile |
| 24 | 2.3.2 | Create WBS | 2d | 2019-01-29 | 2019-01-30 | 23 | 69d | 0d |  | Координатор проекта / Администратор проекта (PC) | 16h | Project Management | Waterfall ,Agile |
| 25 | 2.3.3 | Create Project Schedule | 2d | 2019-01-31 | 2019-02-01 | 24 | 69d | 0d |  | Координатор проекта / Администратор проекта (PC) | 16h | Project Management | Waterfall ,Agile |
| 26 | 2.3.4 | Create Budget | 1d | 2019-02-04 | 2019-02-04 | 25 | 69d | 0d |  | Координатор проекта / Администратор проекта (PC) | 8h | Project Management | Waterfall ,Agile |
| 27 | 2.3.5 | Plan Quality | 2d | 2019-02-05 | 2019-02-06 | 26 | 69d | 0d |  | Координатор проекта / Администратор проекта (PC) | 16h | Project Management | Waterfall ,Agile |
| 28 | 2.3.6 | Plan Communications | 2d | 2019-02-07 | 2019-02-08 | 27 | 69d | 0d |  | Офис управления проектом / PMO (PMO) | 16h | Project Management | Waterfall ,Agile |
| 29 | 2.3.7 | Plan Risks | 2d | 2019-02-11 | 2019-02-12 | 28 | 69d | 0d |  | Координатор проекта / Администратор проекта (PC) | 16h | Project Management | Waterfall ,Agile |
| 30 | 2.3.8 | Plan Procurement | 2d | 2019-02-13 | 2019-02-14 | 29 | 69d | 0d |  | Координатор проекта / Администратор проекта (PC) | 16h | Project Management | Waterfall ,Agile |
| 31 | 2.3.9 | Plan Stakeholders Management | 2d | 2019-02-15 | 2019-02-18 | 30 | 69d |  |  | Офис управления проектом / PMO (PMO) | 16h | Project Management | Waterfall ,Agile |

Notes:
- 2: In the Discover Phase, customers become familiar with the benefits of SAP HANA and SAP BW/4HANA, and the benefits it can bring to customers&rsquo; business. .. &nbsp; &nbsp; new image . .. The phase is structured into two parts: .. .. In a first step many customers want to (re)define their analytics strategy, which includes the User Experience component (&lsquo;frontend analysis tools&rsquo;) as well as the the backend part e.g. with a data warehouse. In this step customers want to evaluate the role of SAP BW/4HANA in a newly redefined analytics landscape. Customers who have already participated In the SAP BW/4HANA Discovery Workshop already have a functional and technical overview and may have defined their specific approach. The Analytics Strategy Workshop works out potential customer-specific road map options. .. In a second step a trial system&nbsp;could be provisioned to support the impact evaluation. For trial systems there are 2 versions available in the SAP Cloud Appliance Library: .. SAP BW/4HANA 1.0 Developer Edition .. SAP BW/4HANA xl Edition . .. To learn about the current SAP BW/4HANA release, it is recommended to look at the central release information note of SAP BW/4HANA, and the release restriction note. Both are given for SAP BW/4HANA 1.0 in the accelerator section. .. Regarding SAP BW/4HANA releases and the availability of landscape transformation tools supporting the data transformation to SAP BW/4HANA you may check the product road map listed in the accelerator section. ..
- 3: Due to changing business models customers are in need of developing a digital transformation strategy. .. The digital transformation strategy should cover the whole SAP IT environment as displayed on the following picture. The enterprise software like ERP or CRM to the left is the stable core (referenced as &ldquo;mode 1&rdquo;) whereas the innovate part like SAP Cloud Platform is displayed to the right (referenced as &ldquo;mode 2&rdquo;). .. .. Industry trends and Best Practices need to be analyzed in the context of customer&rsquo;s business area. The aim is to define a comprehensive innovation strategy and road map based on new or enhanced business capabilities. Once the innovation strategy has been defined a target enterprise architecture for processes, data, application and integration needs to be developed to support the strategic needs. .. Requirements and Constraints .. This activity does not have any requirements or constraints, and can run any time. However it is recommended to run this activity upfront of the implementation project. .. Recommended Procedure: .. The procedure depends on the level of detail innovation options should be created and evaluated upfront. .. .. Create an Innovation Strategy and a High-Level Road Map : this&nbsp;activity&nbsp;describes a straight-forward way to document a company specific innovation strategy and road map within a short period of time. .. Accelerate Your Innovations with the help of the SAP Leonardo Innovation Services. This brand-new approach supports customers with fast innovation lifecycles. .. Create a 306-Degree View on Security : This is the first steps towards creation transparency on future security needs. Strategic planning is an ideal point in time to also re-think your security strategy, because the transformation project in combination with innovations may significantly change your security requirements. .. Define the Analytics Architecture : this activity clarifies how&nbsp;the SAP Solution&nbsp;fits best into the analytics strategy of the customer. . .. Results .. As a result, there is a high-level multi-year road map which describes the main change activities (including business driver), and sequences them on a time-line. .. . . &nbsp; . . .
- 4: Once the general innovation strategy and high-level road map has been defined, you will need to become familiar with your SAP Solution as such, and with the value it brings for your companies business. .. Furthermore, the impact on existing business processes need to be analyzing in more details. This may influence the implementation strategy for your Solution. .. Finally, a customer specific application scoping should be created.&nbsp; .. Recommended Procedure .. .. Discover and document the value of the SAP Solution&nbsp;for your company. .. Identify the impact of an SAP Solution&nbsp;implementation on your existing business processes. .. Perform a business scenario and solution mapping .. Define the implementation strategy by considering the target architecture .. Create a strategic road map based on the target architecture and implementation strategy . .. &nbsp; .. Results .. This information serves as key input into the customer business case. .. Furthermore, a first impact analysis may have identified show stoppers or road blocks, which could affect the implementation strategy, and which need to be addressed in additional planning and preparation activities. .
- 5: To support the value identification, and the impact evaluation in the Discover phase, it could be beneficial to have access to a trial system. At this point in time in the project, there is no hardware available to run&nbsp;a new SAP system&nbsp;on premise,therefore installing a pre-configured appliance is not possible. A cloud trial system is the preferred option in most cases. .. Requirements and Constraints .. User account at cloud provide required (e.g. Amazon Web Services (AWS). .. . Procedure .. You can access the SAP Cloud Appliance via the SAP Cloud Appliance Library (SAP CAL) and access all available Solutions. .. Please familiarize yoursef with SAP Cloud Appliance Library concepts before you begin using it. .. . &nbsp; . Results .. As a result, project members have access to the trial system for demoing, value identification, and impact evaluation. .. &nbsp; .. . How SAP Can Support .. SAP provides the cloud image of a pre-configured SAP system, which runs at the cloud provider. .
- 6: The purpose of this deliverable is to identify key stakeholders which may be critical to a successful project kick-off process. Some stakeholders may have been engaged in the project definition phase (prior to the project executin starting). Other relevant stakeholders might be the project executive sponsors as well as the project management executives. IT executives and business process experts might also be important to identify at this stage. Additionally, the project team should be identified as key stakeholders. .
- 7: The purpose of this deliverable is to formally recognize that a new project exists. It supports the decision to accept the project, align stakeholders - such as clients, customers, and SAP management - around a project and its scope, provide updated information for planning, and obtain a commitment to proceed. It ensures alignment between SAP, the customer&#39;s strategic direction, and the satisfaction of operational requirements. .
- 8: The purpose of this task is to leverage the SAP Value Lifecycle Manager tool to analyze existing business process execution in comparison to other similar organizations. .
- 9: Based on identified business process execution areas of interest, a Value Case can be developed. This Value Case can later be converted to a Business Case (if a solution scope is identified and a proposal for implementing a solution is created) .
- 10: The purpose of this task is to create a&nbsp; Point of View (POV) document. A POV is a statement that reflects the user&#39;s view on thigs. It&nbsp;&nbsp;can summarize the business challenges identified, along with the potential value of implementing an SAP solution to address said business challenges. .. POV = User + Needs + Insight .
- 11: The purpose of this phase is to provide the initial planning and preparation for the project. In this phase, the project is started, plans are finalized,&nbsp;project&nbsp;team is assigned, and work is under way to start the project optimally. .. .. Key Prepare Activities: .. .. Define project goals, a high-level scope, and a project plan .. Identify and quantify business value objectives .. Secure executive sponsorship .. Establish project standards,&nbsp;organization&nbsp;and governance .. Define and secure approval for the implementation/upgrade strategy .. Define roles and responsibilities for the project team .. Validate the project objectives .. Develop a project team training strategy, and start project team training .. Establish project management, tracking, and reporting mechanisms for value delivery .. Document all initiation activities in the project charter .. Pre-assemble (or establish) the project environment, infrastructure, and IT systems including SAP Solution Manage .. Prepare for the Explore phase .
- 12: The purpose of the Initiating Project deliverable is to formally recognize that a new project exists and initiate the work on the project. During this time, the project sponsor and project manager work to align stakeholders (such as clients, customers, and SAP management) around a project and its scope, provide updated information for planning, and obtain a commitment to proceed forward with the project. .. The key purpose of this process group is to align the stakeholders&#39; expectations with the project&#39;s purpose, give them visibility about the scope and objectives, show how their participation in the project can ensure that their expectations are achieved. .. As part of the initiation activities, the project manager conducts handover from the pre-project phase, creates a project charter document and scope statement document, and establishes the project governance to ensure a proper management process for the project. This ensures the alignment between the SAP System Integrator, the customer&#39;s project team, company&#39;s strategic direction, and the satisfaction of operational requirements. .. Procedure: .. .. Conduct Handover Meeting(s) from Opportunity Phase .. Review the Order Form with Customer .. Create Project Charter .. Identify Stakeholders, Stakeholders&#39; Requirements and Expectations and project/deliverable acceptance criteria. .. Create Project Management Plan . .. Note:&nbsp; Organizational Change Management (OCM) should be involved .
- 13: The purpose of this task is to efficiently transition the project from the opportunity team to the delivery team. During this task the project manager schedules and conducts internal meetings to transfer key information from the opportunity phase into the project. Typically, during these calls the account team and project team review the following areas: project background, business case, business drivers, customer goals, scope, RACI, success metrics for the project, customer expectations, delivery model, Statement of Work, Order Form, assumptions. .&nbsp; .
- 14: The purpose of this task is to clarify any questions in regards to the Signed SAP Contract (SOW), Order Form, confirm scope, RACI and resolve any issues. This includes review of the delivery model. .. Procedures: .. .. Review Order Form Assumptions .. Review Order Form Scope .. Review Order Form RACI .. Review Order Form Resources &amp; Budget .. Review Order Form Customer Staffing .. Review Order Form Solution Scope . .
- 15: The Project Charter formally document the business needs and benefits of the project to confirm alignment with customer key stakeholders. It&nbsp;authorizes the project and is based on the Order Form(s) and Business Case. This document outlines the purpose, high level approach and key characteristics that define the project.&nbsp;&nbsp;The key benefit of creating the Project Charter is a well-defined project start and boundaries, and a direct way for senior management to accept and commit&nbsp;to the project. .. Project Charter Contents .. .. Current Situation .. Proposed Resolution .. Solution Description .. Project Goal .. Project Objectives .. Business Case Summary .. Total Estimated Project Costs .. Key Dates .. Project Stakeholders .. Critical Success Factors .. Risk Assessment . .. Procedures: .. .. Define Project Purpose or Project Justification and measurable Project Objectives .. High-Level Project Description and Boundaries .. Project Success and Approval Criteria .. Assumptions and Constraints .. High-Level Requirements .. High-Level Solution and Project Scope .. Summary Milestone Schedule .. Summary Budget .. Stakeholder Group and Key Names Stakeholders .. High-Level Risks . .. &nbsp; .
- 16: The stakeholder identification process is a critical process of initiating the project and aligning the project objectives with the expectations and requirements of the stakeholders. It is critical for the success of the project to identify, involve stakeholders and keep them engaged throughout the project. .
- 17: The Project Management Plan is the document that describes how the project will be executed, monitored and controlled. It integrates and consolidates all subsidiary plans and baselines from the planning process. .. Procedures: .. .. Establish Scope Baseline .. Establish Schedule Baseline .. Establish Cost Baseline .. Establish Quality Baseline .. Define Scope Management Plan .. Define Requirements Management Plan .. Define Schedule Management Plan .. Define Cost Management Plan .. Define Quality Management Plan .. Define Process Improvement Plan .. Define Human Resources Management Plan .. Define Communications Management Plan and Project Reporting Standards .. Define Risk Management Process .. Define Procurement Management Plan .. Define Stakeholder Management Plan .. Define Change Management Process .. Define Issue Management Process .. Define Project Constraints .. Define Project Standards .. Obtain Project Management Plan Sign-Off&nbsp; . .
- 18: Project Governance is an oversight function that is critical to the success of the project. It provides the project manager(s) with a framework for consistently managing and controlling the project which includes tools for decision making, role definition, responsibilities, accountability and the alignment of stakeholders around the purpose of the project. .
- 19: . The purpose of this task is to determine the structure and composition of the team and to ensure that roles and responsibilities are clearly defined. The assignment of people to roles should also take into account their qualifications and availability for the whole project time frame. .
- 20: . The purpose of this task is to define the organizational structure of the project team. .
- 21: .. The purpose of this deliverable is to review the project management plan and the subsidiary plans on the basis of the project scope defined in the project charter. .
- 22: The purpose of this deliverable is to properly plan the project to guide both project execution and project control.&nbsp; .. Procedure :&nbsp; .. .. Create Scope Statement .. Create WBS .. Create Project Schedule .. Create Budget .. Plan Quality .. Plan Communications .. Plan Risks .. Plan Procurement .. Plan Stakeholders Management . .
- 23: The purpose of this task is to prepare the scope document with the pre-defined content according to the Statement of Work (SOW) and solution documentation.The project scope statement evolves through the initiation and planning of the project and clearly and explicitly defines the deliverables of the proposed project. This information and supporting documents align key stakeholders around what the project is going to deliver.
- 24: The purpose of this task is to create the work breakdown structure (WBS) for the project, which is a deliverable-oriented, hierarchical decomposition of the work to be executed by the project team to complete the project. It is the basis for the organization and coordination of the project. A WBS consists of WBS elements that describe project tasks and subtasks to perform within a defined time period. .. .. Top-down view of how activities fit into the overall project structure .. Defines the total scope of the project (specified in the approved scope statement) .. Work packages at lowest level can be subdivided into activtities/tasks . .
- 25: The purpose of this task is to create a project schedule. The detailed project schedule defines the work to be performed, the resources and associated time commitments required for the project, and the individual phases of the project. The work breakdown structure (WBS) serves as the foundation for the project schedule and deliverables to be produced as part of the project. .. Procedures: .. .. Define Activities .. Sequence Activities .. Estimate Activity Resources .. Estimate Activity Durations .. Develop Schedule . .
- 26: The purpose of this task is to create a project budget,&nbsp;that outlines all the costs associated with the project, including labor, hardware, software, cloud provisioning, contracting fees, and facilities. The project budget is a living document that the project manager maintains. At this stage the project manager sets the budget baseline and will manage the budget according to the cost management plan that is developed as part of the Project Management Plans task. .. Procedures: .. .. Estimate costs .. Determine Budget . .
- 27: The purpose of this task is to identify the standards of the project and how the quality will be managed and valided throughout the implementiation of the project.&nbsp; .
- 28: The purpose of this task is plan the commincation Management plan and define the communication requirements for the project.&nbsp; .
- 29: The purpose of this task is to plan and define the project risks.&nbsp; .. Procedures: .. .. Identify Risks .. Assess Risks : Estimating and Evaluating Risk .. Create Risk Register ( refer to the &quot;Risk Register Template&quot; provided ) .. Define Risk Responses . .
- 30: The purpose of this task is to plan and prepare the guidelines for all the procurement activities on the project.&nbsp;This includes&nbsp;materials, products or services identified for outside procurement.&nbsp; .
- 31: The purpose of this task is to plan the appropriate management strategies to identify and engage stakeholders. .

| ID | WBS | Task | Duration | Start | Finish | Predecessors | Total slack | Free slack | Constraint | Resources | Work | Workstream | FLAVORS | Assembly Category |
| --- | --- | --- | --- | --- | --- | --- | --- | --- | --- | --- | --- | --- | --- | --- |
| 32 | 2.4 | **Project Kick-off and Onboarding** | 25d | 2019-01-21 | 2019-02-22 |  | 65d |  |  |  | 192h | Project Management | Waterfall ,Agile |  |
| 33 | 2.4.1 | Onboard the Project Team | 12d | 2019-01-21 | 2019-02-08 |  | 75d |  | start no earlier than 2019-01-20 | Руководитель проекта (PM) | 96h | Project Management | Waterfall ,Agile |  |
| 34 | 2.4.2 | Conduct Kick-off Workshop | 12d | 2019-02-07 | 2019-02-22 |  | 65d |  | start no earlier than 2019-01-23 | Функциональный консультант | 96h | Project Management | Waterfall ,Agile |  |
| 35 | 2.5 | **Enable Project Team** | 12d | 2019-03-07 | 2019-03-22 | 38 | 45d |  |  |  | 96h | Project Management | Waterfall ,Agile |  |
| 36 | 2.5.1 | Conduct Project Kick-Off Meeting | 1d | 2019-03-07 | 2019-03-07 |  | 45d | 0d | start no earlier than 2019-01-21 | Офис управления проектом / PMO (PMO) | 8h | Project Management | Waterfall ,Agile |  |
| 37 | 2.5.2 | Perform Mobilization Training for the Project Team | 11d | 2019-03-08 | 2019-03-22 | 36 | 45d |  |  | Специалист по обучению и коммуникациям | 88h | Project Management | Waterfall ,Agile |  |
| 38 | 2.6 | **Project Training Strategy and Plan (Team/Key Users)** | 14d | 2019-02-15 | 2019-03-06 |  | 45d | 0d |  |  | 112h | Application: Customer Team Enablement | Waterfall ,Agile |  |
| 39 | 2.6.1 | Prepare Training Strategy and Plan Documention | 14d | 2019-02-15 | 2019-03-06 |  | 45d |  |  | Специалист по обучению и коммуникациям | 112h | Application: Customer Team Enablement | Waterfall ,Agile | Non-core (N) |
| 40 | 2.7 | **Project Team Enablement** | 12d | 2019-03-07 | 2019-03-22 | 38 | 45d |  |  |  | 96h | Application: Solution Adoption | Waterfall ,Agile |  |
| 41 | 2.7.1 | Provide Key Self-Learning Material to the Project Team | 12d | 2019-03-07 | 2019-03-22 |  | 45d |  |  | Руководитель проекта (PM) | 96h | Application: Solution Adoption | Waterfall ,Agile |  |
| 42 | 2.8 | **Project Standards and Infrastructure** | 45d | 2019-01-10 | 2019-03-13 |  | 51d |  |  |  | 96h | Project Management | Waterfall ,Agile |  |
| 43 | 2.8.1 | Define Project Standards | 1d | 2019-01-10 | 2019-01-10 |  | 51d | 0d | start no earlier than 2019-01-03 | Руководитель проекта (PM) | 8h | Project Management | Waterfall ,Agile |  |
| 44 | 2.8.2 | Install and Setup SAP Solution Manager | 1d | 2019-01-17 | 2019-01-17 | 43 | 51d | 0d |  | Технический консультант | 8h | Project Management | Waterfall ,Agile |  |
| 45 | 2.8.3 | Setup Project Team Logistics and Infrastructure | 6d | 2019-02-06 | 2019-02-13 | 44 | 52d | 0d |  | Технический консультант | 48h | Project Management | Waterfall ,Agile |  |
| 46 | 2.8.4 | Setup and Test Remote Support | 4d | 2019-03-08 | 2019-03-13 | 45 | 52d |  |  | Технический консультант | 32h | Project Management | Waterfall ,Agile |  |
| 47 | 2.9 | **Demo Environment** | 39d | 2019-01-28 | 2019-03-21 |  | 46d |  |  |  | 80h | Technical Architecture & Infrastructure | Waterfall ,Agile |  |
| 48 | 2.9.1 | Discuss Data Requirements and Format for Later Upload Into the Solution | 1d | 2019-01-28 | 2019-01-28 |  | 46d | 0d | start no earlier than 2019-01-28 | Технический консультант | 8h | System & Data Migration | Waterfall ,Agile |  |
| 49 | 2.9.2 | Perform Post Activation Tasks Related to the RDA or model company | 2d | 2019-01-30 | 2019-01-31 | 48 | 46d | 0d |  | Технический консультант | 16h | Technical Architecture & Infrastructure | Waterfall ,Agile | Core (C) |
| 50 | 2.9.3 | Perform Unit Test of the RDA (Rapid Deployment Appliance) or model company install | 3d | 2019-02-01 | 2019-02-05 | 49 | 46d | 0d |  | Специалист по интеграциям (Integration Specialist) | 24h | Technical Architecture & Infrastructure | Waterfall ,Agile | Core (C) |
| 51 | 2.9.4 | Confirm Activation | 1d | 2019-02-19 | 2019-02-19 | 50 | 46d | 0d |  | Технический консультант | 8h | Technical Architecture & Infrastructure | Waterfall ,Agile | Core Cloud Value Prototyping (CC) |
| 52 | 2.9.5 | Activate Solution | 1d | 2019-02-20 | 2019-02-20 | 51 | 46d | 0d |  | Технический консультант | 8h | Technical Architecture & Infrastructure | Waterfall ,Agile | Core Cloud Value Prototyping (CC) |
| 53 | 2.9.6 | Appliance Installed in Customer Landscape | 2d | 2019-03-20 | 2019-03-21 | 52 | 46d |  |  | Технический консультант | 16h | Technical Architecture & Infrastructure | Waterfall ,Agile | Core (C) |
| 54 | 2.10 | **Prepare for Fit/Gap Analysis** | 18d | 2019-01-14 | 2019-02-06 |  | 77d |  |  |  | 64h | Project Management | Waterfall ,Agile |  |
| 55 | 2.10.1 | Download Best Practices Documents | 1d | 2019-01-24 | 2019-01-24 |  | 76d | 0d | start no earlier than 2019-01-07 | Функциональный консультант | 8h | Project Management | Waterfall ,Agile |  |
| 56 | 2.10.2 | Determine and Communicte the Plan for Fit/Gap Analysis and Initial Backlog | 2d | 2019-02-04 | 2019-02-05 | 55 | 78d |  | start no earlier than 2019-01-07 | Функциональный консультант | 16h | Project Management | Waterfall ,Agile |  |
| 57 | 2.10.3 | Refine Acceptance Criteria | 2d | 2019-01-25 | 2019-01-28 | 55 | 84d |  | start no earlier than 2019-01-07 | Руководитель функционального направления (Functional Lead) | 16h | Project Management | Waterfall ,Agile |  |
| 58 | 2.10.4 | Download "Project Starter Pack" including PM accelerators and SAP Best Practices/Model Company, product documentations. | 1d | 2019-02-06 | 2019-02-06 | 55 | 77d |  | start no earlier than 2019-01-07 | Функциональный консультант | 8h | Project Management | Waterfall ,Agile |  |
| 59 | 2.10.5 | Close Prepare Phase | 2d | 2019-01-14 | 2019-01-15 |  | 93d |  | start no earlier than 2019-01-07 | Офис управления проектом / PMO (PMO) | 16h | Project Management | Waterfall ,Agile |  |

Notes:
- 32: The purpose of the Project Kick-off and Onboarding deliverable is to kick-off the project and ensure all needed information is shared with the project team, resources, key stakeholders, and anyone involved in the project. The goal of the kick-off meeting is to ensure that everyone involved in the implementation understands the goals and objectives of the project, as well as the schedule which the project team will follow; this is one of the key ingredients for a successful project execution. .&nbsp; .. Procedure: .Kick-off the project and begin the onboarding of project team members. Everyone involved in the project must have a clear understanding of project scope, timelines, and additional processes in place to begin a successful launch of the project. .. .. Onboard Project Team .. Conduct Kick-off Workshop . .. Note: &nbsp; Organizational Change Management (OCM) should be involved .
- 33: The purpose of the Onboard the Project Team task is to prepare the onboarding package for external consultants and new project team members from SAP and partner companies coming to the project. The onboarding package contains the essential information that each new team member needs to understand, which is the purpose of the project, goals, operating procedures, and other key information. .The onboarding package typically contains the following information: .. .. Project objectives, scope, and goals including SAP solutions being implemented .. Project schedule including milestones .. Project governance including key project stakeholders .. Organizational chart for the project - showing both internal and external resources .. Overview of the existing SAP landscape .. Outline of regular project meetings .. Travel policies, dress code, project location, and other project guidelines as needed . .. &nbsp;
- 34: The purpose of the Conduct Kick-off Workshop task is to schedule and prepare the project kick-off meeting. The kick-off meeting includes discussion of project objectives, organizational structure, roles and responsibilities, project governance, schedule, scope, communication standards, change request process, and decision making process. The kick-off meeting is attended by the project team, key stakeholders, project sponsors, and company executives. Some resources may attend the kick-off meeting remotely; in such cases, it is important to ensure quality audio and video infrastructure so the remote participants can take full part in the kick-off meeting session. . .Use the attached accelerator as a template to prepare kick-off meeting materials specific to your project. . .&nbsp;
- 35: The purpose of this deliverable is to conduct project team training that educates the project team about the implementation approach.&nbsp; .. Procedure: .. .. Conduct Project Kick-Off Meeting .. Perform&nbsp;Mobilization Training for the Project Team . .
- 36: The purpose of this task is to conduct the project kick-off meeting.&nbsp;The kickoff meeting includes discussion of project objectives, organizational structure, roles and responsibilities, project governance, schedule, scope, communication standards, change request process, and decision making process. The kickoff meeting is attended by the project team, key stakeholders, project sponsor and company executives. Some resources may attend the kickoff meeting remotely; in such cases it is important to ensure good audio and video infrastructure so the remote participants can take full part in the kickoff meeting session. .
- 37: The purpose of this task is to educate the project team on Agile implementation approach, principles and techniques. The training will focus on Agile Project Delivery to enable Project Manager and team leads to effectively embed and execute Agile Project Delivery approach via SAP Activate Implementation Methodology. .. Project Management will provide additional project learning enablement and approach where appropriate. .
- 38: The purpose of this deliverable is to develop a comprehensive training strategy that provides all team members with a phase-based learning path for acquiring the skills and knowledge needed to complete the project successfully. This learning path leads to project readiness as well as certification on the specific applications the team members will be using. .. . Procedure: .. .. Prepare Training Strategy and Plan Documentation .
- 39: The purpose of this task is to develop a training strategy that provides all project team members and key users with end-to-end knowledge and guidance to perform and execute the project successfully.
- 40: The purpose of this task is to develop a comprehensive training strategy that provides all team members and with a learning path for acquiring the skills and knowledge needed to complete the project successfully. .. Requirements and Constraints .. The project has been initiated successfully. .. Procedure .. .. Provide key self-learning material to the project team .. Train the customer project team. . .. Results .. As a result, the project team has been trained successfully.
- 41: The purpose of this task is to make key self-learning material and information sources available to the project team members. .. Prerequisites .. The project has been initiated. .. Procedure .. Organize self-learning possibilities for IT professional to understand the new solution with digital learning environments (e.g. Learning Hub). This may include: .. .. .. Grant project team member access to the SAP Support Portal ... Ensure that all team members can access the Best Practices documentation (see accelerator section) at the SAP Support Portal. The SAP Support Portal can be access via the URL:&nbsp; https://support.sap.com . First time users must register. The customer or installation number is required and can be provided by the customer&#39;s IT Contact or SAP account team. The SAP Support Portal allows access to various SAP content and resources used during and after an implementation project. .. .. .. Ensure project team member access to the SAP Learning Hub ... Ensure that all project team members can access the SAP Learning Hub. The Learning Hub is central location which allows access to different SAP Learning Rooms. SAP Learning Rooms are interactive social learning environments. Available online 24/7, they facilitate informal learning and knowledge sharing as well as expert-hosted live sessions, videos, quizzes, and postings on a wide range of SAP topics. To access the learning hub, read the blog in the accelerator section. .. .. .. Review training material on SAP Solution Manager ... Ensure the project team is properly trained on the usage of SAP Solution Manager. SAP Solution Manager provides a central point of access for a variety of essential project support functions. The reference materials provide more details about available Solution Manager trainings,&nbsp; Focused Build for SAP Solution Manager , and a video describing how SAP Solution Manager is perfect for SAP implementation. SAP provides customers with a SAP Solution Manager tool set that supports customers in implementation of the project standards for the purposes of the project or operations. It is highly recommended to use the SAP Solution Manager Focused Build service solution. Additional details can be found in the accelerator section. .. .. .. Review training material on SAP Activate ... &nbsp; .. . .. Results .. Key learning resources are available to the project team for self-learning.
- 42: The purpose of the Project Standards and Infrastructure deliverable is to provide consistent means of executing and governing project work in an efficient and effective manner. The key objective of project standards is to identify, define, approve, and communicate standards related to project execution. Where and when applicable, the current customer processes and procedures related to the project standards should be considered when defining the most suitable standards for the project. . .The project team needs to setup tools like SAP Solution Manager to enable execution of specific project standards. The SAP Solution Manager application management solution is included in customer&rsquo;s SAP maintenance agreement, and provides all integrated content, processes, tools, and methodologies needed to efficiently implement, operate, monitor, and support&nbsp; the SAP and non-SAP applications. . .SAP Solution Manager is also the hub for collaboration within the SAP ecosystem to ensure delivery of high quality services and support for the mission critical business processes. This enables better operations and faster implementation at lower costs. . . Prerequisite: .. .. SAP Best Practice Process Review . .. Procedure: .Define the project standard to be followed throughout the implementation to set guidelines and outline various methods of project execution. .. .. Define Project Standards .. Install and Setup SAP Solution Manager .. Setup Project Team Logistics and Infrastructure .. Setup and Test Remote Support .
- 43: The purpose of the Define Project Standards task is to identify, define, approve, and communicate standards related to project execution. Project standards provide a consistent means of executing and governing project work in an efficient and effective manner. . .Project standards are elaborated throughout the Prepare phase (some may be fine tuned in a later stage of the project). During the Prepare phase, the foundational project standards must be defined, approved, and communicated to the project team. Communication of project standards should be included in project onboarding communications for project team members. Given the integrated nature of project standards, changes must be managed in accordance with the integrated change control procedure. .The project team needs to establish, at minimum, the project standards for the following areas: .. .. Requirements management .. Business process modeling solution .. Configuration and documentation .. Custom code/development .. Authorizations/security .. Test planning and execution .. Change and release management .. Post-implementation support and operations . .. &nbsp;
- 44: The objective of the Install and Setup SAP Solution Manager task is to install and setup SAP Solution Manager environment for the project team. SAP Solution Manager supports heterogeneous system environments. Its functions cover all aspects of implementation, deployment, operation, and continuous improvement of solutions. As a centralized, robust solution, SAP Solution Manager combines tools, content, and direct access to SAP, to increase the reliability of solutions and lower total cost of ownership. SAP Solution Manager is the pivotal hub for collaboration in the ecosystem as it empowers communication between all the stakeholders in a solution, including project teams, SAP partners, consulting and SAP Active Global Support. .SAP recommends customers to utilize the pre-configured environment for SAP Solution Manager Focused Build to provide a ready-to-run SAP Solution Manager environment. Alternatively, the customer may decide to install and setup the SAP Solution Manager following the installation guide which provides step-by-step process for installation and setup of SAP Solution Manager. .&nbsp;The general sequence for the implementation of an SAP Solution Manager system is as follows: .. .. Plan the implementation (such as scope, hardware and software requirements, release restrictions) .. Plan the system landscape for your use cases .. Install the components of your SAP Solution Manager system .. Configure your system .. Set up the connection to the managed systems . .. &nbsp;
- 45: The purpose of the Setup Project Team Logistics and Infrastructure&nbsp; task is to setup a physical project team environment and ensure the project team members have the appropriate level of access to the customer facility, project room, and the project systems. This activity also involves the setup of project team work stations, computers, and/or mobile devices (as necessary for the project support). The project manager, together with the technical team, works on the setup of the following (the questions in each area are geared to help provide guidance): . . Project Experience: .. .. Is there a requirement for hardware (i.e. servers, laptops, etc.)? .. Are there any additional software licenses required? Are the software licenses purchased? .. Was the software installed for the project team members? .. Is there an area planned for the project equipment? .. Is project equipment located in different geographical sites? .. Is a computer lab required for the project? .. Physical Project Environment: .. Has the required workspace been arranged at all project sites? .. Are there sufficient conference rooms planned for the project team? .. Has multimedia equipment been planned for all conference rooms (i.e. video conferencing, projectors, etc.)? .. Has physical access been granted for all project team members located in different geographical sites? .. Is there a working area assigned to the project members? . .. IT Infrastructure and Access: .. .. Is the LAN access available to the project team? .. Has the LAN access been tested? .. Do project team members have the necessary printer drivers installed? .. Has IT access been granted for the following:.. ... E-mail servers ... Internet access, intranet access ... Team collaboration space like SAP Jam ... Microsoft Office ... Project team specific applications such as modeling and test management tools, etc. .. .. . .. Customer Policies: .. .. Is there a specific project policy applicable (i.e. communication, confidentiality, backup, etc.)? .. Has the project policy been communicated? . .. Physical Security: .. .. Has all necessary access been granted to different project sites? .. Have all site policies been communicated (i.e. security, safety, emergency exits, and etc.)? .. Telephone/Voicemail .. Is there a telephone number issued to project team members? .. Have the project team members been told how to setup their voicemail? .. Is there a central phone book for the project team members? . .. Project Team Member Equipment: .. .. Is the required equipment (i.e. computer, laptops, mobile, etc.) available to all project team members? .. Are office supplies available to the project team members? .. If necessary, have the required software licenses been purchased? . .. &nbsp;
- 46: The purpose of the Setup and Test Remote Support task is to enable SAP customers to setup remote access to SAP Support to ensure timely response to incidents and support tickets. In addition, setup remote access is strongly advised so support can quickly diagnose and solve incidents reported without physically needing to be at a desk or on the phone; this is especially helpful when dealing with different time zones. .In addition to solving incidents more quickly, setting up a remote connection between the customer and SAP will allow for receiving services, such as Early Watch, and Continuous Quality Checks, which you may been titled to through the Support Programs the customer has purchased. .Follow the guidance on the SAP Support Portal which is linked from the accelerators page to setup the remote access. .&nbsp;
- 47: The purpose of this deliverable is to&nbsp;setup the&nbsp;Sandbox&nbsp;system with all the capabilities that are delivered by either Best Practices, Model Company or RDS package(s).&nbsp; .Once the Sandbox environment is setup, the project team will&nbsp;prepare it for the fit/gap analysis workshops. This typically includes the adjustments to organizational structure, changes to the master data and potential configuration of additional functionality that is critical to be included in the fit/gap analysis. .Note: Model Company or RDS package or Best Practice content can be leveraged to setup the initial content. .
- 48: The purpose of this task is to ensure a common understanding of the master data required for upload into the solution, what format and when it needs to be available for upload.
- 49: The purpose of this task is to check that the SAP system is running correctly and to ensure that the remote service connection is enabled.
- 50: The purpose of this task is to perform unit test of the activated pre-assembled RDS solution and to confirm that relevant solution scope and business processes have been activated without issues.
- 51: The purpose of this task is to confirm that relevant solution scope and business processes have been activated without issues, and enables the customer project team to get a first impression on the business processes that have been activated.
- 52: The purpose of.this task is to install the system with the pre-defined solution scope to be demonstrated.
- 53: The purpose of this task is to installed the virtual Pre-Assembled Rapid Deployment Solution and make it available in the system landscape of the customer.
- 54: The purpose of this deliverable is to prepare for the Fit/Gap workshop by downloading the SAP Best Practice content, reviewing the services scope contract, and reviewing the configuration possibilities. In addition, the How to Approach Fit/Gap Analysis presentation is reviewed. The presentation is intended to be both instructional and a template for conducting the Fit/Gap&nbsp;workshops. .. Procedure: .. .. Download Best Practices Documents .. Determine and Communicte the Plan for Fit/Gap Analysis and Initial Backlog .. Refine Acceptance Criteria .. Download &quot;Project Starter Pack&quot; including PM accelerators and SAP Best Practices/Model Company, product documentations. .. Close Prepare Phase . .. Note: &nbsp; Organizational Change Management (OCM) should be involved .. &nbsp; .
- 55: The purpose of this task is to download the best practice documents and make them easily available to the project team. The SAP Best Practices for SAP S/4HANA are tailored specifically to accelerate and simplify the adoption of SAP S/4HANA, on-premise edition for faster time to value, by providing pre-configured content for core business processes with role-specific, responsive, and simple user experience. The guided configuration allows a simpler configuration, automated testing, and life-cycle management to support agile adoption of continuous innovation even after go-live. Analytical content such as operational reporting is now included as well as UX Fiori content providing the infrastructure for the deployment, testing, and extension of S/4 HANA user interface components. SAP Best Practices for Migration complements the foundation and offers customers a non-disruptive, simplified transition to SAP S/4HANA. SAP Best Practices offers integration to cloud solutions from SAP such as SuccessFactors Employee Central and Ariba. Benefits of Best Practices:&nbsp; Reduce cost of operations by using standardized processes delivered by SAP Best Practices Manage multiple geographies, divisions, subsidiaries, and ledgers with global and country-specific content Drive operational efficiencies Comply with regulations Empower business and IT users with guided configuration Allow a&nbsp; first-hand experience of SAP S/4HANA with instant guided trials Update and change customer specific configuration using SAP S/4HANA life-cycle management tools. .
- 56: The purpose of this task is to determine all gaps for customer solution, document them formally and estimate effort to cover the identified gaps. Once&nbsp;the initial analysis is complete, then the results will be presented to customer including the effort estimates to cover the identified gaps as part of the project/service delivery. .
- 57: The purpose of this task is to clearly define the acceptance criteria against which project deliverables and results are measured that have been listed in the Scope Statement. These should also be updated in the Project Quality Gate Scorecard. In the context of Agile projects this translates to the definition of Done for the backlog items that are being delivered in the project. .
- 58: The purpose of this task is to download and create local copies of Project Management accelerators and SAP Best Practices/Model Company documentation relevant for this project.&nbsp; .. Use the Download located under Accelerators to start a direct download . .
- 59: Procedure: .. .. Obtain Sign-off from Customer . .

| ID | WBS | Task | Duration | Start | Finish | Predecessors | Total slack | Free slack | Constraint | Resources | Work | Workstream | FLAVORS | Assembly Category |
| --- | --- | --- | --- | --- | --- | --- | --- | --- | --- | --- | --- | --- | --- | --- |
| 60 | 2.11 | **Initial Hardware Sizing Proposal** | 1d | 2019-01-11 | 2019-01-11 |  | 95d |  |  |  | 8h | Technical Architecture & Infrastructure | Waterfall ,Agile |  |
| 61 | 2.11.1 | Complete HW Sizing Estimation for Solution landscape | 1d | 2019-01-11 | 2019-01-11 |  | 95d |  | start no earlier than 2019-01-07 | Руководитель проекта (PM) | 8h | Technical Architecture & Infrastructure | Waterfall ,Agile | Non-core (N) |
| 62 | 2.12 | **Business Process Map** | 17d | 2019-01-10 | 2019-02-01 |  | 80d |  |  |  | 128h | Application: Design & Configuration | Waterfall ,Agile |  |
| 63 | 2.12.1 | Prepare Business Process Map | 1d | 2019-01-10 | 2019-01-10 |  | 80d | 0d | start no earlier than 2019-01-07 | Функциональный консультант | 8h | Application: Design & Configuration | Waterfall ,Agile | Non-core (N) |
| 64 | 2.12.2 | Prepare Scope Document for Workshop | 1d | 2019-01-11 | 2019-01-11 | 63 | 80d | 0d |  | Функциональный консультант | 8h | Application: Design & Configuration | Waterfall ,Agile | Core (C) |
| 65 | 2.12.3 | Discuss Data Requirements and Format for Later Upload Into the Solution | 2d | 2019-01-14 | 2019-01-15 | 64 | 80d | 0d |  | Функциональный консультант | 16h | System & Data Migration | Waterfall ,Agile | Core (C) |
| 66 | 2.12.4 | Mapping Business Needs | 2d | 2019-01-16 | 2019-01-17 | 65 | 80d | 0d |  | Функциональный консультант | 16h | Application: Design & Configuration | Waterfall ,Agile | None (NONE) |
| 67 | 2.12.5 | Record Customer Selected Options and Finalize Scope Document | 2d | 2019-01-18 | 2019-01-21 | 66 | 80d | 0d |  | Функциональный консультант | 16h | Application: Design & Configuration | Waterfall ,Agile | Core (C) |
| 68 | 2.12.6 | Review Scope Statement with Customer | 2d | 2019-01-22 | 2019-01-23 | 67 | 80d | 0d |  | Функциональный консультант | 16h | Application: Design & Configuration | Waterfall ,Agile | Core (C) |
| 69 | 2.12.7 | Create Delta Design and Configuration Requirements Template | 4d | 2019-01-25 | 2019-01-30 | 68 | 80d | 0d |  | Функциональный консультант | 32h | Application: Design & Configuration | Waterfall ,Agile | Non-core (N) |
| 70 | 2.12.8 | Validate and Complete Business Process Map | 2d | 2019-01-31 | 2019-02-01 | 69 | 80d |  |  | Функциональный консультант | 16h | Application: Design & Configuration | Waterfall ,Agile | Non-core (N) |
| 71 | 2.13 | **Value Determination** | 24d | 2019-01-10 | 2019-02-12 |  | 73d |  |  |  | 96h | Application: Solution Adoption | Waterfall ,Agile |  |
| 72 | 2.13.1 | Obtain copy of Value Case or Business Case document from the presales team. | 1d | 2019-01-10 | 2019-01-10 |  | 75d | 0d | start no earlier than 2019-01-07 | Бизнес-аналитик (BA) | 8h | Application: Solution Adoption | Waterfall ,Agile |  |
| 73 | 2.13.2 | Prepare Value Map | 1d | 2019-01-11 | 2019-01-11 | 72 | 75d | 0d |  | Бизнес-аналитик (BA) | 8h | Application: Solution Adoption | Waterfall ,Agile | Non-core (N) |
| 74 | 2.13.3 | Validate and Complete Value Map | 10d | 2019-01-30 | 2019-02-12 | 73 | 73d |  |  | Бизнес-аналитик (BA) | 80h | Application: Solution Adoption | Waterfall ,Agile | Non-core (N) |
| 75 | 2.14 | **Activate Solution** | 38d | 2019-01-15 | 2019-03-07 |  | 56d |  |  |  | 96h | Application: Design & Configuration | Waterfall ,Agile |  |
| 76 | 2.14.1 | Best Practice activation | 1d | 2019-01-15 | 2019-01-15 |  | 56d | 0d | start no earlier than 2019-01-09 | Технический консультант | 8h | Application: Design & Configuration | Waterfall ,Agile | Core Cloud Value Prototyping (CC) |
| 77 | 2.14.2 | Document the Configured/Activated Business Processes | 2d | 2019-01-21 | 2019-01-22 | 76 | 56d | 0d |  | Технический консультант | 16h | Application: Design & Configuration | Waterfall ,Agile | Core (C) |
| 78 | 2.14.3 | Walk Through Pre-assembled Solution with Implementation Team | 9d | 2019-02-25 | 2019-03-07 | 77 | 56d |  |  | Технический консультант | 72h | Application: Design & Configuration | Waterfall ,Agile |  |
| 79 | 2.15 | **Prepare Testing Policy** | 14d | 2019-01-10 | 2019-01-29 |  | 83d |  |  |  | 112h | Application: Testing | Waterfall ,Agile |  |
| 80 | 2.15.1 | Prepare Testing Policy Document | 8d | 2019-01-10 | 2019-01-21 |  | 83d | 0d | start no earlier than 2019-01-07 | Руководитель тестирования / QA (Testing Lead) | 64h | Application: Testing | Waterfall ,Agile | Non-core (N) |
| 81 | 2.15.2 | Obtain Customer Sign-Off for Testing Policy Document | 6d | 2019-01-22 | 2019-01-29 | 80 | 83d |  |  | Руководитель тестирования / QA (Testing Lead) | 48h | Application: Testing | Waterfall ,Agile | Non-core (N) |
| 82 | 2.16 | **Data Migration Approach and Strategy** | 14d | 2019-01-10 | 2019-01-29 |  | 83d |  |  |  | 112h | System & Data Migration | Waterfall ,Agile |  |
| 83 | 2.16.1 | Prepare Data Migration Workshop | 1d | 2019-01-10 | 2019-01-10 |  | 83d | 0d | start no earlier than 2019-01-07 | Специалист по миграции данных (Data Migration Specialist) | 8h | System & Data Migration | Waterfall ,Agile | Non-core (N) |
| 84 | 2.16.2 | Conduct Data Migration Workshop | 2d | 2019-01-11 | 2019-01-14 | 83 | 83d | 0d |  | Специалист по миграции данных (Data Migration Specialist) | 16h | System & Data Migration | Waterfall ,Agile | Non-core (N) |
| 85 | 2.16.3 | Conduct Data Audit (Data Health Check) | 2d | 2019-01-15 | 2019-01-16 | 84 | 83d | 0d |  | Специалист по миграции данных (Data Migration Specialist) | 16h | System & Data Migration | Waterfall ,Agile | Non-core (N) |
| 86 | 2.16.4 | Prepare Data Migration Scope and Requirements Document | 1d | 2019-01-17 | 2019-01-17 | 85 | 83d | 0d |  | Специалист по миграции данных (Data Migration Specialist) | 8h | System & Data Migration | Waterfall ,Agile | Non-core (N) |
| 87 | 2.16.5 | Present DM scope and requirements document | 1d | 2019-01-18 | 2019-01-18 | 86 | 83d | 0d |  | Специалист по миграции данных (Data Migration Specialist) | 8h | System & Data Migration | Waterfall ,Agile | Non-core (N) |
| 88 | 2.16.6 | Conduct Organizational Assessment for Data Migration | 2d | 2019-01-21 | 2019-01-22 | 87 | 83d | 0d |  | Специалист по миграции данных (Data Migration Specialist) | 16h | System & Data Migration | Waterfall ,Agile | Non-core (N) |
| 89 | 2.16.7 | Conduct Infrastructure Assessment for Data Migration | 2d | 2019-01-23 | 2019-01-24 | 88 | 83d | 0d |  | Специалист по миграции данных (Data Migration Specialist) | 16h | System & Data Migration | Waterfall ,Agile | Non-core (N) |
| 90 | 2.16.8 | Conduct Risk Assessment for Data Migration and Prepare Mitigation Plan | 2d | 2019-01-25 | 2019-01-28 | 89 | 83d | 0d |  | Специалист по миграции данных (Data Migration Specialist) | 16h | System & Data Migration | Waterfall ,Agile | Non-core (N) |
| 91 | 2.16.9 | Complete the Data Migration Approach and Strategy Document | 1d | 2019-01-29 | 2019-01-29 | 90 | 83d |  |  | Специалист по миграции данных (Data Migration Specialist) | 8h | System & Data Migration | Waterfall ,Agile | Non-core (N) |

Notes:
- 60: The purpose of the initial hardware sizing proposal is to begin the process of assessing the hardware infrastructure requirements.
- 61: The purpose of this task is to completed sizing estimates for the Solution Manager system and Production and non-Production environments.
- 62: The purpose of this deliverable&nbsp;is to derive and agree on the scope for the start of the next phase. During this work, the process map builds the foundation for the process hierarchy - a decomposition of the process design - which is reflected as scenarios, processes, and process steps in SAP Solution Manager. .
- 63: The purpose of this task is to complete the Business Process Map with the content reflecting the process scope of the project.
- 64: The purpose of this task is to prepare the scope document with the pre-defined content according to the SOW and solution documentation.
- 65: The purpose of this task is to ensure a common understanding of the master data required for upload into the solution, what format and when it needs to be available for upload.
- 66: The purpose of this task is to capture Business.needs and relate them to business scenarios, business objectives and benefits.
- 67: The purpose of this task is to complete the scope document with the options for configuration selected by the customer.
- 68: The purpose of this task is to secure that the scope of the project is revised, and validated, by the correct project stakeholders.
- 69: The goal of this task is to create the Delta Design and Configuration Requirements Template. The document details the design of. the to-be solution for those business scenarios/processes where the SAP Standard Solution cannot fulfill business process requirements. During the Prepare phase any GAP's already identified in scoping or assessment workshops conducted during Project Planning can be added to the template.
- 70: Validate and Complete Business Process Map with pre-defined content depending on delivery model (Industrialized and/or Assemble to Order process content).
- 71: The purpose of Value Determination is to ensure the alignment of the business case value drivers with key process changes and functionality by establishing a value tracking framework and identifying business stakeholders.
- 72: The Value Case (or Business Case) should have a list of KPI&#39;s used to justify the value of the project. These KPI&#39;s can be leveraged to determine the value objectives and goals for this project. .
- 73: The purpose of this task is to review the project business case, map key value drivers to process changes, develop the value tracking framework (KPI's and PPI's), identify value enablers, as well as assign business accountability for value realization.
- 74: The purpose of this task is to validate that identified key process changes, key performance indicators, and value enablers are accurate and make necessary adjustments to the document.
- 75: The purpose of the Solution Activation deliverable is to install the system with the pre-defined solution.
- 76: The purpose of this task is to perform execution of defined installation guides.
- 77: The purpose of this task is to document the solution in solution manager according to the business process hierarchy.
- 79: Prepare Testing Policy
- 80: The purpose of this task is to collect all required information needed for the Test Policy, and to document it in a format suitable for communication.
- 81: Purpose of this task is to obtain customer approval (sign-off).
- 82: The purpose of the data migration approach and Strategy deliverable is to capture and communicate the approach and strategy for the legacy data migration. This deliverable is intended to educate the SAP and customer project team members on the SAP data migration framework and methodology used to support the data migration project. In addition, the scope and requirement for data migration should also be determined.
- 83: The purpose of this task is to make the necessary arrangements for the execution of the workshop.
- 84: The purpose of the data migration workshop deliverable is to perform a two-day scoping workshop to explain the SAP data migration approach and to understand the customer's legacy data systems, business priorities, and technical infrastructure.
- 85: The purpose of the data audit is to identify the legacy systems that will supply data for the SAP applications and to profile the quality of the legacy data.
- 86: The purpose of this task is to prepare the data migration scope and requirements document that captures the overall scope and requirements of the data migration effort.
- 87: The purpose of this task is to present data migration scope and requirements document to customer project team and obtain buy in.
- 88: The purpose of this task is to assess customer organization for the demands of data migration process. The outcome of this task is documented current state of the organization and required target state.
- 89: The purpose of this task is to assess customer infrastructure for the needs of the data migration process. As a result the project team learns about available tools and identifies any gaps/requirements to acquire tools to support the migration process.
- 90: The purpose of this task is to assess risk for the data migration activities. The risk assessment focuses on organization, technical risk, data quality risk and other risks that may impact the data migration activities. During this task the team prepares mitigation strategies for the individual risk items in the risk register.
- 91: The purpose of this activity to collect input needed for the Data Migration Approach and Strategy document, in a format suitable for both communication purpose as well as for formal sign-off purpose.

| ID | WBS | Task | Duration | Start | Finish | Predecessors | Total slack | Free slack | Constraint | Resources | Work | Workstream | FLAVORS | Assembly Category |
| --- | --- | --- | --- | --- | --- | --- | --- | --- | --- | --- | --- | --- | --- | --- |
| 92 | 2.17 | **Technical Requirements and Design and Solution Landscape Deployment Plan** | 12d | 2019-01-14 | 2019-01-29 |  | 83d |  |  |  | 96h | Technical Architecture & Infrastructure | Waterfall ,Agile |  |
| 93 | 2.17.1 | Define Solution Landscape Concept | 6d | 2019-01-14 | 2019-01-21 |  | 83d | 0d | start no earlier than 2019-01-02 | Бизнес-аналитик (BA) | 48h | Technical Architecture & Infrastructure | Waterfall ,Agile | Non-core (N) |
| 94 | 2.17.2 | Define Solution Deployment Concept | 6d | 2019-01-22 | 2019-01-29 | 93 | 83d |  |  | Бизнес-аналитик (BA) | 48h | Technical Architecture & Infrastructure | Waterfall ,Agile | Non-core (N) |
| 95 | 2.18 | **Interface Inventory** | 14d | 2019-01-14 | 2019-01-31 |  | 81d |  |  |  | 112h | Application: Integration | Waterfall ,Agile |  |
| 96 | 2.18.1 | Prepare Interface Inventory document | 14d | 2019-01-14 | 2019-01-31 |  | 81d |  | start no earlier than 2019-01-14 | Специалист по интеграциям (Integration Specialist) | 112h | Application: Integration | Waterfall ,Agile | Non-core (N) |
| 97 | 2.19 | **Project Support Tools and System Setup** | 46d | 2019-01-10 | 2019-03-14 |  | 51d |  |  |  | 120h | Technical Architecture & Infrastructure | Waterfall ,Agile |  |
| 98 | 2.19.1 | Verify Technical System Requirements (frontend / backend) | 1d | 2019-01-10 | 2019-01-10 |  | 52d | 0d | start no earlier than 2019-01-07 | Технический консультант | 8h | Technical Architecture & Infrastructure | Waterfall ,Agile | Non-core (N) |
| 99 | 2.19.2 | Verify Functional System Requirements | 1d | 2019-01-11 | 2019-01-11 | 98 | 52d | 0d |  | Технический консультант | 8h | Technical Architecture & Infrastructure | Waterfall ,Agile | Non-core (N) |
| 100 | 2.19.3 | Check Availability of SAP Solution Manager | 1d | 2019-01-14 | 2019-01-14 | 99 | 52d | 0d |  | Технический консультант | 8h | Technical Architecture & Infrastructure | Waterfall ,Agile | Non-core (N) |
| 101 | 2.19.4 | Install or Upgrade SAP Solution Manager | 1d | 2019-01-16 | 2019-01-16 | 100 | 52d | 0d |  | Технический консультант | 8h | Technical Architecture & Infrastructure | Waterfall ,Agile | Non-core (N) |
| 102 | 2.19.5 | Set up Business Process Hierarchy in SAP Solution Manager | 1d | 2019-01-18 | 2019-01-18 | 101 | 51d | 0d |  | Технический консультант | 8h | Technical Architecture & Infrastructure | Waterfall ,Agile | Core (C) |
| 103 | 2.19.6 | Setup of Project Logistics and Infrastructure, Including Team Collaboration Environment | 1d | 2019-01-23 | 2019-01-23 | 102 | 51d | 0d |  | Технический консультант | 8h | Technical Architecture & Infrastructure | Waterfall ,Agile | Non-core (N) |
| 104 | 2.19.7 | Install SAP GUI on Project Team Computers | 1d | 2019-01-24 | 2019-01-24 | 103 | 51d | 0d |  | Технический консультант | 8h | Technical Architecture & Infrastructure | Waterfall ,Agile | Non-core (N) |
| 105 | 2.19.8 | Test Remote Access and Establish OSS Connection (both GUI and Web Access) | 2d | 2019-01-25 | 2019-02-01 | 104 | 51d | 0d |  | Технический консультант | 16h | Technical Architecture & Infrastructure | Waterfall ,Agile | Non-core (N) |
| 106 | 2.19.9 | Prepare Authorization Roles in the Systems for the Project Team (DEV) | 5d | 2019-02-04 | 2019-02-08 | 105 | 51d | 0d |  | Технический руководитель / Архитектор (Technical Lead / Basis) | 40h | Technical Architecture & Infrastructure | Waterfall ,Agile | Non-core (N) |
| 107 | 2.19.10 | Set up of Testing Tools | 1d | 2019-03-14 | 2019-03-14 | 106 | 51d |  |  | Технический консультант | 8h | Technical Architecture & Infrastructure | Waterfall ,Agile | Non-core (N) |
| 108 | 2.20 | **Demo Environment** | 36d | 2019-01-29 | 2019-03-19 |  | 48d |  |  |  | 72h | Technical Architecture & Infrastructure | Waterfall ,Agile |  |
| 109 | 2.20.1 | Appliance Installed in Customer Landscape | 1d | 2019-01-29 | 2019-01-29 |  | 48d | 0d | start no earlier than 2019-01-28 | Технический консультант | 8h | Technical Architecture & Infrastructure | Waterfall ,Agile | Core (C) |
| 110 | 2.20.2 | Discuss Data Requirements and Format for Later Upload into the Solution for | 2d | 2019-02-04 | 2019-02-05 | 109 | 49d | 0d |  | Технический консультант | 16h | System & Data Migration | Waterfall ,Agile |  |
| 111 | 2.20.3 | Perform Unit Test of the RDA | 3d | 2019-02-14 | 2019-02-18 | 110 | 49d | 0d |  | Технический консультант | 24h | Technical Architecture & Infrastructure | Waterfall ,Agile | Core (C) |
| 112 | 2.20.4 | Perform Post Activation Tasks Related to the RDA | 3d | 2019-03-15 | 2019-03-19 | 111 | 48d |  |  | Технический консультант | 24h | Technical Architecture & Infrastructure | Waterfall ,Agile | Core (C) |
| 113 | 2.21 | **Project Delivery Platform Setup** | 2d | 2019-02-21 | 2019-02-22 |  | 65d |  |  |  | 16h | System & Data Migration | Waterfall ,Agile |  |
| 114 | 2.21.1 | Set up and configure SAP Solution Manager | 1d | 2019-02-21 | 2019-02-21 |  | 65d | 0d | start no earlier than 2019-01-07 | Технический консультант | 8h | System & Data Migration | Waterfall ,Agile |  |
| 115 | 2.21.2 | Import the Best Practices content to SAP Solution Manager | 1d | 2019-02-22 | 2019-02-22 | 114 | 65d |  | start no earlier than 2019-01-07 | Технический консультант | 8h | System & Data Migration | Waterfall ,Agile |  |

Notes:
- 92: The purpose of the technical requirements and design deliverable is to provide the project with a specification of the target solution from a software component standpoint. This document is intended to serve as a reference for the rest of the project team during the Validate Phase. Included in this deliverable is the solution landscape deployment plan, which is a high level description of the overall system landscape approach to be used for the implementation project.
- 93: The purpose of this task is to outline the software components and the design of the future solution landscape.
- 94: The purpose of this task is to describe the concept of how the solution in scope will be deployed.
- 95: The purpose of the interface inventory deliverable is to preliminarily identify the external systems, applications, and business objects or transactions that must be integrated with the SAP solution to realize the objectives of the project.
- 96: The purpose of this task is to collect necessary information for the interface inventory document.
- 97: The purpose of the project support tools and system setup deliverable is to establish the basic tools and processes necessary to support the project.One of the most vital project tools is the SAP Solution Manager, the centerpiece of SAP's Application Lifecycle Management tools. The SAP Solution Manager provides a central point of access for a variety of essential project support functions, including:. Solution Implementation - the identification, adaptation, and implementation of new and enhanced business scenarios.. Solution Documentation - centralized documentation repository ensuring the relationship of business process definitions with technical configuration decisions.. Change Control Management - synchronized deployment of application configuration with integrated project control and quality management. In addition, customer-specific project management and documentation tools may require installation and distribution to project team members.
- 98: The purpose of this task is to validate all technical system requirements for delivery of the service or project. The objective is to ensure that all required technical requirements have been satisfied and work can be performed by the team.
- 99: The purpose of this task is to validate all functional requirements for delivery of the service or project. The objective is to ensure that all required functional requirements have been satisfied and work can be performed by the team.
- 100: The purpose of this task is to validate that customer has a properly. installed and setup SAP Solution Manager (SolMan). This should be validated early (if not before the project). If not setup then activity needs to be planned to install SolMan, complete the general SolMan set-up and then cover the process specific configuration in the following areas: * Process Documentation * ITSM * Project Management and Requirements and activities scheduled to include the set up of: * Test Management * Change Control Management * Application Operations * ... This task must also include team access to SolMan. Please ensure: * customer specific access roles have been created * access roles created to provide digital signature approvals to documents * users created in the system (with appropriate access roles) and Business Partners created and connected to users for all project team members * users can all access SolMan. and there is an appropriate schedule of project team training for each project phase / key activity using SolMan. * the procedure for requesting access to SolMan and other systems and tools is agreed, setup and communicated.
- 101: The purpose of this task is to validate and ensure a proper Solution Manager setup.
- 102: The purpose of this task is to ensure that the business process structure in SolMan is supporting the solution documentation and all continued project activities in the coming phases (business process management, value management, configuration & development, test, training and cut over).
- 103: The objective of this task is to setup project logistics, systems and infrastructure that will support delivery of the project. This may include setup of computers, setup of project team room, telephony, etc.
- 104: The purpose of this task is to install SAP GUI on project team computers.
- 105: The objective of this task is to validate that the remote connection to SAP is working and connection can be established. This is both for the SAPGUI as well as Web Access.
- 106: The purpose of this task is to prepare authorization roles in the systems for the project team.
- 107: The purpose of this task is the initial set up of all relevant testing tools (the actual configuration will happen during the Validate Phase)
- 108: The purpose of the demo environment deliverable is to install a technical development-like system to be used for demonstration and visualization purposes.
- 109: The purpose of this task is to installed the virtual Pre-Assembled Rapid Deployment Solution and make it available in the system landscape of the customer.
- 110: The purpose of this task is to ensure a common understanding of the master data required for upload into the solution, what format and when it needs to be available for upload.
- 111: The purpose of this task is to perform unit test of the activated pre-assembled RDS solution and to confirm that relevant solution scope and business processes have been activated without issues.
- 112: The purpose of this task is to check that the SAP system is running correctly and to ensure that the remote service connection is enabled.
- 113: In the activity&nbsp; Project Delivery Platform Setup , all additional software which is required for the implementation is going to be set up or updated. .. Requirements and Constraints .. It depends on the scenario what additional software is required: .. .. SAP Solution Manager is required for all scenarios. SAP Solution Manager does both support project execution (e.g. scoping business processes together with SAP Activate), as well as support operations of the new&nbsp; system after Go-Live (e.g. via system monitoring and root cause analysis). SAP recommends at least SAP Solution Manager 7.1 SP12. However, end of mainstream maintenance for SAP Solution Manager 7.1 is set to December 31, 2017. SAP recommends to enter release 7.2 as soon as possible. This road map considers SAP Solution Manager 7.2 as available. In case this release level is not available on premise, SAP offers SAP Solution Manager also via Cloud Appliance Library (CAL). .. &nbsp; . .. Procedure .. In the Prepare phase SAP Solution Manager is set up and configured. The tools for Landscape Transformation and Data Services need additional planning activity, and are configured later in the Explore phase. .. .. Set up and configure SAP Solution Manager .. Import the Best Practices content to SAP Solution Manager . .. Results .. SAP Solution Manager has been set up for project work.
- 114: There should be at least an SAP Solution Manager 7.2 already set up and configured on premise. See Accelerator&rsquo;s section for more details how to set up SAP Solution Manager. .. Procedure .. .. In case there is an SAP Solution Manager 7.2 available on premise, update to the latest support pack. .. In case this release level is not available on premise, SAP offers SAP Solution Manager also via Cloud Appliance Library (CAL), and use this SAP Solution Manager for project support. .. The general sequence for the implementation of an SAP Solution Manager system is as follows:.. ... You plan the implementation (such as scope, hardware and software requirements, and release restrictions). ... You plan the system landscape for your use cases. ... You install the components of your SAP Solution Manager system. ... You configure your system. ... You set up the connection to the managed systems. .. .. .. Once SAP Solution Manager is set up, the following areas are key for project support:.. ... Solution Implementation &nbsp;&ndash; the identification, adaptation, and implementation of new and enhanced business scenarios. ... Solution Documentation &nbsp;&ndash; centralized documentation repository ensuring the relationship of business process definitions with technical configuration decisions. ... Change Control Management &nbsp;&ndash; synchronized deployment of application configuration with integrated project control and quality management. .. .. .. SAP provides customers with a SAP Solution Manager toolset that supports customers in implementation of the project standards for the purposes of the project or operations. It is highly recommended fore new implementation scenarios to use the&nbsp; SAP Solution Manager Focused Build &nbsp;Additional details can be found in the accelerator section.&nbsp;It also contains a link to an overview presentation which documents how Focused Build and SAP Activate nicely fit together. . .. Results .. You have set up SAP Solution Manager, and configured for project support. .. How SAP Can Support .. SAP install SAP Solution Manager for you. The corresponding fixed price offer is called &ldquo; SAP Solution Manager Setup &rdquo;. Alternatively consider using SAP Solution Manager from the Cloud Appliance Library (CAL). .. Finally, SAP offers an &ldquo; Agile Methodology and Tool Coach &rdquo; service component as part of the Safeguarding the Digital Transformation. .. SAP Enterprise Support customers can listen to the Meet the Expert recording &ldquo; SAP Solution Manager 7.2 for SAP S/4HANA &rdquo;. The session: .. .. Explains how to plan, build, and run SAP S/4HANA with SAP Solution Manager 7.2 .. Provides an overview of SAP S/4HANA strategy and planning services delivered via SAP Solution Manager .. Explains how to use SAP Activate content for SAP S/4HANA in SAP Solution Manager. .
- 115: The purpose of this task is to import the SAP Activate Best Practices content into SAP Solution Manager. .. Prerequisites .. SAP Solution Manager 7.2 is available for project support. .. Procedure .. The following screen shot shows a Best Practices business process diagram in SAP Solution Manager. .. . . .. &nbsp; .. Follow the detailed instructions given in chapter &ldquo;Identify, select and load SAP Best Practices content into SAP Solution Manager 7.2&rdquo; in the Best Practice Reference Guide, to import SAP Activate Best Practice content into SAP Solution Manager 7.2. .. After import, the Best Practice process diagrams including documentation and test scripts are available in SAP Solution Manager, and can be used and tailored in the sub sequent Fit / Gap workshops with the business process champions. .. Results .. The newest Best Practices content is available in SAP Solution Manager for the project team. .. How SAP Can Support .. See service component &ldquo; Agile Methodology and Tool Coach &rdquo;,&nbsp;which consists of a single point of contact, who is responsible for all activities around the implementation and operation of focused build. The focused build coach is your contact to discuss all topics related to implementation methodology. He or she makes sure all issues are resolved and that you receive the included configuration services and trainings at the right point in time with the right skills from SAP.

| ID | WBS | Task | Duration | Start | Finish | Predecessors | Total slack | Free slack | Constraint | Resources | Work | Workstream | FLAVORS | Assembly Category |
| --- | --- | --- | --- | --- | --- | --- | --- | --- | --- | --- | --- | --- | --- | --- |
| 116 | 2.22 | **Organizational Change Management Roadmap** | 26d | 2019-01-10 | 2019-02-14 |  | 71d |  |  |  | 208h | Application: Solution Adoption | Waterfall ,Agile |  |
| 117 | 2.22.1 | Prepare Organizational Change Management Roadmap | 2d | 2019-01-10 | 2019-01-11 |  | 71d | 0d | start no earlier than 2019-01-03 | Специалист по обучению и коммуникациям | 16h | Application: Solution Adoption | Waterfall ,Agile | Non-core (N) |
| 118 | 2.22.2 | Conduct OCM Workshop with Project Manager and all Project Workstream Owners. | 24d | 2019-01-14 | 2019-02-14 | 117 | 71d |  |  | Специалист по обучению и коммуникациям | 192h | Application: Solution Adoption | Agile,Waterfall |  |
| 119 | 3 | **Explore** | 82d | 2019-03-25 | 2019-07-16 | 11 | 41d | 0d |  |  | 2552h |  |  |  |
| 120 | 3.1 | **Execution/Monitoring of the Project** | 13d | 2019-03-25 | 2019-04-10 |  | 45d | 0d |  |  | 104h | Project Management | Waterfall ,Agile |  |
| 121 | 3.2 | **Phase Initiation** | 13d | 2019-03-25 | 2019-04-10 |  | 45d |  |  |  | 104h | Project Management | Waterfall ,Agile |  |
| 122 | 3.2.1 | Review Deliverables of Explore Phase | 3d | 2019-03-25 | 2019-03-27 |  | 45d | 0d |  | Руководитель функционального направления (Functional Lead) | 24h | Project Management | Waterfall ,Agile |  |
| 123 | 3.2.2 | Review Acceptance Criteria | 4d | 2019-03-28 | 2019-04-02 | 122 | 45d | 0d |  | Руководитель функционального направления (Functional Lead) | 32h | Project Management | Waterfall ,Agile |  |
| 124 | 3.2.3 | Review RACI Chart for Explore Phase | 6d | 2019-04-03 | 2019-04-10 | 123 | 45d |  |  | Офис управления проектом / PMO (PMO) | 48h | Project Management | Waterfall ,Agile |  |
| 125 | 3.3 | **Execute Plan for Explore Phase** | 14d | 2019-04-11 | 2019-04-30 | 120 | 96d |  |  |  | 112h | Project Management | Waterfall ,Agile |  |
| 126 | 3.3.1 | Schedule and Prepare Solution Validation Workshops | 10d | 2019-04-11 | 2019-04-24 |  | 96d | 0d |  | Руководитель функционального направления (Functional Lead) | 80h | Project Management | Waterfall ,Agile |  |
| 127 | 3.3.2 | Record Gaps during Solution Validation Workshops | 4d | 2019-04-25 | 2019-04-30 | 126 | 96d |  |  | Руководитель функционального направления (Functional Lead) | 32h | Project Management | Waterfall ,Agile |  |
| 128 | 3.4 | **Fit-Gap / Delta Design - Introduction** | 5d | 2019-03-25 | 2019-03-29 |  | 98d | 0d |  |  | 40h | Application: Design & Configuration | Waterfall ,Agile |  |
| 129 | 3.5 | **Fit-Gap / Delta Design - Finalize System Setup** | 5d | 2019-03-25 | 2019-03-29 |  | 98d |  |  |  | 40h | Application: Design & Configuration | Waterfall ,Agile |  |
| 130 | 3.5.1 | Prepare Sample Data | 3d | 2019-03-25 | 2019-03-27 |  | 98d | 0d |  | Технический консультант | 24h | Application: Design & Configuration | Waterfall ,Agile |  |
| 131 | 3.5.2 | Enhance System Setup with Additional Configuration | 2d | 2019-03-28 | 2019-03-29 | 130 | 98d |  |  | Технический консультант | 16h | Application: Design & Configuration | Waterfall ,Agile |  |
| 132 | 3.6 | **Fit-Gap / Delta Design - Fit-Gap Analysis - Solution Validation** | 23d | 2019-04-01 | 2019-05-01 | 128 | 79d | 0d |  |  | 128h | Application: Design & Configuration | Waterfall ,Agile |  |
| 133 | 3.6.1 | Fit-Gap Workshop - Core Finance | 2d | 2019-04-24 | 2019-04-25 |  | 83d |  |  | Функциональный консультант | 16h | Application: Design & Configuration | Waterfall ,Agile |  |
| 134 | 3.6.2 | Fit-Gap Workshop - Accelerated Plan to Product | 3d | 2019-04-11 | 2019-04-15 |  | 91d |  |  | Функциональный консультант | 24h | Application: Design & Configuration | Waterfall ,Agile |  |
| 135 | 3.6.3 | Fit-Gap Workshop - Enhance Request to Service | 2d | 2019-04-26 | 2019-04-29 |  | 81d |  |  | Функциональный консультант | 16h | Application: Design & Configuration | Waterfall ,Agile |  |
| 136 | 3.6.4 | Fit-Gap Workshop - Streamlined Procure to Pay | 3d | 2019-04-19 | 2019-04-23 |  | 85d |  |  | Функциональный консультант | 24h | Application: Design & Configuration | Waterfall ,Agile |  |
| 137 | 3.6.5 | Fit-Gap Workshop - Optimized Order to Cash | 4d | 2019-04-01 | 2019-04-04 |  | 98d |  |  | Функциональный консультант | 32h | Application: Design & Configuration | Waterfall ,Agile |  |
| 138 | 3.6.6 | Fit-Gap Workshop - Core Human Resources | 2d | 2019-04-30 | 2019-05-01 |  | 79d |  |  | Функциональный консультант | 16h | Application: Design & Configuration | Waterfall ,Agile |  |
| 139 | 3.7 | **Fit-Gap / Delta Design - Gap Identification** | 3d | 2019-05-02 | 2019-05-06 | 132 | 79d | 0d |  |  | 24h | Application: Design & Configuration | Waterfall ,Agile |  |
| 140 | 3.7.1 | GAP Documentation / Specification | 3d | 2019-05-02 | 2019-05-06 |  | 79d |  |  | Функциональный консультант | 24h | Application: Design & Configuration | Waterfall ,Agile |  |

Notes:
- 116: The purpose of this deliverable is to present an overview of all planned change management activities. It guarantees that all activities are related to each other as well as to the overall project plan and ensures the "checkability" of OCM activities.
- 117: The purpose of this activity is to collect all required input for the OCM roadmap and document it in a format suitable for communication and inclusion into the project management plan.
- 118: The purpose of this workshop is to align with the entire project management team regarding OCM activities to be conducted. The OCM roadmap, along with the stakeholder analysis on hand at this stage should be shared. An initial communication strategy should be drafted as part of this workshop. .
- 119: The purpose of this phase is to perform a fit/gap analysis to validate the solution functionality included in the project scope and to confirm that the business requirements can be satisfied. Identified gaps and configuration values are added to the backlog for use in the next phase. .. &nbsp; .. .. &nbsp; .. Explore Activities: .. &nbsp; .. .. &nbsp;Prepare, setup and conduct solution validation workshops .. &nbsp;Refine business requirements .. &nbsp;Identify master data and organizational requirements .. &nbsp;Confirm to be business processes .. &nbsp;Define functional solution design, including agap analysis in solution design workshops .. &nbsp;Associate business requirements to the process hierarchy and the solution components .. &nbsp;Obtain business sign-off on delta requirements and design documents .. &nbsp;Collect end user information, analyzing learning needs, and developing a learning deployment strategy .. &nbsp;Establish project management, tracking, and reporting for value delivery . .. In the Explore phase, industry and solution experts from SAP lead a series of structured show-and-tell and solution design workshops. The goal of these workshops is to review the best practice functionality of the SAP solution, identify delta requirements or gaps and document the conceptual design of the to-be delivered SAP enterprise solution. The team documents all functional and technical requirements, project issues, and gaps in SAP Solution Manager. .. &nbsp;
- 120: During the Executing/Monitoring of the Project the team carries out the planned and approved project work and measures project performance to identify variances from the plan. Executing manages the scope of the work to be done, while monitoring monitors the execution, identifies variances from the plan, monitors quality results, controls progress against the plan, controls changes through out the project, assesses and responds to risks, and communicates project status. .. The Project Management Plan developed during the Prepare phase for each of the PM knowledge areas guide the team&#39;s approach to management, execution, monitoring, and control of project activities. This methodology provides steps to be considered when each activity is engaged, supported by the team&#39;s monitoring/controlling plans. The project manager is responsible for ensuring that the monitoring/controlling plans developed in the planning phase are applied at the appropriate level of control. The SAP TQM is responsible for oversight activities in projects that are run under the SAP Premium Engagement agreement (like ActiveEmbedded or MaxAttention). The roles of SAP TQM and Project Manager are distinct with distinct responsibilities during the project delivery. .. Additional information for Premium Engagement implementations: .The SAP (Technical Quality Manager) TQM is responsible for oversight activities in projects which are run under the SAP Premium Engagement agreement (such as SAP Active Embedded or SAP MaxAttention). The roles of SAP TQM and Project Manager are unique with distinct responsibilities during the project delivery. . . Prerequisite: .. .. The project management plan has been developed . .. Procedure: .Understand the execution and monitoring processes for the project and the activities involved in each as referenced in the Project Management Plan. .. .. Direct and Manage Project Execution .. Update the Project Management Documents .. Manage Project Issues, Risks, and Changes .. Communication Project Status and Progress . .
- 121: The purpose of the phase initiation deliverable is to formally recognize that a new project phase starts. .. Procedure: .. .. Review Deliverables of Explore Phase with Customer .. Review Acceptance Criteria with Customer .. Review RACI Chart for Explore Phase with Customer . .
- 122: The purpose of this task&nbsp;is to review all Deliverables of the Explore Phase with the Customer . .. &nbsp; .
- 123: The purpose of this task is to review the acceptance criteria with the Customer. .
- 124: The purpose of this task is to review the RACI Chart for the Explore Phase with the Customer.&nbsp; .
- 125: The purpose of this deliverable is to prepare and&nbsp;define the guidelines to execute the Solution Validation Workshop. .. Procedure: .. .. Schedule and Prepare Solution Validation Workshops .. Record Gaps during Solution Validation Workshops . .
- 126: The purpose of this task is to schedule and prepare for the Solution Validation Workshops and gather all relevant information in order to be sufficiently&nbsp;prepare for the Solution Validation Workshops. .
- 127: The purpose of this tasks is to record all gaps between the delivered product and the customer&#39;s requirements.&nbsp; .
- 128: The purpose of this deliverable is an introduction to Fit Gap / Delta Deign. The purpose of Fit-Gap / Delta Design is to validate the predefined scenarios and enhancements (based on SAP Best Practices for new implementation or the sandbox for system conversion), and identify potential gaps between the delivered product and customer&rsquo;s requirements. .. Three significant steps will be the baseline for the deliverables out of the activity Fit-Gap / Delta Design: .. .. Fit Gap Analysis / Solution Validation .. Gap Validation .. Delta Design / Solution Design . .. The following picture shows the Fip-Gap activities for a new implementation. For conversion scenarios, the sequence of steps is the same &ndash; however, the aim of certain steps differ. For instance, step #6 &ndash; Delta Design &ndash; also documents the configuration&nbsp;&ldquo;must-do&rsquo;s&rdquo; which need to be performed&nbsp;due to the business processes which are already in use in the source system.&nbsp; .. . &nbsp; .. . . .. &nbsp; . .. The key objective&nbsp;of this phase is to gather all relevant information in order to be sufficiently prepared to move ahead with configuration afterwards. .. Requirements and Constraints .. This activity is required for all scenarios. .. Procedure .. Fit-Gap / Delta Design is a &ldquo;summary node&rdquo; in the road map picture. It splits into the following activities according to the sequence given in the&nbsp;picture above: .. .. Fit-Gap / Delta Design - Finalize System Setup .. Fit-Gap / Delta Design - Fit/Gap Analysis &ndash; Solution Validation .. Fit-Gap / Delta Design - Gap Identification .. Fit-Gap / Delta Design - Delta Scope Prioritization .. GAP Validation .. Fit-Gap / Delta Design - Delta Design .. Design Review .. Fit-Gap / Delta Design - Verify and Accept . .. This sequence fits to the design of all business priorities, and is documented in this section of the road map. .. Steps 1-3 as lined out above include Fiori as an integrated part of the workshops taking place. Starting with the prioritization (step 4), it becomes a separate stream with dedicated UX/UI focus. .. How SAP Can Support .. SAP supports this activity with the &ldquo; Fit Gap Analysis and Delta Design &rdquo; service component as part of the&nbsp; Build Design&nbsp; service. This service component follows the 8-step-sequence listed above. .. See accelerator section for details.
- 129: The purpose of this&nbsp;deliverable is to ensure the&nbsp;SANDBOX system setup is finalized. .. Requirements and Constraints .. This activity is required for all scenarios. .. Procedure .. .. Prepare sample data .. Enhance system setup with additional configuration . .. &nbsp;
- 130: The purpise of this task is to setup the project specific sample data based on the installed sandbox or the activated SAP&nbsp;Best Practices which will be used during the Fit&nbsp;/ Gap&nbsp;Workshops to present project specific data for each relevant line of business (e.g. Material Master Data, Business Partner Master Data, etc.). .. Please note: The accelerator section of the SAP Best Practices Explorer contains many accelerators like: .. .. A list of standard reports .. Organizational data overview .. List of master data objects, e.g. for CO and FI .. Account Determination .. A list of roles delivered with the new service .. SAP Best Practices content library .. The Prerequisites Matrix . .. You need to register to get access to these accelerators (S-User required). See the accelerator section for a direct link to the SAP Best Practices Explorer. You will need to scroll down within the tool to the accelerator section. Please note that the accelerators are independent of the chosen localization.
- 131: The purpose of this task is to enhance system setup with additional configuration. .. Especially in a new implementation scenario, some process areas might not fully fit to the expected business scope. Examples for that&nbsp;may be a specific country version. One of the key aspects of a successful Explore phase is to have a pre-defined and system based solution available and to always start the fit gap workshops with a system based initial setup. .. Accordingly, for those areas where no SAP Best Practices content is available, relevant customizing has to be enhanced and extended (e.g. by using transaction SPRO). Input for this task is the detailed scoping document where the elements need to be marked, which are not covered by&nbsp;SAP&nbsp;Best Practices. It also requires clear guidance from scoping and planning,&nbsp;and this&nbsp;level of detail needs to be pre-configured for the respective areas. .. Procedure .. For new implementation projects, follow the procedures described in the Administration Guide (accelerator section).. For conversion projects, you will need to follow the preparation and post-installation activities documented for your specific conversion in the SAP Best Practices portal. .
- 132: Fit Gap Analysis / Solution Validation is executed via on-site workshops involving the project team from the respective business areas. .. Requirements and Constraints .. This activity is required for all scenarios. .. Procedure .. The following workshops are conducted, depending on the customer&rsquo;s selected application scope. Recommendation is to structure the solution validation workshops along with the SAP S/4HANA product map, which is shown in the SAP Solution Explorer (accelerator section). The picture below shows the current structuring into: .. .. Streamlined Procure to Pay .. Accelerated Plan to Product .. Optimized Order to Cash .. Enhanced Request to Service .. HR Connectivity .. Core Finance . .. . . &nbsp; .. &nbsp; . . .. That would lead for example in the area of Streamlined Procure to Pay to six different solution validation workshops. .. See SAP Solution Explorer (accelerator section) for a complete list of business priorities and end-to-end solutions. .. During each solution validation workshop, the target solution (Best Practice for New Implementation and Sandbox Solution for System Conversion) will be presented toward the dedicated key users. For New Implementation Scenario, the following approach could be followed during a solution validation workshop: .. .. Presentation of the process flow diagram out of the Best Practice .. Presentation of relevant transactions for each process step .. Presentation of the UIs along the process . .. Solution validation workshops for one topic (e.g. sourcing and contract management) could run in different cycles (sprints) in order to detail the solution systematically. Focus is to get key decisions clarified first (like organizational units or master data concepts) and become more detailed with each cycle (sprint). .. The result of the fit-gap analysis will be an initial gap list with an indication for a potential solution. .. Within each area (e.g. solution capability or Best Practice scope item), the following requirements need to be documented within the delta backlog initially: .. .. Defined organizational units .. Defined Master Data Objects, including e.g. chart of account .. Defined configuration values based on business drivers .. Technical deltas leading into reports, interface, conversion, enhancements, forms, and workflow (RICEFW) objects .. Deltas leading to changes in the UIs .. Business roles assigned to transactions and requirements for authorizations and training .. Relevant KPIs for data volume management and system monitoring .. Organizational or process changes . .. A critical review of the identified initial backlog follows in the activity GAP Validation.
- 133: The&nbsp;purpose of this task is to run the Fit-Gap Workshop for Core Finance. .. Procedure .. The workshop schedule for Core Finance should follow the SAP product road map along with the respective available&nbsp;SAP&nbsp;Best Practices&nbsp;scope. The following picture describes a potential baseline for a workshop structure. The Business Priority (Core Finance in this case) is structured along End-to-End solutions and Business Capabilities. .. &nbsp; .. . . .. &nbsp; .. Besides the Core Finance specific topics like definition of controlling area, company code, chart of accounts, document types, etc., it is important to define one area where general settings that might be client independent will be discussed, described, and agreed (e.g. factory calendar). As Core Finance is a line of business, which is always in scope of an implementation, it is recommended to consider those elements here. .. The accelerator links are leading to the following information for each&nbsp;Best Practice: .. .. General Description of the SAP&nbsp;Best Practices and key process steps .. Process Diagram .. Test script .
- 134: The&nbsp;purpose of this task is to run the Fit-Gap Workshop for Accelerated Plan to Product. .. Procedure .. The workshop schedule for Accelerated Plan to Product should follow the SAP product road map along with the respective available SAP Best Practices scope. The following picture describes a potential baseline for a workshop structure. The Business Priority (Accelerated Plan to Product in this case) is structured along End-to-End solutions and Business Capabilities. .. . . .. Some scope items are part of different Business Priorities (e.g. Basic Warehouse Management is part of Plan to Product / Order to Cash / Procure to Pay). For the workshop organization, it is not required to run those workshops three times, as the content is mainly similar. Rather, it is recommended to have one leading workshop for those items and ensure that the solution integration to the respective areas is considered. .. The accelerator links lead to the following information for each SAP&nbsp;Best Practices: .. .. General Description of the SAP Best Practices and key process steps .. Process Diagram .. Test script .
- 135: The&nbsp;purpose of this task is to run the Fit-Gap Workshop for Enhanced Request to Service. .. Procedure .. The workshop schedule for Enhanced Request to Service should follow the SAP product road map. The following picture describes a potential baseline for a workshop structure: .. . &nbsp; .. . . .. &nbsp; . .. For this business priority, no SAP Best Practices currently exist.
- 136: The&nbsp;purpose of this task is to run the Fit-Gap Workshop for Streamlined Procure to Pay. .. Procedure .. The workshop schedule for Streamlined Procure to Pay should follow the SAP product road map. The following picture describes a potential baseline for a workshop structure. The Business Priority (Streamlined Procure to Pay in this case) is structured along End-to-End solutions and Business Capabilities. .. . . .. The accelerator links are leading to the following information for each SAP&nbsp;Best Practices: .. .. General Description of the SAP Best Practices and key process steps .. Process Diagram .. Test script .
- 137: The&nbsp;purpose of this task is to run the Fit-Gap Workshop for Optimized Order to Cash. .. Procedure .. The workshop schedule for Optimized Order to Cash should follow the SAP product road map. The following picture describes a potential baseline for a workshop structure. The Business Priority (Optimized Order to Cash in this case) is structured along End-to-End solutions and Business Capabilities. .. . . .. &nbsp; .. The accelerator links are leading to the following information for each of the SAP Best Practices: .. .. General Description of the SAP Best Practices and key process steps .. Process Diagram .. Test script .
- 138: The&nbsp;purpose of this task is to run the Fit -Gap Workshop for Core Human Resources. .. Procedure .. The workshop schedule for Core Human Resources should follow the SAP product road map. The following picture describes a potential baseline for a workshop structure. It shows Time Recording as part of HR Connectivity. .. . . .. &nbsp;
- 139: Gaps identified during the fit gap workshops (see chapter Fit Gap-Analysis - Solution Validation) often require an initial classification with important criteria. This initial classification and documentation will be performed by the responsible lead for the respective area (for example: An organizational change management issue identified in core finance usually would be described from the business key user for Core Finance). Requirements and Constraints This activity is required for all scenarios. Procedure GAP Documentation / Specification
- 140: The goal of this task is to have an initial classified backlog available as input for the next step (prioritization). .. Procedure .. The following aspects should be classified and documented for each gap: .. .. Short and Long Description .. Reason, what would happen, if this will not be realized .. Numbering logic .. Priority, e.g.:.. ... Must have (e.g. mandatory changes from simplification list/li&gt; ... Must have after go-live (e.g. for the first month end closure) ... Important but not mandatory ... Nice to have .. .. .. Gap Type, e.g.:.. ... Configuration Requirements ...Gaps that can be realized leveraging SAP Standard Customizing. Configuration Gaps will consider the following aspects:... .... Documentation of the complete organizational structure according to the enterprise structure .... Documentation of customizing required to configure all master data aspects .... Documentation of customizing required, which is not pre-configured by SAP Best Practice ... ... ... WRICEF Gap ...All adjustments or extensions on workflows, reports, interfaces, conversions, enhancements and forms. Those gaps require specific development knowledge for realizing them. In some projects a specific governance / approval procedure is required to approve those types of gaps as a huge number of those gaps might affect implementation effort as well as maintenance effort afterwards ... Development Gap... .... Significant new developments for functionality that might not be available within SAP standard - we recommend to leverage specific teams like SAP Custom Development to execute those ... ... ... UX Gap: ...The minimal information required for the UX gaps are the name of the app (according the naming in the App Library) and a short description of the detected gap ... Organizational Change Management Gap .. .. .. Ownership .. Assignment to respective scope item or solution capability .. Initial complexity judgment .

| ID | WBS | Task | Duration | Start | Finish | Predecessors | Total slack | Free slack | Resources | Work | Workstream | FLAVORS |
| --- | --- | --- | --- | --- | --- | --- | --- | --- | --- | --- | --- | --- |
| 141 | 3.8 | **Fit-Gap / Delta Design - Delta Scope Prioritization** | 7d | 2019-05-13 | 2019-05-21 | 128 | 67d | 0d |  | 56h | Application: Design & Configuration | Waterfall ,Agile |
| 142 | 3.8.1 | Prioritize Delta Scope | 4d | 2019-05-13 | 2019-05-16 |  | 70d |  | Функциональный консультант | 32h | Application: Design & Configuration | Waterfall ,Agile |
| 143 | 3.8.2 | UX Deep Dive | 3d | 2019-05-17 | 2019-05-21 |  | 67d |  | Функциональный консультант | 24h | Application: Design & Configuration | Waterfall ,Agile |
| 144 | 3.9 | **Gap Validation** | 4d | 2019-05-07 | 2019-05-10 | 139 | 79d | 31d |  | 32h | Application: Design & Configuration | Waterfall ,Agile |
| 145 | 3.9.1 | Validate Gaps | 4d | 2019-05-07 | 2019-05-10 |  | 79d |  | Функциональный консультант | 32h | Application: Design & Configuration | Waterfall ,Agile |
| 146 | 3.10 | **Fit-Gap / Delta Design - Delta Design** | 24d | 2019-05-22 | 2019-06-24 | 141 | 48d | 0d |  | 192h | Application: Design & Configuration | Waterfall ,Agile |
| 147 | 3.10.1 | Delta Design - Core Finance | 5d | 2019-05-22 | 2019-05-28 |  | 67d |  | Функциональный консультант | 40h | Application: Design & Configuration | Waterfall ,Agile |
| 148 | 3.10.2 | Delta Design - Accelerated Plan to Product | 4d | 2019-06-05 | 2019-06-10 |  | 58d |  | Функциональный консультант | 32h | Application: Design & Configuration | Waterfall ,Agile |
| 149 | 3.10.3 | Delta Design - Enhanced Request to Service | 3d | 2019-06-17 | 2019-06-19 |  | 51d |  | Функциональный консультант | 24h | Application: Design & Configuration | Waterfall ,Agile |
| 150 | 3.10.4 | Delta Design - Streamlined Procure to Pay | 5d | 2019-05-29 | 2019-06-04 |  | 62d |  | Функциональный консультант | 40h | Application: Design & Configuration | Waterfall ,Agile |
| 151 | 3.10.5 | Delta Design - Optimized Order to Cash | 4d | 2019-06-11 | 2019-06-14 |  | 54d |  | Функциональный консультант | 32h | Application: Design & Configuration | Waterfall ,Agile |
| 152 | 3.10.6 | Delta Design - Core Human Resources | 3d | 2019-06-20 | 2019-06-24 |  | 48d |  | Функциональный консультант | 24h | Application: Design & Configuration | Waterfall ,Agile |
| 153 | 3.11 | **Design Review** | 4d | 2019-06-25 | 2019-06-28 | 144, 146 | 48d | 7d |  | 32h | Application: Design & Configuration | Waterfall ,Agile |
| 154 | 3.11.1 | Perform Design Review | 4d | 2019-06-25 | 2019-06-28 |  | 48d |  | Офис управления проектом / PMO (PMO) | 32h | Application: Design & Configuration | Waterfall ,Agile |
| 155 | 3.12 | **Fit-Gap / Delta Design - Verify and Accept** | 5d | 2019-07-10 | 2019-07-16 | 153 | 41d |  |  | 40h | Application: Design & Configuration | Waterfall ,Agile |
| 156 | 3.12.1 | Perform Validation and Approval Sessions | 5d | 2019-07-10 | 2019-07-16 |  | 41d |  | Функциональный консультант | 40h | Application: Design & Configuration | Waterfall ,Agile |
| 157 | 3.13 | **Data Volume Planning** | 5d | 2019-06-25 | 2019-07-01 | 146 | 48d | 0d |  | 40h | Application: Design & Configuration | Waterfall ,Agile |
| 158 | 3.13.1 | Perform Data Volume Planning | 5d | 2019-06-25 | 2019-07-01 |  | 48d |  | Координатор проекта / Администратор проекта (PC) | 40h | Application: Design & Configuration | Waterfall ,Agile |
| 159 | 3.14 | **Security Design** | 4d | 2019-07-02 | 2019-07-05 | 157 | 48d |  |  | 32h | Application: Design & Configuration | Waterfall ,Agile |
| 160 | 3.14.1 | Define Security Infrastructure | 4d | 2019-07-02 | 2019-07-05 |  | 48d |  | Технический руководитель / Архитектор (Technical Lead / Basis) | 32h | Application: Design & Configuration | Waterfall ,Agile |
| 161 | 3.15 | **Project Delivery Platform Setup** | 12d | 2019-04-30 | 2019-05-15 |  | 85d |  |  | 48h | System & Data Migration | Waterfall ,Agile |
| 162 | 3.15.1 | Set up Landscape Transformation Software (LT scenarios only) | 3d | 2019-04-30 | 2019-05-02 |  | 94d |  | Технический консультант | 24h | System & Data Migration | Waterfall ,Agile |
| 163 | 3.15.2 | Set up Data Migration Services (New Installation scenario only) | 3d | 2019-05-13 | 2019-05-15 |  | 85d |  | Специалист по миграции данных (Data Migration Specialist) | 24h | System & Data Migration | Waterfall ,Agile |
| 164 | 3.16 | **Sandbox System Setup** | 10d | 2019-04-23 | 2019-05-06 |  | 92d |  |  | 56h | System & Data Migration | Waterfall ,Agile |
| 165 | 3.16.1 | Set Up SANDBOX (System Conversion scenario only) | 2d | 2019-04-23 | 2019-04-24 |  | 92d | 0d | Технический консультант | 16h | System & Data Migration | Waterfall ,Agile |
| 166 | 3.16.2 | Downtime Optimization Preparation (System Conversion scenario only) | 2d | 2019-05-03 | 2019-05-06 | 165 | 92d |  | Технический консультант | 16h | System & Data Migration | Waterfall ,Agile |
| 167 | 3.16.3 | Set Up SANDBOX (New Installation scenario only) | 3d | 2019-04-25 | 2019-04-29 | 165 | 97d |  | Технический консультант | 24h | System & Data Migration | Waterfall ,Agile |

Notes:
- 141: Before moving ahead specifying the solution within the delta design documents, it is important to sort out, which gaps are relevant to fulfill the project objectives, and to perform a dedicated quality review. This is presented in &ldquo;Step B&rdquo; of the picture below which again shows the complete Fit-Gap / Delta Design procedure. .. . . .. &nbsp; .. A&nbsp;specific UI session (Deep Dive) needs to be scheduled to further validate and qualify any Fiori and/or SAP GUI related gaps. Extend and scope of the session depends upon the UI gaps on the backlog list. .. Requirements and Constraints .. This activity is required for all scenarios. .. Procedure .. .. Prioritize Delta Scope .. .. UX Deep Dive .. .
- 142: Based on the initial backlog and the classification, quality checks are required with respect to completeness. .. Procedure .. This step should be performed by a project role that has the customer SAP S/4HANA solution architecture overall in mind, and a common understanding of the project objectives (Solution Architect and Project Management Team). Gaps might be also reviewed critically from that team. .. Complexity parameters (very high, high, medium, low) can be assigned to each identified gap, which enables the project management team to get an initial effort estimate based on T-Shirt sizes. .. The combination of priorities, complexity and other parameters helps to cluster the gaps into different sprints. In some cases, a governance body, like a steering committee will be involved for decision making procedure.
- 143: Reviewing the identified UX gaps reviewed in more detail taking potential solutions into consideration. Qualification and prioritization of UX gaps; coming up initial effort estimates for design and development as a basis for planning and decision making. .. Procedure .. Have the identified UX gaps reviewed in more detail taking potential solutions into consideration. .. .. Initial categorizing of the gaps according to complexity .. Workshops and/or discussions depending upon complexity .. Effort estimates for UX enhancements; definition of enhancements that need additional evaluation to come up with effort estimates (custom specific development, effort estimate is not part of this deep-dive session) .. Capture UI information in a tool for complex gaps (Splash is recommended) .. For process/screen optimization: requirements defined, prioritization, initial high-level effort estimate, low-fidelity mock-ups . .. Based on the categorization and defined priorities, Design and Development activities have to be set up as a next step. This can either be in predefined services packages (Fiori enhancement packs) or as a custom development project. These engagements are not covered by SAP Value Assurance, but require a separate SAP PS agreement.
- 144: The purpose of this deliverable it to perform a quality review of identified gaps by a project independent instance. .. How SAP Can Support .. Innovation Control Center .. During the execution of implementation projects for SAP Premium Engagement customers, an Innovation Control Center (ICC) focuses on designing and creating solutions as close to the standard as possible. An innovation control center is responsible for managing any deviations from standard SAP software. SAP experts, both on site and at SAP, work together to show how solutions to perceived functional gaps can be implemented. .. As part of the &ldquo;Zero Modification&rdquo; service available to SAP Premium Engagement customers, SAP validates all modifications that are required to fill functional gaps. An ICC uses SAP Solution Manager to evaluate functional gaps and monitor project status. Specifically, an ICC uses the SAP Solution Manager functional gap (SMFG) transaction type to collect requirements. .. The ICC and SAP Global Backbone use SAP Solution Manager to work seamlessly together. The IT Service Management WebClient UI is enhanced by an add-on to process the functional gap transaction type , which is based on the incident transaction type, and dashboards display the relevant information. .. SAP further supports this activity with the &ldquo; Gap Validation &rdquo; service component as part of the Safeguarding the Digital Transformation&nbsp; service. See accelerator section for details.
- 145: The&nbsp;purpose&nbsp;of this task is the validation of the identified gaps. .. Procedure .. Validation of gaps should consider the aspect of keeping the SAP standard as closely as possible: .. .. Manage all deviations from SAP standard .. Keep the number of modifications and custom code to a minimum .. Communicate with experts at SAP to identify the bestpossible functionality in SAP standard software for the project and to suggest best practices and architectural guidance for custom enhancements. This task can be supported by SAP Custom Development .
- 146: The purpose of delta design is to detail and document solutions for those gaps that were identified and prioritized during the fit-gap session. This leads to finalizing the respective delta design documents in a format suitable for communication as well as for formal sign-off. .. Procedure .. For each relevant solution capability (or scope item) the following criteria should be described in a delta design document: .. &nbsp;. .. &nbsp;Short Description of the Process (project and SAP S/4HANA specific) .. &nbsp;General Business Requirements .. &nbsp;Process Flow Diagram&nbsp; ..Baseline is always the Best Practices process flow chart. Only the adjustments should be documented in SAP Solution Manager .. &nbsp;User Roles .. &nbsp;Requirements for the Authorization Concept .. &nbsp;Necessary IT Systems ..e.g. interfaced systems to SAP S/4HANA .. &nbsp;Identification of Gaps .. &nbsp;Solution for Gaps .. &nbsp;Important Customizing .. &nbsp;Developments .. &nbsp;Organizational aspects .. &nbsp;Process Quantification (data volume) . .. Besides topics mentioned above, that need to be covered on solution capability level, it is mandatory to describe general settings, organizational units and master data requirements. .. The level of detail of each delta design document should be in a way, that configuration can start based on the description. .
- 147: The purpose of this task is to continue collecting input and finalize the delta design document for Core Finance, in a format suitable for both communication purpose as well as for formal sign-off purpose. The documented delta design provides an understanding of the essential processes at the end-to-end solution (level 2) and provides all requirements on solution capability level. Procedure A delta design document structure for Core Finance can look like that: E2E Solution: .. Accounting and Financial Close General Ledger Asset Accounting Inventory Accounting .. Financial Reporting E2E Solution:... Cost Management and Profitability Analysis Cost Management .. Depending on the complexity of the project, it is recommended to have individual delta design documents on Level 2 (end-to-end solution)..
- 148: The purpose of this task is to continue collecting input and finalize the delta design document for Accelerated Plan to Product, in a format suitable for both communication purpose as well as for formal sign-off purpose. The documented delta design provides an understanding of the essential processes at the end-to-end solution (level 2) and provides all requirements on solution capability level. Procedure A delta design document structure for Accelerated Plan to Product can look like that: E2E Solution: .. Production Planning Basic Order Promising Material Requirements Planning Production Planning .. E2E Solution:... Manufacturing Execution Production processing Basic subcontracting .. E2E Solution: .. Inventory and Basic Warehouse Management Recommendation to cover this topic within procure to pay E2E Solution: .. Product Development and Project Control Project Financials Project Logistics Product Development E2E Solution: Maintenance Maintenance Planning and Scheduling Maintenance Execution E2E Solution: Quality Management and Compliance Corporate Quality Quality Planning Quality Operations Depending on the complexity of the project, it is recommended to have individual delta design documents on Level 2 (end-to-end solution)..
- 149: The purpose of this task is to continue collecting input and finalize the delta design document for Enhanced Request to Service, in a format suitable for both communication purpose as well as for formal sign-off purpose. The documented delta design provides an understanding of the essential processes at the end-to-end solution (level 2) and provides all requirements on solution capability level. Procedure A delta design document structure for Enhanced Request to Service can look like that: E2E Solution: .. Service Master Data Management Technical Assets, Structures, History Service Task Lists, Catalogues .. E2E Solution:... Service Management Service Initiation Service Planning and Scheduling Service Execution and Delivery Service Control Service Billing and Settlement Claims .. E2E Solution: .. Service Parts Management Service Parts Warehousing Service Parts Fulfillment E2E Solution: .. Service Agreement Management Contract Management Warranty Management Depending on the complexity of the project, it is recommended to have individual delta design documents on Level 2 (end-to-end solution)..
- 150: The purpose of this task is to continue collecting input and finalize the delta design document for Streamlined Procure to Pay, in a format suitable for both communication purpose as well as for formal sign-off purpose. The documented delta design provides an understanding of the essential processes at the end-to-end solution (level 2) and provides all requirements on solution capability level. Procedure A delta design document structure for Streamlined Procure to Pay can look like that: E2E Solution: .. Operational Procurement Requirement Processing Purchase Order Processing Service Purchasing .. E2E Solution:... Inventory and Basic Warehouse Management Goods Issue Goods Receipt Basic Warehouse Management .. E2E Solution: .. Sourcing and Contract Management Source Assignment . E2E Solution: .. Supplier Information and Master Data Classification and Segmentation Supplier Evaluation Depending on the complexity of the project, it is recommended to have individual delta design documents on Level 2 (end-to-end solution)..
- 151: The purpose of this task is to continue collecting input and finalize the delta design document for Optimized Order to Cash, in a format suitable for both communication purpose as well as for formal sign-off purpose. The documented delta design provides an understanding of the essential processes at the end-to-end solution (level 2) and provides all requirements on solution capability level. Procedure A delta design document structure for Optimized Order to Cash can look like that: E2E Solution: .. Order and Contract Management Sales Master Data Management Sales Contract Management Sales Order Management and Processing Billing and Invoicing .. Sales Monitoring and Analytics E2E Solution: .. Inventory and Basic Warehouse Management Recommendation to cover this topic within procure to pay E2E Solution: .. Receivables Processing Recommendation to cover this topic within core finance . Depending on the complexity of the project, it is recommended to have individual delta design documents on Level 2 (end-to-end solution)..
- 152: The purpose of this task is to continue collecting input and finalize the delta design document for Core Human Resources, in a format suitable for both communication purpose as well as for formal sign-off purpose. The documented delta design provides an understanding of the essential processes at the end-to-end solution (level 2) and provides all requirements on solution capability level. Procedure A delta design document structure for Core Human Resources can look like that: E2E Solution: .. Core Human Resources and Payroll .. E2E Solution: .. Talent Management . E2E Solution: .. Time and Attendance Management (SAP S/4HANA Focus) . E2E Solution: .. Human Capital Analytics . Depending on the complexity of the project, it is recommended to have individual delta design documents on Level 2 (end-to-end solution)..
- 153: This activity performs a quality review of delta design documents from a project independent instance. .. How SAP Can Support .. SAP supports this activity with the &ldquo; Design Review &rdquo; service component as part of the Safeguarding the Digital Transformation&nbsp; service. See accelerator section for details
- 154: This task performs a quality review of delta design documents from a project independent instance. .. Procedure .. The design review should include criteria like: .. .. Completeness of design documents .. Quality sufficient to start configuration afterwards .. Management of solution integration .. Leverage the SAP standard as closely as possible:.. ... Manage all deviations from SAP standard ... Keep the number of modifications and custom code to a minimum ... Communicate with experts at SAP to identify the best possible functionality in SAP standard software for the project and to suggest best practices and architectural guidance for custom enhancements .. .. . .. How SAP Can Support .. SAP supports this activity with the &ldquo; Design Review &rdquo; service component as part of the&nbsp; Safeguarding the Digital Transformation &nbsp;service. .. In case there is uncertainty on the design of complex processes at net new or existing customers, or there are concerns on robustness, operability and sustainability of a process and solution design for a new or already implemented SAP solution, SAP offers the &ldquo; Application Architecture Evaluation &rdquo; as an additional service component, and as part of the&nbsp; Safeguarding the Digital Transformation&nbsp; service. Industry experienced solution architects review the core business processes and supporting master data, identified gaps and planned development requirements. The solution landscape is analyzed on a high level including interfaces, data volume and custom development aspects. The business blueprint is evaluated, and SAP portfolio alternatives are presented under consideration of latest product road maps. A final report summarizes the covered areas, core processes and the SAP recommendations. .. See accelerator section for details. .. &nbsp;
- 155: The purpose of this deliverable is to obtain a form approval for all created documents during Fit-Gap / Delta Design.
- 156: The&nbsp;purpose of this task is to perform validation and approval sessions. .. Procedure .. All relevant stakeholders from business and IT departments are signing off the respective document. With the sign off, all stakeholder agree that completeness is given and&nbsp;the solution proposals for respective requirements are understood and accepted. Issues identified during acceptance need to be documented and classified. .. Based on the approved design documents, the backlog will be updated and represents now the product backlog for the Realize&nbsp;phase. The updated product backlog is the baseline for the sprint planning&nbsp;in the Realize&nbsp;phase.&nbsp; .. As this is usually one of the last activities within the Explore phase, it is highly recommended to perform a lessons learned session.&nbsp;
- 157: The purpose of this deliverable is data volume planning. Data Volume Management should be considered prior to a system conversion,&nbsp;to reduce&nbsp;the amount of data to be converted (this has implications on duration / downtime of the cutover) as well as to reduce the amount of data in memory (has implications of hardware costs). It is also recommended in an up and running SAP HANA environment to develop a common DVM Strategy including several systems, common retention management, and storage requirements. Data Volume Planning is the first step in the Data Volume Management lifecycle .. Requirements and Constraints .. Data Volume Management Planning should be considered specifically in the following cases: .. .. Sizing results indicate the need for an SAP HANA server larger than the expected .. DVM Alerts from the SAP Early Watch Alert report indicate a need for DVM .. Data archiving is already actively used. This indicates the need to adjust the archiving strategy according to the new data models and technology (i.e. data aging) .. The system is older than 5 years and no significant data archiving has been scheduled, there is a high probability that data is on the system that is no longer relevant for daily business processes .. Customer requires a roadmap to support his SAP HANA conversion proactively. . .. In those cases, SAP recommends to further analyze if there should be additional DVM activities included in the implementation project. .. Procedure .. .. Perform Data Volume Planning . .. Results .. Go or No-Go decision for future DVM activities in the scope of the conversion project. In case of Go, the result will be a road map that defines the exact scope of the data volume management activities.
- 158: The purpose of this task is to analyze the current database and determine how much data can be archived or deleted upfront of an implementation. .. Procedure .. Use common analysis tools like DVM Workcenter in SAP Solution Manager, transactions DB02, TAANA, and SE12. However, in case you have not archived before, it could be challenging to identify the key archiving objects and their saving potential. .. Results .. A decision and road map on how to proceed with DVM prior to a transition. &nbsp; .. How SAP Can Support .. SAP can perform this task with the &ldquo;Data Volume Planning &rdquo; service component, which is part of the &ldquo; Build Design &rdquo; service.&nbsp;Based on a detailed analysis of the database the amount of data (in GB) is determined that can either be archived or deleted according to SAP Best Practices. Based on this analysis, possible follow-up activities are identified. In a workshop, these activities (data archiving or deletion) are discussed and prioritized considering aspects like: .. .. Expected savings. .. Complexity (i.e. the extent of how business processes may be effected by the activities). Considering the usually limited amount of time and resources, it should be focused on so called quick-wins, i.e. data that can be considered as basis and cross-application data and that can be removed from the database without having too intensive and difficult discussions with the business owners .. Relevance (i.e. are these business objects that are simplified and therefore undergo specific conversion routines which will affect the downtime). . .. The workshop also includes knowledge transfer on discussions about the infrastructure requirements for data archiving and a suitable project setup for the implementation. .. Data Volume Planning Outcome: .. .. Go or No-Go decision for future DVM activities in the scope of the conversion project .. In case of Go, the result will be a road map that defines the exact scope of the data volume management activities including timelines, estimated effort, required teams and resources for the individual data archiving and deletion activities .. Based on this road map the next step of defining a Data Volume Management strategy will be performed . .. SAP Enterprise Support customers can request a Continuous Quality Check &ldquo; CQC for Data Volume Management &rdquo; which provides a general view of the DVM situation in your system. Contact your Enterprise Support Advisor for details.
- 159: The purpose of this deliverable is to guide you through security design. In the security design&nbsp;deliverale, you will create a specific road map for the security topics that have to be covered during the transition according to the customer requirements. / Requirements and Constraints / Mandatory requirements : / User management has to be implemented (see chapter 4 of the SAP Security Guide, and &ldquo;Assigning business roles to a user&rdquo; in the Administration Guides for details) / Authorization management has to be implemented (authorization management for application users and database users). Look up the following information: / &ldquo;Creating basic settings for using SAP Fiori Launchpad&rdquo; in the Administration Guide / &ldquo;Creating back-end authorization roles&rdquo; in the Administration Guide / Chapter 4 of the SAP Security Guide / Upgrade of the authorizations according to the technology (see &ldquo;Configuring Roles with Launchpad Start Authorizations&rdquo; in the SAP Online Help Portal) / Recommended: / Redesign of authorization management / Redesign of authorization concept / Mitigate risks in the current concept and implement proper Segregation of Duty (SoD) rules (GRC) (see &ldquo;The Segregation of Duties Concept&rdquo; in the SAP Online Help Portal) / Definition of processes for SAP Auditing, Logging, and Monitoring (see &ldquo;Auditing and Logging&rdquo; in the SAP Online Help Portal) / RFC-Security Service (see SAP Thought Leadership Paper on &ldquo;Securing Remote Function Calls&rdquo; for details) / Procedure / Planning/Scoping of&nbsp;the&nbsp;activities as prioritized by the customer (mandatory/recommended/optional) to create a detailed security road map within the overall transition project. / Results / &ldquo;Go&rdquo; or &ldquo;No-Go&rdquo; decision for security activities in the scope of the transition project. In case of &ldquo;Go&rdquo;, the result will be a road map that defines the exact scope of the security design activities. / How SAP Can Support / SAP supports this activity with the&nbsp; &ldquo;Security Design&rdquo; service &nbsp; component &nbsp;as part of&nbsp; the Build Design service . / Security Design consists of two parts: / The &nbsp;&ldquo;SU25 Authorization Upgrade&rdquo; &nbsp;part executes the mandatory adjustments of existing roles during. It is required for system conversion and landscape transformation projects (which start with a system conversion). Moreover this part is also required for subsequent upgrades. / The &ldquo; S/4HANA Authorization&rdquo; &nbsp;part supports customers in quickly establishing roles and authorizations for an implementation. It is required for all transition scenarios. / An initial scoping determines the required parts and effort with respect to your transition project. / &ldquo; SU25 Authorization Upgrade&rdquo; / The&nbsp; &ldquo;SU25 Authorization Upgrade &rdquo; service supports you to post process your PFCG authorizations for ABAP applications as part of SAP upgrade. For planned &ldquo;System Conversion&rdquo; or &ldquo;Landscape Transformation&rdquo; scenarios these steps are required. / Within the &ldquo; SU25 Authorization Upgrade &rdquo; service the customer will be enabled to understand the required technical basics and methodology which is needed to come to a successful go-live with appropriate PFCG ABAP role content. After an assessment and discussion of your situation you will get customer specific action instructions for updating of your SU24 tables. These tables build the foundation of the PFCG role generator which is used to build and adapt PFCG roles. / Delivery Approach and Scope: / This service will be delivered as a coaching approach, starting with an enablement workshop / Analysis of customer As-is-situation concerning SU24 tables / Creation of concrete actionable instructions as well as effort estimation to upgrade the content of SU24 tables / Performance of all required SU25 steps for updating SU24 tables / Value and Benefits / Customer specific action instruction for realization of authorization post processing steps as part of your conversion after an ABAP system upgrade / SU24 tables are updated as basis for further conversion steps to adapt PFCG roles / Enablement of role owner how to upgrade PFCG authorizations / Delivery Approach and Scope / The delivery approach depends on the corresponding scenario &ldquo;Migration of authorizations&rdquo; (for system conversion or landscape transformation) or &ldquo;New authorization concept&rdquo; (for new implementations) / &ldquo;Migration of authorizations&rdquo; starts with the extraction of old authorization data, simplifications (replaced or deactivated transactions), enhancement (proposal of Fiori Launchpad Authorization Structure in terms of App to Role Assignments), and finally the new role assignment proposals of frontend roles and backend roles / &ldquo;New authorization concept&rdquo; starts with the Scoping, Functional Role Definitions (including Fiori Launchpad Business Catalogs containing Fiori Apps), Organizational Role Definitions and finally the role assignment / Value and Benefits / Minimize effort, costs and duration in activating roles and authorizations for&nbsp; implementation projects based on a proven SAP Best Practices methodology with high level of automation / Get the authorization infrastructure to benefit from Fiori Launchpad as Single Point of Entry providing access to Fiori Apps as well as classical UI technologies / See accelerator section for more details on&nbsp; &ldquo;Security Design&rdquo; service &nbsp; component &nbsp;as part of&nbsp; the Build Design service .
- 160: The purpose of this task is to define all required security topics concerning infrastructure security, covering network security, operation system and database security, and frontend security. .. Requirements and Constraints .. .. Required: ... ... Define communication security ... Plan the implementation of SAP HANA Security following the SAP HANA Security Guide ... Define authentication mechanisms .. .. .. Recommended :.. ... Adapt authorizations to user requirements and roles ... Plan the implementation of Single Sign-On ... Define processes for SAP Auditing, Logging, and Monitoring ... Plan security of IT Infrastructure ... RFC-Security Service ... Gateway Security ... Patching Services Sec Notes Advisory ... Custom Code Security Service .. .. . .. Procedure .. Define the security infrastructure that will be setup and configured in the security implementation activities during the Realize phase. .. Results .. Definition of Security activities in the scope of the conversion project which will be implemented during the Realize phase.&nbsp;
- 161: In the activity Project Delivery Platform Setup , all additional software which is required to implement&nbsp;the new system&nbsp;is going to be set up or updated. .. Requirements and Constraints .. SAP Solution Manager has been set up in the activity Project Delivery Platform Setup in the Prepare phase already. .. This activity is required for landscape transformation and new implementation scenarios&nbsp;which are not limited to the use of the Migration Cockpit and Migration Object Modeler. .. Procedure .. .. Set up Landscape Transformation Software (LT scenarios only) . .. or .. .. Set up Data Migration Services (New Installation scenario only) .
- 162: Depending on the scenario additional SAP LT software needs to be installed. .. Prerequisites .. The Data Migration Design&nbsp;service has been delivered already (initial planning part). .&nbsp; .. Procedure .. Details on what needs to be installed and when, are defined in the activity&nbsp; Data Migration Design &nbsp;in this phase of the project. Please note that additional license costs may apply. .. General information on the SAP LT software can be found in the Accelerator&rsquo;s section. .. How SAP Can Support .. SAP can support this task with the&nbsp; Landscape Transformation Installation &nbsp;service component, which is part of the&nbsp; Platform Execution &nbsp;service. See accelerator section for details.
- 163: In case of a new installation scenario critical master and transactional data objects like material master, profit center group, business partner and sales orders, purchase orders, contracts and more need to be transferred from the legacy system to the new solution. If the migration objects are limited to the listed 32 objects of the picture below, and no data cleansing/data quality checks are required, you can use the built-in Migration Cockpit out of the box. Required changes, for example adding fields, can be managed by the Migration Object Modeler. .. In all other cases, make use of the Data Migration Services. .. Procedure .. The rapid data migration allows you to extract and analyze selected data from virtually any source system. By cleansing, validating, transforming, and migrating your data from any system to the new SAP solution,&nbsp;you will have high quality legacy data in your SAP solution. .. See Accelerators section for more information, what additional software needs to be installed to transfer the data. The RDM package contains detailed information, and a quick guide which explains installation and configuration of the required software. .. Please note that additional license costs may apply. .. How SAP Can Support .. SAP can support this task with the Data Services Installations service component, which is part of the Platform Execution service. See accelerator section for details.
- 164: The purpose of this activity is to technically&nbsp;set up a sandbox environment. The sandbox is later on finalized by functional experts (see activity Activate Solution) to serve for Fit/Gap activities. The procedure to create a sandbox depends on the scenario. .. Procedure .. .. Set Up SANDBOX (System Conversion scenario only) .. Downtime Optimization Preparation (System Conversion scenario only) . .. or .. .. Set Up SANDBOX (New Installation scenario only) . .. Please note: Before converting an SAP system, or installing a fresh one, you will need to download SAP software from SAP Service Marketplace. The planning of such a change event is done in the Maintenance Planner. After entering the required data, the Maintenance Planner fills your download basket, and creates a control file (&ldquo;stack-xml&rdquo;), which is later on required for the conversion and installation tools. The Maintenance Planner has been described in the activity Transition Planning of the Explore phase - Please make yourself familiar with the tool, enter the required information, and download the corresponding software including stack-xml. See accelerator section for details.
- 165: This task covers the provisioning of a sandbox environment in a conversion scenario. / It is important to migrate and convert sandbox copies of production early in the project. The migration and conversion of the sandbox systems will provide valuable insights including confirmation of the planned conversion approach, potential business downtime, required prerequisites, and experience in the nuances and the functionality of each system. / Prerequisites / Prerequisite is that you have defined the conversion scope in the planning phase and that you fulfilled all application prerequisites identified in the SAP Readiness Check. Additionally, you have already set up the required technical infrastructure. / Procedure / This is how you should perform SANDBOX migrations and conversions as copies from production: / Evaluate the conversion approach, the conversion guide, and heterogeneous system copy guides (if required) to determine the necessary steps to achieve the end-state. / Review related SAP Notes for the migration to the target platform. / Perform homogeneous system copies to establish the environment that represents the initial-state. Dependent upon the scope of the project, the system sequence, and the high-level plan; the initial sandbox migration could include the full scope or just the first system planned for migration. / Execute the mandatory preparation steps which have not been done already upfront. See activity Transition Preparation in the Prepare phase of the project. / Establish a software repository on a file server to create a central location for all files used in the migration process. / Execute the conversion of the sandbox system(s) using the process intended for the production systems. / Document what preparatory steps still need to be done in production, before the conversion of the supporting system starts. / Document every step of the conversion to build a cookbook specific to the environment in scope. The intent of such a document is the make the process resource independent. For contingency purposes, all knowledge required for the conversion should be captured in the cookbook. The document should be validated, and extended, in further test conversion. The cookbook should include every step in the process including, but not limited to prerequisites, file names, patch levels, parameters, inputs to selection screens and duration for each step. / Besides the pure technical aspects of the conversion application aspects should be taken into account as well. This can be specific activities from a business process level that have to be executed as part of the system ramp-down before the migration or the ramp-up after the conversion. It can be related as well to data consistency checks (reconciliation reports run before and after conversion to compare e.g. summary of ledgers, checks for duplicate records and others). There are also mandatory post-processing&rsquo;s in the finance area. / Record the anticipated business downtime(s) for the overall migration and conversion process. Utilize prior maintenance activities to estimate the ramp-down and ramp-up activities that would precede and follow the technical steps of the conversion. The time should be captured at a detailed level in order to find opportunities for optimization. / Please note: A conversion run may identify business date inconsistencies which need to be corrected in both sandbox and the productive SAP ECC source system. Depending on the inconsistencies the sandbox conversion run needs to be repeated until all business data inconsistencies have been cleaned up (or marked as irrelevant). Please see the lessons-learned document on finance in the accelerator section for more details. / The more important the business downtime and overall performance aspects are for a customer, the more such sandbox conversion should be executed already on production-like hardware using full copies of productive databases. If this cannot be achieved in a sandbox, at a minimum, it is recommended to use a full database copy in at least one test migration and conversion as a part of the project. See also task Downtime Optimization Preparation (System Conversion scenario only) . / Results / The deliverable of this activity is a successfully converted sandbox system(s). Moreover the migration approach can be validated as feasible for the business, including the estimated business downtime(s). / How SAP Can Support / SAP offers the sandbox provisioning as a conversion of a copy from production as part of the &ldquo; Platform Execution&rdquo; service. The setup of the Fiori platform can be supported as well (service component &ldquo; SAP Fiori Platform Setup &rdquo;). Finally SAP also offers a technical architect who can support your conversions in case of technical questions. See service component &ldquo; Platform Execution Enablement &rdquo; as part of the &ldquo; Platform Execution &rdquo; service for details / SAP also offers to coach the customer with respect to system setup tasks: / Either via monitoring while the customer is executing the setup. / Or via shadowing with demo execution by SAP. / This offering is part of SAP Value Assurance. It is called &ldquo; Platform Execution Enablement &rdquo; (service component), and part of the &ldquo; Platform Definition &rdquo; service. See accelerator section for details. / In case mandatory preparation work (e.g. Customer Vendor Integration) has not been done in the Prepare phase already (see activity &ldquo;Transition Preparation&rdquo; ), SAP can support those activities as part of the sandbox conversion as well. The &ldquo; Mandatory Preparation for System Conversion &rdquo; service component is part of the &ldquo; Build Design &rdquo; service &ndash; see the description of services and service components in the accelerator section.
- 166: Depending upon the downtime requirements of the business and the downtimes already achieved during the test migrations, there may be the need to execute iterative testing cycles to optimize the migration and conversion procedures. The time required for this task should be planned for as a contingency when building the project plan, but in a best case never utilized. In that best case scenario, where the downtime meets the downtime requirements of the business, this time can be reallocated to other aspects of the project. .. During this task the timings of each part of the migration and conversion needs to be carefully evaluated to determine opportunities for optimization. .. As the overall duration has many influencing factors (e.g. database size, network throughput, CPU speed, disk IO, etc&hellip;), there are some constraints on what can be done to reduce the downtime. Therefore it is important to manage the expectations of the downtime, with the business early in the project. If the business offers only a limited downtime window, this should be discussed early in the project planning phase with a contact from SAP .. The conversion for&nbsp;the new system&nbsp;requires additional downtime for the application data model conversion, in addition to the downtime for the system ramp-down, new software implementation, HANA migration, and ramp-up. .. .. &nbsp;Data volume in conversion relevant tables .. &nbsp;Data quality - specifically the data consistency and data diversity of the financial tables BSEG and COEP .. &nbsp;Memory capacity for data migration .. &nbsp;Number of parallel jobs (option to split into smaller packages based on company code and fiscal year) .. &nbsp;Overall system performance (I/O, CPU, memory, tuning, etc&hellip;) . .. For systems larger than 2 Terabytes, a downtime minimized approach may be required to support the data model conversion within the permitted business downtime. .. A good general overview of the Downtime Optimization options can be retrieved from SAP SCN (see Accelerator&rsquo;s section). Their availability depends on various factors (e.g. do you start from SAP ERP, or SAP Suite on HANA? Is SAP executing the conversion or not?). Ask your SAP TQM for more information in case there are indications for additional downtime optimization. .. Procedure .. To optimize migration and conversion downtime, proceed as follows: .. .. Analyze the conversion logs (e.g. from sandbox migration and conversion) to determine the long running phases. .. Identify bottlenecks and evaluate opportunities to reduce the runtime of the long running phases. .. For MaxAttention and&nbsp;ActiveEmbedded&nbsp;customers, if necessary, engage the embedded support team to provide expert analysis of the end-to-end business downtime. .. Execute the conversion following the adoption of the recommendations. . .. There may be the need to perform multiple iterations in order to achieve the required business downtime. .. Results .. As a result, you will get an optimized conversion process, to help meeting the downtime requirements set by the business.&nbsp; .. How SAP Can Support .. SAP can support the downtime optimization in system conversion scenarios. The &ldquo; Business Downtime Optimization &rdquo; service component is part of the&nbsp; Safeguarding the Digital Transformation &nbsp;service. By analyzing each business step and its dependencies within the affected system landscape, this service supports efficient downtime planning and a reduction of the business impact during cutover. Each step which is scheduled to be executed during the business downtime will be analyzed and optimized to reduce the overall downtime as much as possible. The design of the technical procedure of the system conversion will be analyzed and simplified if possible. The SAP service team will review and if possible optimize the tools, methods and technologies that you have chosen. .. See accelerator section for service component information.
- 167: The purpose of this task is to setup the sandbox system &ndash; ideally with all the capabilities that are delivered by either Best Practices, Model Company or RDS package(s) &ndash; to start with a system which is already pre-configured. In case this is not possible (e.g. because no best practice content is available for the functionality in scope), a new (and empty) system needs to be installed. / Once the Sandbox environment is setup, the project team will prepare it for the fit/gap analysis workshops. This typically includes the adjustments to organizational structure, changes to the master data and potential configuration of additional functionality that is critical to be included in the fit/gap analysis. / Procedure / There are several cases to distinguish. / A software appliance can be used, because SAP best practice content may fit to the functional scope. Using a software appliance for sandbox is the fastest way to provide a pre-configured environment to the functional project team. / The appliance can be consumed in three&nbsp;ways: / Hosted in the cloud Customers can access the appliance via the SAP Cloud Appliance Library (SAP CAL, https://cal.sap.com) in a pay-per-use model hosted on Amazon Web Services (AWS). When using the SAP CAL option, the customer can choose between a 30-day trial and a longer-lasting engagement. With the trial, only AWS hosting fees need to be paid by the customer (exact costs to be determined, should be in the range of 3-5 USD per uptime hour). If the customer opts to go beyond the 30-day limit, an SAP CAL subscription license and a regular license is required. Besides the new system&#39;s backend, the customer also receives access to a MS Windows Terminal Server (WTS) with the pre-configured Fiori Launchpad URL, SAP GUI logon, and other useful frontend software. / Installed on-premise: If customers/partners prefer an on-site installation on their own hardware, they can order a Blu-Ray disc from SAP and unpack the appliance from the Blu-Ray (in this case, an SAP HANA and a Linux platform are required on-site). In addition, a service relationship with SAP and a regular license is required. Details can be found in SAP notes 2041140 (for partners) and 2202234 (for customers). In case of an on-premise installation, customers can also decide to install an empty system, without pre-configuration. / The SAP Model Company is the third way to start with a pre-configured system It depends on the SAP Model Company itself, how installation and content activation is done. / See also activity Provide a Trial System in the Discover phase, and the task Define Cutover Approach in the Prepare phase. / However, please note that SAP does not recommend to use a software appliance as a regular DEV system later in the project. Instead, the DEV system needs to be installed fresh. / Best practice content may fit to the functional scope, but the sandbox is installed fresh (without using a software appliance) / A fresh installation of&nbsp;the new solution&nbsp;offers more options to configure the technical architecture of the system, and to activate content selectively. / In this case, you install a new and empty system, by following an installation guide. Afterwards, you create a new best practice client by selectively copying customizing content from client 000. Then you import the newest best practice content into the newly created client, and selectively activate content depending on your functional scope. This is done by the functional project team, by using the Solution Builder (transaction SMB/BBI). See activity Activate Solution for details. / All steps for handling best practice content are described in great detail in the administration guide. / Please remember: If the set-up of the sandbox is done via activation of Best Practices in the SAP Solution Builder, the Fiori apps have to be installed separately. The whole installation process can be eased up using the SAP Maintenance Planner. / Best practice content most likely does not fit to the functional scope. / In this case, you install a new and empty system by following&nbsp;the installation guide.&nbsp;Afterwards, you create a new client by copying customizing content from client 000. Customization takes place by using the SAP Reference Implementation Guide (transaction SPRO). / How SAP Can Support / SAP offers the installation of a sandbox as part of the&nbsp; Platform Execution &nbsp;service. The setup of the Fiori platform can be supported as well (scope option&nbsp;&ldquo; SAP Fiori Platform Setup &rdquo;). Finally SAP also offers a technical architect who can support your installations in case of technical questions. See service component &ldquo; Platform Execution Enablement &rdquo; as part of the &ldquo; Platform Execution &rdquo; service for details. / SAP also offers to coach the customer with respect to system setup tasks: / Either via monitoring while the customer is executing the setup. / Or via shadowing with demo execution by SAP. / This offering is part of SAP Value Assurance. It is called &ldquo; Platform Execution Enablement &rdquo; (service component), and part of the &ldquo; Platform Definition &rdquo; service. See accelerator section for details.

| ID | WBS | Task | Duration | Start | Finish | Predecessors | Total slack | Free slack | Resources | Work | Workstream | FLAVORS |
| --- | --- | --- | --- | --- | --- | --- | --- | --- | --- | --- | --- | --- |
| 168 | 3.17 | **Data Migration Design** | 35d | 2019-03-25 | 2019-05-10 |  | 88d |  |  | 128h | System & Data Migration | Waterfall ,Agile |
| 169 | 3.17.1 | Prepare and Conduct Data Migration Assessment | 3d | 2019-03-25 | 2019-03-27 |  | 88d | 0d | Специалист по миграции данных (Data Migration Specialist) | 24h | System & Data Migration | Waterfall ,Agile |
| 170 | 3.17.2 | Data Audit | 3d | 2019-03-28 | 2019-04-01 | 169 | 88d | 0d | Специалист по миграции данных (Data Migration Specialist) | 24h | System & Data Migration | Waterfall ,Agile |
| 171 | 3.17.3 | Prepare and Present Data Migration Scope and Requirements Document | 2d | 2019-04-08 | 2019-04-09 | 170 | 88d | 0d | Специалист по миграции данных (Data Migration Specialist) | 16h | System & Data Migration | Waterfall ,Agile |
| 172 | 3.17.4 | Data Migration Approach and Strategy Document | 2d | 2019-05-02 | 2019-05-03 | 171 | 92d | 4d | Специалист по миграции данных (Data Migration Specialist) | 16h | System & Data Migration | Waterfall ,Agile |
| 173 | 3.17.5 | Test Data Management | 3d | 2019-04-10 | 2019-05-07 | 171 | 90d | 2d | Специалист по миграции данных (Data Migration Specialist) | 24h | System & Data Migration | Waterfall ,Agile |
| 174 | 3.17.6 | Define Specifications for Data Migration | 2d | 2019-05-08 | 2019-05-09 | 171 | 88d | 0d | Специалист по миграции данных (Data Migration Specialist) | 16h | System & Data Migration | Waterfall ,Agile |
| 175 | 3.17.7 | Run a Landscape Transformation Assessment (LT scenario only) | 1d | 2019-05-10 | 2019-05-10 | 172, 173, 174 | 88d |  | Специалист по миграции данных (Data Migration Specialist) | 8h | System & Data Migration | Waterfall ,Agile |
| 176 | 3.18 | **DEV Setup** | 2d | 2019-04-15 | 2019-04-16 |  | 96d | 0d |  | 16h | System & Data Migration | Waterfall ,Agile |
| 177 | 3.18.1 | DEV Setup (New Implementation) | 1d | 2019-04-15 | 2019-04-15 |  | 96d | 0d | Технический консультант | 8h | System & Data Migration | Waterfall ,Agile |
| 178 | 3.18.2 | DEV Setup (System Conversion) | 1d | 2019-04-16 | 2019-04-16 | 177 | 96d |  | Технический консультант | 8h | System & Data Migration | Waterfall ,Agile |
| 179 | 3.19 | **Integration Setup** | 15d | 2019-04-17 | 2019-05-07 | 176 | 84d | 0d |  | 120h | Application: Integration | Waterfall ,Agile |
| 180 | 3.19.1 | Setup Output Management | 2d | 2019-04-25 | 2019-04-26 |  | 91d |  | Специалист по интеграциям (Integration Specialist) | 16h | Application: Integration | Waterfall ,Agile |
| 181 | 3.19.2 | Setup User Interface (UI) Integration | 3d | 2019-04-17 | 2019-04-19 |  | 96d |  | Специалист по интеграциям (Integration Specialist) | 24h | Application: Integration | Waterfall ,Agile |
| 182 | 3.19.3 | Setup B2B Integration | 2d | 2019-04-29 | 2019-04-30 |  | 89d |  | Специалист по интеграциям (Integration Specialist) | 16h | Application: Integration | Waterfall ,Agile |
| 183 | 3.19.4 | Setup A2A Integration (On-Premise and Cloud) | 3d | 2019-04-22 | 2019-04-24 |  | 93d |  | Специалист по интеграциям (Integration Specialist) | 24h | Application: Integration | Waterfall ,Agile |
| 184 | 3.19.5 | Setup Solution Manager Integration | 2d | 2019-05-01 | 2019-05-02 |  | 87d |  | Специалист по интеграциям (Integration Specialist) | 16h | Application: Integration | Waterfall ,Agile |
| 185 | 3.19.6 | Setup Internet of Things (IoT) Integration | 2d | 2019-05-03 | 2019-05-06 |  | 85d |  | Специалист по интеграциям (Integration Specialist) | 16h | Application: Integration | Waterfall ,Agile |
| 186 | 3.19.7 | Setup Integration to Mobile Solutions | 1d | 2019-05-07 | 2019-05-07 |  | 84d |  | Специалист по интеграциям (Integration Specialist) | 8h | Application: Integration | Waterfall ,Agile |
| 187 | 3.20 | **Integration Design** | 7d | 2019-05-08 | 2019-05-16 | 179 | 84d |  |  | 56h | Application: Integration | Waterfall ,Agile |
| 188 | 3.20.1 | Define Interface Architecture | 4d | 2019-05-08 | 2019-05-13 |  | 84d | 0d | Специалист по интеграциям (Integration Specialist) | 32h | Application: Integration | Waterfall ,Agile |
| 189 | 3.20.2 | Prepare Integration Design | 3d | 2019-05-14 | 2019-05-16 | 188 | 84d |  | Специалист по интеграциям (Integration Specialist) | 24h | Application: Integration | Waterfall ,Agile |
| 190 | 3.21 | **Data Volume Design** | 19d | 2019-03-25 | 2019-04-18 |  | 93d | 0d |  | 72h | Application: Design & Configuration | Waterfall ,Agile |
| 191 | 3.21.1 | Get Transparency on the HANA DVM Quick Wins | 2d | 2019-03-25 | 2019-03-26 |  | 93d | 0d | Руководитель проекта (PM) | 16h | Application: Design & Configuration | Waterfall ,Agile |
| 192 | 3.21.2 | Optional: Setup a DVM Strategy for Business Documents | 2d | 2019-04-17 | 2019-04-18 | 191 | 93d |  | Технический консультант | 16h | Application: Design & Configuration | Waterfall ,Agile |
| 193 | 3.21.3 | Get Transparency on Open Business Documents | 3d | 2019-03-29 | 2019-04-02 | 191 | 103d | 0d | Офис управления проектом / PMO (PMO) | 24h | Application: Design & Configuration | Waterfall ,Agile |
| 194 | 3.21.4 | Adapt Data Aging in your DVM Strategy | 2d | 2019-04-03 | 2019-04-04 | 193 | 103d |  | Руководитель проекта (PM) | 16h | Application: Design & Configuration | Waterfall ,Agile |

Notes:
- 168: In this activity the transfer of business data from legacy systems to the newly implemented system is designed. .. This activity covers both the simple scenario, where standard tools or best practices concepts are sufficient, and the complex LT scenario. .. Requirements and Constraints .. This activity is required for new implementation and landscape transformation scenarios in case data needs to be transferred from legacy systems. .. Procedure .. The procedure differs depending on the implementation scenario. .. For&nbsp; new implementations , the procedure during the explore phase is as follows: .. .. Prepare and conduct data migration Assessment .. Data audit .. Prepare and present data migration scope and requirements document .. Data migration approach and strategy document .. Test data management .. Define specifications for data migration . .. &nbsp; .. For&nbsp; landscape transformation scenarios &nbsp;(client transfer, system merge, company code transfer, and Rapid Data Migration to the new system), the procedure is as follows: .. .. Run a landscape transformation assessment for the specific scenario together with your LT implementation partner or SAP . .. Ideally, a first assessment on data migration design has been performed in the Prepare phase of the project already (e.g. as part of the &ldquo;Transition Planning for New Implementation&rdquo; service component, or as a dedicated &ldquo;Data Migration Architecture&rdquo; assessment; see Transition Planning&nbsp; service component for more details).
- 169: The purpose of this task is to explain the typical SAP data migration approach and tools available and to understand the customer&rsquo;s legacy data systems, business priorities, and technical infrastructure. The outcome should be a definition of the relevant data objects required in the new solution in this phase. .. Procedure .. During the Fit/Gap analysis, the project team validated the predefined scenario provided by the new solution. The documented fits and gaps between out-of-the-box SAP Best Practices and customer&#39;s business requirements will dictate what kind of data objects will be migrated to the new system. .. .. Scenario 1a: Fit &nbsp;&ndash; use of Migration Cockpit and Migration Object Modeler... In the Migration Cockpit, templates are available that specify the relevant data for each migration object. SAP provide templates (Microsoft Excel XML files) that can be used for each migration object. If a template does not meet the business requirement (for example if the relevant Microsoft Excel XML file does not contain all the fields that are needed for the target structure), the Migration Object Modeler can be used to adjust the relevant migration object. .. . .. .. Scenario 1b: Fit &nbsp;&ndash; use of Rapid Data Migration to the new system, on premise edition... Rapid Data Migration to SAP S/4HANA, on-premise edition &nbsp;is a SAP Best Practices package that offers out-of-the-box solution to migrate 40+ data objects. In the Content Library, the project team members can select from a list of pre-defined scope options to filter the data objects for their project. Please note, such Rapid Data Migration package is designed to load only limited types of legacy data that are required to support a SAP Rapid Data Migration to&nbsp;the new&nbsp;deployment. Please see accelerator section for details. .. .. Scenario 2: Gap ..In case the data migration targets on the types of legacy data that are not covered by the Rapid Data Migration package, it is necessary to document such data objects and their elements in detail. In either scenario, the deliverable of this task is a Data Migration Workshop Findings document (link below) that typically covers the following:.. ... High Level Project Description ... Go-Live Strategy ... Data Governance (Roles, Responsibilities) ... Source Systems, Data Objects and Mapping ... Source System Data Demographics and Volume ... High Level Project Plan (a section designated to data migration including risks identified and mitigation plan) .. .. . .. How SAP Can Support .. As mentioned above: A first assessment on data migration design can be supported by a &ldquo; Transition Planning for New Implementation &rdquo; service component, or as a dedicated &ldquo; Data Migration Architecture &rdquo; assessment; see&nbsp; Transition Planning&nbsp; service component for more details). .. For the &ldquo;Fit&rdquo; case, the &ldquo; Rapid Data Migration&rdquo; &nbsp;service helps you to migrate your data from any system to the new SAP system. It accelerates the data migration process by using prebuilt SAP Best Practices content for over 40 critical master and transactional data. See the accelerators section for a detailed service information sheet. .. SAP Enterprise Support customers can also listen to the Meet the Expert recording &ldquo; Rapid Data Migration to SAP Business Suite 4 SAP HANA, on-premise &rdquo; which explains how to accelerate your data migration project with pre-built best-practices content for over 40 critical master and transactional data objects. .. For the &ldquo;Gap&ldquo; case (and also in case &ldquo;Fit&rdquo; and &ldquo;Gap&rdquo; are not clear yet), SAP offers a &ldquo;Data Migration Assessment&ldquo;, where data migration can be planned in detail, and where all important aspects are discussed to be able to execute the data migration in the Realize / Deploy phase of the project.
- 170: The purpose of the data audit is to identify the legacy systems that will supply data for the SAP applications and to profile the quality of the legacy data. Data profiling is the process of analyzing the legacy source data to detect anomalies and of validating the business rules. .. Procedure .. In the data audit, the focus is on conducting a high-level summary analysis, looking for typical problems such as missing data and column names that are inconsistent with content. .. The data audit involves working with the business users to help map out the gap between the existing and required levels of data quality. .. The Rapid Data Migration package provides two tools to assist with data profiling on some master data objects (e.g. customer, vendor, business partner, etc.): .. .. Data Services - provides a basic profiling capability .. Information Steward - provides different types of profiling Columns Address Dependency Redundancy Uniqueness SAP Best Practices . .. Data Quality for Data Migration (listed in accelerator) provides more details. .. The project team can use below accelerators to capture data profiling information on all needed data objects whether they are covered by the Rapid Data Migration package or not. .. How SAP Can Support .. SAP offers a &ldquo;Data Migration Assessment&ldquo;, where data auditing is discussed.
- 171: The purpose of this task is to prepare the data migration scope document, risk and issue document. .. Procedure .. The content of this document should be based on findings from the data migration workshop and data audit. The project team can use below accelerators as a starting template. .. How SAP Can Support .. SAP offers a &ldquo;Data Migration Assessment&ldquo;, where major aspects of a data migration scope and requirements document are discussed. The creation of the document is not part of the service, but in the responsibility of the customer or implementation partner.
- 172: The purpose of the data migration approach and strategy document is to capture and communicate the approach and strategy for the legacy data migration. .. Procedure .. This deliverable is intended to align all project team members and obtain customer sign-off on the data migration framework and methodology. .. Some of the most important parts of this document are listed below. .. .. Strategy and Approach: it describes priorities and timescales of the achievable goals of data migration .. Data Assessment: this section builds on top of the data migration scope and requirements document. It should contain specification of the data to be migrated and a data dictionary that describes all the details of the data objects. .. Data Quality and Cleansing: this part contains an abstraction of data audit&#39;s findings and extend it to capture the appropriate data cleansing plan .. ETL Methodology: it describes an iterative four-stage approach - analyzing the data, extracting and transforming the data, validating the data, and loading it into targets with testing. . .. The Data Migration Strategy and Approach Sample document below is a good demonstration of how these parts can be laid out. .. How SAP Can Support .. SAP offers a &ldquo;Data Migration Assessment&ldquo;, where major aspects of a data migration approach and strategy document are discussed. The creation of the document is not part of the service, but in the responsibility of the customer or implementation partner.
- 173: This is part of the data management that focuses on the data to be created in development and quality assurance systems. Procedure The different characteristics and requirements of the test data should be weighted, in order to choose the proper method and tool for data creation. Besides, one should also take into consideration that certain data, particularly business-critical and personal data, should be kept protected, before entering it in development and quality assurance systems.
- 174: The purpose of this task is to define the specifications (functional, technical) for data migration (extraction, transformation, validation, load, etc.) for both automated process and manual process. .. Procedure .. The overall objective of the automated data migration design is to deliver clean, load-ready data as input to the standard SAP load utilities. However, there are cases that the automated programs are not available or the data volume does not justify the investment in developing such programs. .. For example, due to the low data volumes, it is quicker to convert certain types of master data (bank, cost center, and profit center) through a manual process. Certain types of transactional data, such as open orders (sales, service) need to be manually created by running SAP transactions in the target system. In many cases legacy data may include sensitive or classified information that requires special handling procedures. .. The project team must identify the data sets, determine the customer&rsquo;s security policies and develop a solution that will isolate this information from the non-secured data sets. .. For automated migrations, the security requirements can be met through techniques or methods, such as file and database privileges or the deployment of an isolated migration environment. .. For manual migrations, the recommended solution is to have the business owners that have access to that data perform the manual migration. .. The end deliverable is a Data Security Design document. The project team also needs to construct a Testing Strategy document detailing information such as Test Cycle Definition, Roles and Responsibilities, etc. .. How SAP Can Support .. SAP offers a &ldquo;Data Migration Assessment&ldquo;, where major aspects of a data migration approach and strategy document are discussed. The creation of the document is not part of the service, but in the responsibility of the customer or implementation partner.
- 175: Changing business requirements continuously drive organizations to realign and restructure their business. As a consequence, the transformation of SAP landscapes has become an ongoing business for SAP customers with a strategic importance to stay agile and competitive. Instead of replacing legacy environments by using generic or self-made tools and technologies, SAP customers can use SAP Landscape Transformation as a cost-efficient and secure alternative. SAP customers can manage their SAP-related transformation requirements in a holistic manner - reflecting organizational changes, acquisitions of companies, divestitures, or the harmonization of processes and data in their existing SAP system landscape. .. The objective of this task is to run a landscape transformation assessment together with SAP. The scenarios in scope are: .. .. Client transfer .. Consolidation of several ERP systems into one new target system (System merge) .. Company code transfer to&nbsp;the new&nbsp;target systems . .. Data migrations based on preconfigured objects .. How SAP Can Support .. The &ldquo; Data Migration Assessment &rdquo; service component is part of the &ldquo; Data Migration Design &rdquo; service. It helps customers during the preparation of the transformation to the new environment, and as such complements the&nbsp;new migration options &ldquo;New Implementation&rdquo; and &ldquo;System Conversion&rdquo;. .. The Data Migration Assessment service component provides assessments for the execution of the technical landscape transformation scenarios listed above (more information provided in the Realize phase of this road map):
- 176: Before configuration and development work starts in the Realize phase, the development system (DEV) needs to be set up. It depends on the scenario how this is done. .. Please note: This road map documents the setup of a DEV and a QAS system. Of course, the design of the production support landscape depends on customer requirements for change management. Maybe additional supporting systems need to be set up (e.g. pre-production or training). In those cases the project plan template needs to be adjusted accordingly. .. Requirements and Constraints .. This activity is required for all scenarios. .. There is a technical design document stored in SAP Solution Manager which includes the technical deployment plan, and the software components which need to be installed / updated. .. Procedure .. .. DEV Setup (New Implementation) . .. or .. .. DEV Setup (System Conversion) . .. Please note: Before converting an SAP system, or installing a fresh one, you will need to download SAP software from SAP Service Marketplace. The planning of such a change event is done in the Maintenance Planner. After entering the required data, the Maintenance Planner fills your download basket, and creates a control file (&ldquo;stack-xml&rdquo;), which is later on required for the conversion and installation tools. The Maintenance Planner has been described in the activity Transition Planning of the Explore phase - Please make yourself familiar with the tool, enter the required information, and download the corresponding software including stack-xml. See accelerator section for details. .. How SAP Can Support .. SAP offers the provisioning of the DEV environment for both scenarios as part of the &ldquo; Platform Execution&rdquo;&nbsp; service. This is a dedicated scope option. The setup of the technical Fiori components is covered by scope option&nbsp; SAP Fiori Platform Setup . However, the configuration of the Fiori UIs is not included in this scope option. See accelerator section for more information. .. SAP also offers to coach the customer with respect to system setup tasks: .. .. Either via monitoring while the customer is executing the setup. .. Or via shadowing with demo execution by SAP. . .. This offering is part of SAP Value Assurance. It is called &ldquo; Platform Execution Enablement &rdquo; (service component), and part of the &ldquo; Platform Definition &rdquo; service. See accelerator section for details.
- 177: The goal of this task is to provide a viable, correctly configured technical development environment that is available for use by the project team to begin the realize phase. .. Procedure .. Proceed as follows: .. .. Decide if the sandbox environment should be re-used as the DEV environment. In this case no additional system installation is required. Please note: A sandbox which has been set up by using a software appliance on premise, and which is used as a DEV system afterwards may have activated business functionality which is subject to additional licensing. In addition the SAP BluRay comes with an embedded landscape for Fiori (backend and frontend in the same machine) whereas SAP recommends a Central Hub set-up (having frontend and backend separated) for productive systems. Therefore SAP recommends to not use an SAP appliance as a DEV system, but do a fresh SAP S/4HANA installation. .. Execute the technical installation of the required SAP Products for DEV environment as documented in the technical design document. .. Based on the outcome the decision has been taken to either use SAP Best Practice content or not:.. ... In case to not use SAP Best Practice content: Create a new client, and start configuration from scratch using transaction SPRO. ... In case to use SAP Best Practice content: Follow the instructions given in the administration guide. This will guide you through the technical setup and the configuration process on top of the newest SAP Best Practices content. The technical setup consists of three main steps:... .... Import newest reference content into your newly created development client .... Select the scope .... Activate the scope ... ... .. .. . .. .. The picture below shows these three steps in sequence. . .. .. This activity is done by the functional project team members. .. Results .. Finally, the DEV environment is ready for configuration. .. How SAP Can Support .. SAP offers the installation of a sandbox as part of the&nbsp; Platform Execution &nbsp;service. The setup of the Fiori platform can be supported as well (scope option&nbsp;&ldquo; SAP Fiori Platform Setup &rdquo;).&nbsp;However, the configuration of the Fiori UIs is not included in this scope option&nbsp;but is part of the functional setup. .. SAP also offers to coach the customer with respect to system setup tasks: .. .. Either via monitoring while the customer is executing the setup. .. Or via shadowing with demo execution by SAP. . .. This offering is part of SAP Value Assurance. It is called &ldquo; Platform Execution Enablement &rdquo; (service component), and part of the &ldquo; Platform Definition &rdquo; service. See accelerator section for details.
- 178: The goal of this task is to provide a viable, correctly configured technical development environment that is available for use by the project team to begin the realize phase. DEV is not installed newly &ndash; instead, the old DEV system is converted to the new system. .. Prerequisites .. Prerequisite is that the migration approach that has been validated in a sandbox environment (see activity&nbsp; SANDBOX System Setup &nbsp;in the Explore phase ) , a detailed migration plan is in place, and the required hardware for hosting the&nbsp;the new system&#39;s&nbsp;DEV system is already available and set up. .. Procedure .. Convert the DEV system according to the migration plan. Depending on the transport landscape configuration, there may be a need to perform multiple iterations of the conversion in order to solidify and finalize the cutover plan. Executing test migrations will validate the end-state of the conversion, as well as provide the figures for expected system downtime (see activity&nbsp; Downtime Optimization &nbsp; Preparation &nbsp;for details). Depending on the approach and the transport landscape configuration, there may be a requirement to execute additional sandbox conversions in order to optimize the cutover procedure. .. Please note: &nbsp;In case of a system conversion, the old DEV system will stay for production support of PRD as long as PRD is not converted. Take care to properly&nbsp; retrofit &nbsp;changes performed in the production support landscape to the new DEV system to ensure the latest business requirements are accounted for within the project landscape. Depending on the changes, those retrofit activities may require special attention, because transports between classic SAP ERP and the new solution may cause inconsistencies (see SAP Note 2192251 in the accelerator section) .. Results .. Finally the DEV environment has been converted to the new system. It is ready for further configuration. .. How SAP Can Support .. SAP offers the DEV conversion as part of the &ldquo; Platform Execution&rdquo;&nbsp; service. The setup of the Fiori platform can be supported as well (scope option &ldquo; SAP Fiori Platform Setup &rdquo;).&nbsp;However, the configuration of the Fiori UIs is not included in this scope option, but is part of the functional setup. .. SAP also offers to coach the customer with respect to system setup tasks: .. .. Either via monitoring while the customer is executing the setup. .. Or via shadowing with demo execution by SAP. . .. This offering is part of SAP Value Assurance. It is called &ldquo; Platform Execution Enablement &rdquo; (service component), and part of the &ldquo; Platform Definition &rdquo; service. See accelerator section for details.
- 179: The purpose of this activity is to setup the integration of the affected landscape components into the development, quality assurance, and production system. .. Requirements and Constraints .. This activity is recommended for all scenarios. .. In order to be able to conduct the setup properly, the integration was scoped (i.e. in form of a system &amp; solution architecture with interfaces, and a mapping of functional requirements onto SAP solutions) and planned within the Prepare phase of the transition project. .. The corresponding bordering systems are available. .. Procedure .. Implement the listed tasks to integrate the bordering systems. .. .. Setup B2B Integration .. Setup A2A Integration (On-Premise &amp; Cloud) .. Setup Solution Manager Integration .. Setup Output Management .. Setup User Interface (UI) Integration .. Setup Internet of Things (IoT) Integration .. Setup Integration to Mobile Solutions . .. Results .. As a result, the corresponding systems have been integrated successfully.
- 180: The system introduces a new style of output management (OM). See task&nbsp; Run a first Assessment on Output Management &nbsp;in the Prepare phase for more details. .. The objective of this task is to setup output management. .. Procedure .. For applications&nbsp;that&nbsp;have already adopted the new framework, customize the new output management as lined out in the SAP notes listed in the accelerator section. .. Results .. After conducting the outlined steps the output control for the new system is configured.
- 181: The new system comes with a great user experience based on SAP Fiori. The objective of this task is to integrate the user layer in such a way that Fiori UIs run stable, secure and with best performance. .. Please note: Integration with standard SAP UI technology (SAPGUI, SAP Business Client) is not further explained in this task. See SAP Online Help Portal for details. .. Prerequisites .. See pre-requisites documented for &ldquo;SAP Best Practices&quot;. .. Procedure .. SAP offers a best practices documentation named &ldquo;SAP Best Practices for user experience&quot;&nbsp;that covers key UI integration aspects like: .. .. Create Fiori Users .. Connect SAP Gateway to the new system .. Configuring SAP Web Dispatcher .. Configure SAP Fiori in a multi-tier landscape using transports .. Check and Activate HTTP Service in SAP Gateway System .. Set up of SSO SAML 2.0 (Single Sign On) .. Enablement of the HTTPS for Apache Reverse (Optional) .. Enable SAP JAM Integration. . .. These SAP Best Practices can be retrieved in the SAP Best Practices Explorer (accelerator section). .. Review and identify the scope items and building blocks that are relevant for your project. .. Activate the selected scope item, by following the instructions given in the configuration guides. .. Please take care of properly aligning the UI integration task with the UI activities in the Application: Design and Configuration work stream. .. Results .. After using&nbsp;information &amp; instruction within the scoping items the UI integration is setup. .. How SAP Can Support .. SAP provides the &ldquo;SAP Best Practices&quot; .. SAP further supports the design of Fiori UIs in the&nbsp; &ldquo;Build Design&rdquo; &nbsp;service.
- 182: Business to Business (B2B) Integration describes the chaining of processes between business partners. In addition to the requirements of the A2A integration, this scenario requires support of a variety of industry standards (for example, EDI, AS2) and management of a potentially large number of business partners. .. Like in the A2A scenario, business users have to be able to handle failed messages in their application context. .. Prerequisites .. The integration infrastructure (network, firewall configuration, router) has been setup by the local IT personnel, and connection between business parties A and B is possible. .. The affected systems (the new system, SAP XI/PI, middleware, 3 rd &nbsp;party ERP) of the involved business parties A and B are completely setup by the corresponding basis resources. .. Procedure .. This section provides an overview of the most important concepts related to the configuration of cross-company processes (orbusiness-to-business (B2B) processes) in the Integration Directory. .. Please note: This section merely contains an overview of the most important concepts. Details of the configuration depend on the underlying business process and the specific system landscape, and are much more extensive than described here. .. The procedure for configuring business-to-business processes is essentially the same as the procedure for configuring application-to-application processes. You also use the same types of configuration objects. However, when configuring business-to-business processes you can apply additional concepts. .. One special aspect of B2B configuration is that the business partners involved in B2B processes do not usually share information about their own internal system landscape. You configure a B2B process in the Integration Directories of the involved company. If you use process integration scenarios as the basis for the configuration, the different business partners use the appropriate &ldquo;Component Views&rdquo;. Each company just configures their part of the system landscape that is relevant to them. This is done in the Integration Directory. The process can only be executed when all business partners involved have fully completed their configuration. .. On top of this, integration experts finalize &ndash; per involved business pratner - the configuration settings for their local part of the system landscape. .. Depending on the protocol used, all data (including passwords) is usually transmitted through the network (intranet or Internet) in plain text. To maintain the confidentiality of this data, you should apply transport-layer encryption (e.g. HTTPS / SSL) for both internal communication and message exchange. .. Results .. Once setup has been completed the business partners are able to exchange and share defined business data in a secured way. .. How SAP Can Support .. SAP has plans to offer services to support the B2B integration setup in future. .. Once set up, SAP recommends to use the&nbsp; &ldquo;B2B Integration Cockpit&rdquo;&nbsp; for monitoring and administration. See accelerator section for details.
- 183: Application to Application (A2A) integration covers the chaining of processes between applications. For example, the integration of SAP Hybris C4C with the new system to enable the opportunity-to-order process. .. Particularly important for this kind of integration is to ensure transactional process integrity, as well as monitoring and tracing on single business object level. .. In this context A2A integration is not limited only to SAP systems but also include integration of third party SaaS providers. Orchestration capabilities are used to manage the message choreography between applications (for example, pull/push interactions). .. A further characteristic of this scenario is that business users typically handle errors derived from failed messages in their application context (for example, processing of failed invoices in financial transactions). .. SAP offers integration best practice content to customers and partners, to set up integration very quickly and efficiently while still having the flexibility to adapt customer specific requirements. Best practice content can be accessed in the SAP Best Practices Explorer (see accelerator section). .. Please see SAP Best Practices Explorer to get the most current list of integration best practices. .. Prerequisites .. See sections &ldquo;Software Requirements&rdquo;, &ldquo;Software and delivery requirements&rdquo; and &ldquo;SAP Note&rdquo; in the corresponding best practice package in the SAP Best Practices Explorer (accelerator section). .. Procedure .. See section &ldquo;Implementation&rdquo; in the corresponding best practice package in the SAP Best Practices Explorer (accelerator section). .. Results .. The integration to the corresponding cloud solution is available. .. How SAP Can Support .. SAP supports this activity with several integration best practices to implement the corresponding integration package. .. See accelerator section for details.
- 184: In case you would like to use SAP Solution Manager on-premise to support your transition project, or to operate the new&nbsp;solution after Go-Live, a basic integration of SAP Solution Manager is required. SAP Solution Manager supports: .. .. Portfolio to Project (P2P) &nbsp;to drive the portfolio of projects and balance business initiatives and their business value against IT capacity, skills and timelines .. Requirement to Deploy (R2D) &nbsp;to build what the business needs, when it needs it with measured business outcome .. Detect to Correct (D2C) &nbsp;to anticipate and resolve production problems .. Request to Fulfill (R2F) &nbsp;to catalog, request and fulfill services . .. See accelerator section for more details. .. Please note: Alternatively, you can also use a pre-configured SAP Solution Manager 7.2 CAL image which is hosted by your cloud provider, to support project management and functional design. In this case, no integration with the on-premise landscape is done. .. Prerequisites .. SAP Solution Manager 7.2 on-premise is already set up (see activity&nbsp; Project Delivery and Platform Setup &nbsp;in the Prepare phase). .. Basic configuration (SOLMAN_SETUP transaction) has been finished. .. Procedure .. Register all newly created systems in SAP Solution Manager using the &ldquo;Managed System Configuration&rdquo; in transaction SOLMAN_SETUP. .. Once the registration has been completed, configure your additional SAP Solution Manager capabilities, such as process management, or change control management. .. See various information sources in the accelerator section for details. .. Results .. Your new landscape has been successfully integrated with SAP Solution Manager 7.2. .. How SAP Can Support .. SAP supports this activity with the&nbsp; &ldquo;SAP Solution Manager Setup&rdquo; &nbsp;service component as part of the service&nbsp; &ldquo;Platform Execution&rdquo; . .. In addition, SAP supports this activity with the&nbsp; &ldquo;SAP Solution Manager Starter Pack&rdquo; &nbsp;service. The SAP Solution Manager Starter Pack is applicable when you need direct assistance with the basic configuration and use of the SAP Solution Manager.
- 185: The Internet of Things (IoT) Integration refers to the integration of data from real world objects (for example, machines, sensors, assets) with transactional and/or analytical applications. .. Typical characteristics of this use case are the management and integration of IoT devices, as well as capabilities to handle massive data traffic through high-performance message pipelines. .. Furthermore, IoT connectivity capabilities and merging IoT industry standards like MQTT need to be supported. .. Optionally, complex event stream processing to filter, aggregate, and enrich raw IoT data before persisting it in the database might be required. .. Note: &nbsp;This task currently contains only general aspects on this topic but will be detailed out in one of the next roadmap releases. .. Procedure .. IoT integration in the context of the system&nbsp;is always related to the SAP Cloud Platform, and with IoT services running on the SAP Cloud Platform. .. Proceed as follows: .. .. Make yourself familiar with the&nbsp; SAP Cloud Platform , by checking out the landing page in the SAP Online Help Portal. This information source contains getting-started material, online training at openSAP, and the integration between the new system/solution&nbsp;and the SAP Cloud Platform. .. As a next step, make yourself familiar with the&nbsp; SAP Cloud Platform Internet of Things for the Cloud Foundry Environment,&nbsp; by checking out the landing page in the SAP Online Help Portal. This page describes core IoT services, and how to configure them. .. Finally make yourself familiar with the&nbsp; SAP IoT Application Enablement &nbsp;solution which is a collection of services, apps, and UI templates that help you modeling digital twins of real-world objects. The landing page in the SAP Online Help Portal contains a getting-started material with the most important configuration information. .. Follow the instructions given in the corresponding configuration guides. . .. How SAP Can Support .. IoT scenarios belong to the SAP Leonardo portfolio &ndash; which integrates breakthrough technologies like IoT, Blockchain and Machine Learning, and runs them seamlessly in the cloud. See accelerator section for details. From the main page, you can easily navigate down to the SAP Leonardo innovation services, which help you setting up an example of your first IoT scenario.
- 186: Mobile Integration refers to mobile apps consuming backend services by using native or hybrid device capabilities. .. Typical characteristics of this scenario pattern are online/offline support, data security and protection, as well as device and application lifecycle management. .. Offline support enables client applications to access back end data without requiring a connection to the back end. .. You might want to run applications offline to: .. .. Improve performance by accessing offline data instead of sending data requests to SAP Mobile Platform Server. .. Enable users to continue to use applications when there is intermittent network coverage. .. Support business processes that must be executed by a user while the application is offline. . .. Note: &nbsp;This task currently contains only general aspects on this topic but will be detailed out in one of the next roadmap releases. .. Procedure .. As a first step make yourself familiar with the options you have to integrate mobile solutions (for instance the SAP Mobile Platform Server, or the SAP Cloud Platform Mobile Services). In case you are starting fresh with mobile applications the right option for you may also be influenced by your UX strategy you have&nbsp;(see activities for&nbsp; Fit / Gap &nbsp;in this phase of the project). Please note that Fiori UIs can easily ported to mobile devices. .. Please see the SAP Mobile Platform Community (accelerator section) for more information. .. In case you use the SAP Mobile Platform Server, you need to perform post installation tasks before performing any server or application administration tasks. The post installation tasks you need to perform depend on the landscape you need to support: .. .. Configure reverse proxies and load balancers for managing in-bound application requests to SAP Mobile Platform Server. .. Configure communications between the server and your supported back end systems. .. Set up communications between the server and the Apple Push Notification Service (APNS). .. Set up the security landscape for the server. . .. Results .. After successful setup of the integration for the mobile solution, the solution can be used within the project (i.e. FIT/GAP workshop, enhancing, testing, Go-Live). .. How SAP Can Support .. See accelerator section.
- 187: The purpose of the integration design activity is to detail and document all integration aspects of the project, that have been identified in the Prepare phase. .. Important topics for the integration design are i.e.: .. .. Design of the to-be system &amp; solution landscape with interfaces. .. All other technical, non-business priority specific topics. . .. This leads to finalizing the respective design document in a format suitable for communication as well as for formal sign-off. .. Requirements and Constraints .. This activity is recommended for all scenarios. .. Further requirements: .. .. To-be system and solution architecture with interfaces has been defined and fixed. .. Interface architecture has been defined as scope and fixed. .. All other integration aspects and requirements have been discussed. . .. Procedure .. The level of detail in integration design specification should be in such a way, that configuration and development can start based on the description. This activity should be executed in close cooperation with the&nbsp; Fit Gap / Delta Design &nbsp;activities of the&nbsp; Application: Design &amp; Configuration &nbsp;work stream. .. This activity is structured into two tasks: .. .. Define Interface Architecture .. Prepare Integration Design . .. Results .. The result is a finalized, reviewed and singed integration design.
- 188: SAP and non-SAP systems use interfaces to communicate&nbsp;to other system in the solution landscape. The interface architecture displays the interfaces and indicates additional attributes i.e. the used technology (i.e. middleware), protocol type, frequency- and direction of communication. .. The objective of this task is to prepare a system &amp; solution architecture with interfaces. .. Prerequisites .. .. As a prerequisite, the customer needs to have a clear vision of his to-be system and solution architecture. .. An interface register that represents the current interface scope needs to be defined (see activity Transition Planning in the Prepare phase) .. If the interface scope or the system and solution architecture changes it might be necessary to adapt the interface architecture. . .. Procedure .. .. Define initial interface register to fix scope .. Define to-be system and solution architecture .. Create to-be system and solution architecture with interfaces . .. Results .. The result of this task is a to-be system and solution architecture with interfaces, which is referenced in the scope statement. .. How SAP Can Support .. SAP supports this activity with the&nbsp; &ldquo;Transition for New Implementation (TNI)&rdquo;&nbsp; service component as part of the service&nbsp; &ldquo;Planning the Digital Transformation&rdquo; . The service components provide a system &amp; solution architecture with interfaces as one of its deliverables. .. The Value Assurance service package component&nbsp; &ldquo;Technical Architecture &amp; Infrastructure (TAI)&rdquo; provides as main deliverable a design of a new &ndash; or review of an already existing &ndash; technical architecture for an SAP solution. .. See accelerator section for details.
- 189: The purpose of the integration design activity is to detail and document the different integration aspects, that were identified during the preparation of the to-be system &amp; solution landscape with interfaces and the interface architecture. .. This leads to finalizing the respective design documents in a format suitable for communication as well as for formal sign-off. .. Prerequisites .. .. To-be system and solution architecture with interfaces has been defined in scope and singed-off. .. Interface architecture has been defined in scope and singed-off. . .. Procedure .. For each relevant integration aspect, the following criteria should be described in one overall integration delta design document: .. .. Short description of the integration aspect .. General business requirements (i.e. frequency of replication, required fields) .. Necessary IT systems e.g. interfaced systems to the new system .. Identification of integration gaps (i.e. reference to gap backlog) .. Solution for gaps (used middleware, field mapping, required configuration, used best practices) .. Important customizing .. Developments .. Organizational aspects .. Process quantification (e.g. expected data volume) . .. The level of detail of each integration design document should be in a way, that configuration can start based on the description. .. Results .. The result is a finalized, reviewed and signed integration design. .. How SAP Can Support .. SAP supports this activity with the&nbsp; &ldquo;SAP Interface Management&rdquo; service (IFM)&rdquo; &nbsp;service for Premium Engagement customers. The SAP Interface Management service analyzes and optimizes the design, configuration, and operation of interfaces that are essential to your core business processes. .. SAP supports this activity with the&nbsp; &ldquo;Transition to New Implementation (TNI)&rdquo; &nbsp;service component as part of the service&nbsp; &ldquo;Planning the Digital Transformation&rdquo;. &nbsp;The creation or review of the to-be system &amp; solution architecture with Interfaces is part of this service component. This service component includes the determination of the interface scope.
- 190: The purpose of this&nbsp;deliverable is to&nbsp; agree &nbsp;on a data volume management strategy that defines which data is stored in which storage location for&nbsp; how long&nbsp; (i.e. defining the residence and retention time). This considers and includes aspects of the data owners like: / External reporting requirements (tax audits, product liability) / Internal reporting requirements, i.e. fraud detection / Business process requirements / Data Privacy / Dependencies between data archiving and document management / &hellip;but also defines more IT-organization related aspects such as: / Operation and Monitoring of data archiving and deletion jobs, i.e. in which sequence data archiving objects should best be scheduled related to other archiving objects / Infrastructure, e.g. Content Server to store the archive files / As data avoidance (i.e. deactivating the creation of data by customizing changes) and data summarization (i.e. aggregating data at higher level) will only have future effects, in a conversion scenario you should focus on the following techniques: / Data Deletion / Deleting out-of-date records from the online database that are no longer used by the business nor required for legal compliance (e.g. spool data) / Data Archiving / Transferring data with a long retention period (e.g. legal compliance, product liability data, etc.) from the online database to an alternative storage medium, which provides display access to the transferred data / For those customers that have already set up DVM they need to look into this activity for these reasons: / With SAP Simple Finance SAP has introduced a new concept called Data Aging (see Accelerators section for details) for finance data replacing the Data Archiving concept in this space.&nbsp;Data Aging offers you the option of moving large amounts of data from working memory to disk within SAP HANA so as to gain more working memory. You use the relevant SAP application to move data from the current area to the historical area on disk. You control the move by specifying a &ldquo;data temperature&rdquo; for the data. The move influences the visibility when data is accessed / Due to the massive change of the FIN data model with SAP Simple Finance&nbsp; reload &nbsp;of accounting data that has been archived with archiving object FI_DOCUMNT prior to the conversion is&nbsp; no longer possible &nbsp;after conversion. (See&nbsp;SAP Note 53064 - which clearly states: &ldquo;Reloading data across releases is generally not allowed&rdquo;) / Also, existing archiving strategies need to be checked. E.g. in future, table COEP entries will be saved partly in table ACDOCA and / or in table COEP depending on the value type. Hence future table growth needs to be examined carefully and existing archiving strategies need to be adapted / In case there are customer specific requirements to access archived or historical (cold) data, custom code adoptions need to be considered / Data Aging is available as an additional option for work items, Idocs, change documents, application logs as well as for material documents. Data Aging is also available for Sales documents, Deliveries and Invoices, as well as for Purchase orders. So there may be a benefit of integrating Data Aging in your existing DVM strategy. / In the context of the system conversion project you will need to do the following: / For large systems, set up and execute a DVM strategy focusing on quick-win objects (i.e. temporary, basis and cross-application tables) to reduce the size of the database before system conversion starts. Sanity check the results of the DVM activities (e.g. by using the DVM work center in SAP Solution Manager) / In case time permits also consider a broader approach that also includes data archiving of business documents. You can monitor and track the results of your DVM activities by using the DVM work center in SAP Solution Manager / For large systems, and in case DVM is already set up: Get transparency on open business documents that cannot be archived. Open business documents that fail the archiving checks are likely to fail the conversion checks / For all customers: Understand the concept of Data Aging and adapt your DVM strategy accordingly. / Requirements and Constraints / This activity is of general interest for all scenarios. / &nbsp; / Procedure / &nbsp;Get Transparency on the SAP HANA DVM Quick Wins (system conversion only) / &nbsp;Optional: Set Up a DVM Strategy for Business Documents (system conversion only) / &nbsp;Get Transparency on Open Business Documents (system conversion only) / &nbsp;Adapt Data Aging in your DVM Strategy (all scenarios) / &nbsp; / Results / There is a documented strategy on Data Volume Management. / &nbsp; / How SAP Can Support / Service offerings are described later on task level. / In addition, SAP Enterprise Support customers can: / Listen to the Meet the Experts recording &ldquo; Data Volume Management and SAP HANA &rdquo;. The session explains the need for Data Volume Management (DVM) before migration to SAP HANA. It also explains how to use the DVM work center to support the migration to SAP HANA. / Read the Best Practices document &ldquo; Data Volume Management: Influences of Financial Data Model Changes on DVM &rdquo;. This document gives an overview about required adaptions in your DVM concept when migrating. By using this document, you will understand the impact of the migration on the tables which cause the largest data volumes. In addition, you will get an insight in data aging in the financials area and learn the differences to data archiving. / Join the Expert Guided Implementation &ldquo; Data Volume Management (DVM) &rdquo;. The 5-days training explains how to implement an efficient DVM Strategy. It helps to get DVM Work Center in SAP Solution Manager up and running. Finally it explains various DVM tools, including the DVM Self Service
- 191: The&nbsp;purpose of this task is to identify data which could be easily reorganized or deleted because they are temporary or basis table data. .. Prerequisites .. This task is only relevant for system conversion. .. Procedure .. There is a Guided Self Service available in the DVM Work Center of SAP Solution Manager to provide detailed analysis of your data and useful background information on the most commonly growing tables. .. In case the possible quick-win tables have been identified already in the DVM Planning phase, you can run the Guided Self Service specifically focusing on those manually entered and selected tables. .. Alternatively, there is an option to schedule the Guided Self Service automatically focusing on Basis and temporary tables that could be subject for archiving or deletion without effecting business processes (i.e. DVM quick wins). .. Based on the analysis results and the recommendations, define and &nbsp;agree&nbsp; with all stakeholders on your own&nbsp; residence time . .. See also SAP note 706478 &ndash; &ldquo;Preventing Basis tables from increasing considerably&rdquo; for options to reduce the size of Basis tables. .. The DVM work center also offers beneficial insights and transparency when finally executing the archiving and deletion jobs and allows the monitoring and tracking of success. .. Results .. There is now transparency on the DVM quick wins of SAP HANA.
- 192: The purpose of this task is an optional setup of a DVM strategy for business documents. Setting up and executing a DVM strategy is often time-consuming. One reason is that data residence time (i.e. time the data resides on the database before archiving) and the retention time (i.e. total lifetime of the data before its destruction) need to be defined based on legal and business requirements together with the Business Owners from the Lines of Businesses. .. Prerequisites .. This task is of particular interest for system conversion. .. Procedure .. In the context of a system conversion project, SAP recommends to at least discuss SAP note 2154712 &ndash; &ldquo;Archive transaction data of deactivated company codes&rdquo; to shut down and archive inactive company codes before conversion starts. .. You as an SAP Enterprise Support customer, can run the DVM Guided Self-Service focusing on the largest 30 tables in your system and by doing so you can gain also get insights on reduction potentials calculated based on SAP&#39;s best practice recommendations and background information for business documents, e.g. material documents, CO line items, etc. .. These best practice recommendations on the residence times from the service report can be used as a starting point when starting the discussions with the business owners. The business owners are more willing to agree on a residence time for data archiving if they feel they&nbsp;have a good understanding on the consequences and are informed about the options of accessing archived data. To support this understanding it is useful to run test archiving before&nbsp;the discussions so that you can do a demo on the archive access capabilities of the system. .. Results .. You have started with the execution of a DVM strategy to reduce system size and required downtime during system conversion. .. How SAP Can Support .. SAP offers holistic support to create and execute a DVM strategy. In particular SAP offers the &ldquo;Data Volume Design&rdquo; service component which is part of the &quot; Build Design&quot; &nbsp;service. Customers can either contact the SAP Technical Quality Manager or Client Partner for ordering details. Alternatively, customers can use the contact form to request an SAP Value Assurance service package offer.
- 193: The puepose of this task is to get transparency on open business documents. Open business documents cannot be archived from the SAP system. In order to reveal additional reduction potential, you need to get insights into the current status of open business documents. .. Prerequisites .. This task is of particular interest for system conversion. .. Procedure .. It is difficult&nbsp;to collect the open business documents yourself with acceptable efforts. SAP recommends to order a Business Process Analysis service that provides a snapshot for business metrics. .. Once you have gained transparency on the number of open business documents, you can start clarifying the status together with the Business Data Owners from the Lines of Businesses. The aim is to close as many open business documents as possible, and have them archived before the system conversion. .. Please note that the Business Process Analysis is a one-time health check only. For a continuous root cause analysis and improvement of business processes, Business Process Analytics in SAP Solution Manager can be used. This tool provides benchmarking, advanced benchmarking, value benchmarking, age analysis as well as trend reporting. For more information, please see Accelerator&rsquo;s section. .. Results .. You have gained transparency on open business documents. .. How SAP Can Support .. SAP offers a Business Process Analysis service that provides a snapshot for business metrics like: .. .. &rdquo;Sales orders overdue for delivery&ldquo; .. &ldquo;Outbound deliveries overdue for GI posting&rdquo; .. &ldquo;Deliveries overdue for billing&rdquo; .. &ldquo;Open &amp; overdue items in Accounts Receivables&rdquo; .. &ldquo;Open &amp; overdue purchase requisitions&rdquo; .. &ldquo;Open &amp; overdue purchase order items&rdquo; .. &ldquo;MM invoices blocked for payment&rdquo; .. &ldquo;Open &amp; overdue items in Accounts Payable&rdquo; .. &ldquo;Production/Process orders overdue for deletion flag&rdquo; .. &ldquo;Inbound deliveries overdue for GR posting&rdquo; . .. All available metrics are documented in a KPI catalog. For details, see Accelerator&rsquo;s section. .. For SAP Enterprise Support customers, an EGI session is available with focus on Business Process Improvement (BPImp) that shows SAP Best Practices to support the identification of possible root causes of open business documents as well as a continuous improvement of the business processes. See Accelerator&rsquo;s section for details on a suitable EGI.
- 194: The purpose of this task is to adapt data aging in your DVm strategy.&nbsp;A new DVM concept named &ldquo;Data Aging&rdquo; has been introduced. The objective of this task is to adjust the DVM strategy accordingly. .. Prerequisites .. This task is important for all scenarios. .. Procedure .. Proceed as follows: .. .. Inform yourself.&nbsp;SAP Note 2190848 &ndash; &ldquo;FAQ - Aging for Journal Entry in SAP Simple Finance&rdquo;&nbsp;gives you a lot of information on the Data Aging concept, and its impact on DVM as such. SAP Note 2190137 &ndash; &ldquo;sFIN: Reduce memory footprint of obsolete tables&rdquo; gives you an overview about obsolete tables in SP Simple Finance area and how you can reduce the data footprint after successful transition; it also indicates what kind of data are still required after transition and might be reduced already in old system environment / before transition. There are already books available on this new topic (e.g. from SAP Press, see accelerator section). .. For material documents you should look at SAP note 2224147 &ndash; &ldquo;Re-enablement: Archiving of material documents&rdquo;. .. For all available Data Aging objects please look at the collective SAP note 2315141 &ndash; &ldquo;Collective note for Data Aging Framework&rdquo;. This SAP Note is regularly updated when new information becomes available. .. Together with your Data Volume Management head, and the Business Data Owner from the FIN Lines of Businesses, clarify which data should be archived before the system conversion, and how Data Aging should be configured as part of the conversion. As mentioned in the SAP note, please make sure to properly adapt custom code that accesses archived FIN data, or in future FIN data from the history space. . .. Results .. The DVM strategy has been adjusted with respect to Data Aging. .. How SAP Can Support .. SAP supports you with respect to Data Volume Management.&nbsp;In particular SAP offers the&nbsp; &ldquo;Define Data Volume Design&rdquo; &nbsp;service component which is part of the &ldquo; Build Design&rdquo; &nbsp;service.

| ID | WBS | Task | Duration | Start | Finish | Predecessors | Total slack | Free slack | Resources | Work | Workstream | FLAVORS | Assembly Category |
| --- | --- | --- | --- | --- | --- | --- | --- | --- | --- | --- | --- | --- | --- |
| 195 | 3.22 | **Stakeholder Analysis** | 7d | 2019-04-19 | 2019-04-29 | 190 | 92d | 0d |  | 80h | Application: Solution Adoption | Agile |  |
| 196 | 3.22.1 | Conduct Classification of Project Stakeholders | 3d | 2019-04-19 | 2019-04-23 |  | 93d | 0d | Офис управления проектом / PMO (PMO) | 24h | Application: Solution Adoption | Agile,Waterfall | Non-core (N) |
| 197 | 3.22.2 | Identify Executive Sponsors and Project Management Executives | 2d | 2019-04-24 | 2019-04-25 | 196 | 94d |  | Руководитель проекта (PM) | 16h | Application: Solution Adoption | Agile,Waterfall |  |
| 198 | 3.22.3 | Identify Key Users and Business Process Experts | 3d | 2019-04-24 | 2019-04-26 | 196 | 93d |  | Специалист по обучению и коммуникациям | 24h | Application: Solution Adoption | Agile,Waterfall | Non-core (N) |
| 199 | 3.22.4 | Identify End Users and Consumers (users who benefit from the system) | 2d | 2019-04-26 | 2019-04-29 | 196 | 92d |  | Руководитель проекта (PM) | 16h | Application: Solution Adoption | Agile,Waterfall |  |
| 200 | 3.23 | **Change Impact Analysis** | 5d | 2019-04-30 | 2019-05-06 | 195 | 92d |  |  | 40h | Application: Solution Adoption | Waterfall ,Agile |  |
| 201 | 3.23.1 | Validate Organizational Alignment Approach | 3d | 2019-04-30 | 2019-05-02 |  | 92d | 0d | Специалист по обучению и коммуникациям | 24h | Application: Solution Adoption | Waterfall ,Agile | Non-core (N) |
| 202 | 3.23.2 | Establish Baseline of Current State | 2d | 2019-05-03 | 2019-05-06 | 201 | 92d |  | Специалист по обучению и коммуникациям | 16h | Application: Solution Adoption | Waterfall ,Agile | Non-core (N) |
| 203 | 3.24 | **Communication Plan** | 4d | 2019-03-25 | 2019-03-28 |  | 88d | 0d |  | 32h | Application: Solution Adoption | Waterfall ,Agile |  |
| 204 | 3.24.1 | Define Value Argumentation / Key Messages | 2d | 2019-03-25 | 2019-03-26 |  | 88d | 0d | Специалист по обучению и коммуникациям | 16h | Application: Solution Adoption | Waterfall ,Agile | Non-core (N) |
| 205 | 3.24.2 | Define Communication Strategy | 2d | 2019-03-27 | 2019-03-28 | 204 | 88d |  | Специалист по обучению и коммуникациям | 16h | Application: Solution Adoption | Waterfall ,Agile | Non-core (N) |
| 206 | 3.25 | **End User Training Strategy and Plan** | 10d | 2019-03-29 | 2019-04-11 | 203 | 88d | 0d |  | 80h | Application: Solution Adoption | Waterfall ,Agile |  |
| 207 | 3.25.1 | Conduct Learning Needs Analysis | 3d | 2019-03-29 | 2019-04-02 |  | 88d | 0d | Специалист по обучению и коммуникациям | 24h | Application: Solution Adoption | Waterfall ,Agile | Non-core (N) |
| 208 | 3.25.2 | Share End-User training strategy and plan with Testing Manager | 4d | 2019-04-03 | 2019-04-08 | 207 | 88d | 0d | Специалист по обучению и коммуникациям | 32h | Application: Solution Adoption | Waterfall ,Agile |  |
| 209 | 3.25.3 | Develop Detailed End-User Training Plan | 3d | 2019-04-09 | 2019-04-11 | 208 | 88d |  | Специалист по обучению и коммуникациям | 24h | Application: Solution Adoption | Waterfall ,Agile | Non-core (N) |
| 210 | 3.26 | **Project Team Training** | 16d | 2019-04-17 | 2019-05-08 | 206 | 90d |  |  | 40h | Application: Customer Team Enablement | Waterfall ,Agile |  |
| 211 | 3.26.1 | Conduct Ramp-up Training | 3d | 2019-04-17 | 2019-04-19 |  | 90d | 0d | Специалист по обучению и коммуникациям | 24h | Application: Customer Team Enablement | Waterfall ,Agile | None (NONE) |
| 212 | 3.26.2 | Conduct Key User training | 2d | 2019-05-07 | 2019-05-08 | 211 | 90d |  | Специалист по обучению и коммуникациям | 16h | Application: Customer Team Enablement | Waterfall ,Agile | None (NONE) |
| 213 | 3.27 | **End User Training Content** | 21d | 2019-04-12 | 2019-05-10 | 206 | 88d |  |  | 64h | Application: Solution Adoption | Waterfall ,Agile |  |
| 214 | 3.27.1 | Adaptation of Pre-delivered Training Content | 3d | 2019-04-12 | 2019-04-16 |  | 88d | 0d | Специалист по обучению и коммуникациям | 24h | Application: Solution Adoption | Waterfall ,Agile | None (NONE) |
| 215 | 3.27.2 | Share End-User training content with Testing Manager | 3d | 2019-04-22 | 2019-04-29 | 214 | 89d | 0d | Специалист по обучению и коммуникациям | 24h | Application: Solution Adoption | Waterfall ,Agile |  |
| 216 | 3.27.3 | Prepare and Build Training Content in Project Environment | 2d | 2019-05-09 | 2019-05-10 | 215 | 88d |  | Специалист по обучению и коммуникациям | 16h | Application: Solution Adoption | Waterfall ,Agile | None (NONE) |
| 217 | 3.28 | **Backlog Prioritization** | 3d | 2019-03-25 | 2019-03-27 |  | 98d | 0d |  | 24h | Application: Design & Configuration | Agile |  |
| 218 | 3.28.1 | Leverage Value Driver framework for prioritization | 3d | 2019-03-25 | 2019-03-27 |  | 98d |  | Функциональный консультант | 24h | Application: Design & Configuration | Agile |  |

Notes:
- 195: The purpose of the stakeholder analysis deliverable is to detect the level of acceptance or the general attitude regarding the project on the part of all key stakeholders, as well as the ways they can influence the project. Execute an analysis of current state 'as-is' and future state 'to-be' business process maps to quantify the delta 'transition gap'.
- 196: The purpose of this task is to re-visit the stakeholder identification results, determine the detailed level of change impacts for the identified stakeholder (groups) in order to create transparency about the organizational and system changes.
- 197: The purpose of this task is to identify key users needed for the different areas (depending on the scope of this project). .
- 198: The purpose of this task is to identify key users needed for the different areas (depending on the scope of this project). .
- 199: The purpose of this task is to identify key users needed for the different areas (depending on the scope of this project). .
- 200: The purpose of the Change impact analysis deliverable is to ensure that the organizational and technical changes in business processes have been identified and documented by comparing the as-is and the to-be business processes.
- 201: The purpose of this task is to validate the chosen approach with key stakeholders for the continued project execution.
- 202: The purpose of this task is to define the baseline for where organizational change management starts and against which progress and success of the OCM-activities are measured.
- 203: The purpose of the communication plan deliverable is to summarize all planned communication measures and to help identify the dependencies among various activities. The communication plan is aligned to the overall OCM roadmap and addresses mainly external communication to stakeholders, key users, end users, and suppliers.
- 204: The purpose of this task is to provide a set of key messages to describe the benefit of the SAP solution and the change impact for every stakeholder group. Due to the individual goals and interests of stakeholder groups, it is necessary to define specific key messages for each stakeholder group, for example to specify what to tell particular employees.
- 205: The purpose of this task is to define the communication strategy for the change management activities.
- 206: The purpose of the End User Training Strategy and Plan deliverable is to develop a high level training plan that provides the recommended approach and corresponding activities to prepare the end users for using the new system.
- 207: The purpose of this task is to perform an analysis of the end-user population to be trained and determine where the skill levels, knowledge gaps, and training requirements are located. This analysis contains the key customer information for definition of the end-user training and documentation of high-level project plan recommendations, proposals, and preliminary strategies.
- 208: The purpose of this task is to help the training manager develop their testing strategy and plan aligned with the training strategy and plan. .
- 209: The purpose of this task is to develop a working document to track evolution of documents and progress of processes for all education aspects of the project.
- 210: The purpose of the Project Team Training deliverable is to ensure the project team is properly enabled to perform all the tasks associated with training in regards to key users and the project ramp-up.
- 211: The purpose of this task is to clarify deliverables and expectations, methodology, and tools. Typically, two to three days should be reserved for this training. Once the team members or at minimum the team leads are identified, they will be brought on board with the ramp-up training before the phase kickoff meeting. .. Procedure: .. .. Set project team expectations and document deliverables .. Provide guidance for the validation workshops and relevant enabling tools .. Introduce quality assurance and its acceptance criteria .. Prepare for essential validation skills such as workshop facilitation, requirements gathering, and process modeling .. Foster teamwork within project team .
- 212: The purpose of this&nbsp;task is to train the key users for the solution in scope (pre-defined content)&nbsp;and enable them for end user training. At the end of the training, the key user will easily understand what needs to be done in the&nbsp;respective project phases, deliverables and activties, with a set of predefined accelerators and tools. The key user will be ready to train and support end users using the SAP solution. .. &nbsp; .. &nbsp;
- 213: The purpose of this task is to establish and communicate the internal support process to the users.
- 214: The purpose of this task is to validate and adapt the standard end user training material being pre-delivered within the solution (delivery model 3&4).
- 215: The purpose of this task is to help the training manager develop their testing content aligned with the training strategy and plan. .
- 216: The purpose of this task is to prepare training content necessary to teach the users how to run the new business processes using the new system.
- 217: The purpose of this task is to prioritize the backlog items by business importance. The SAP Activate Methodology recommends to use the MSCW prioritization framework (e.g. the Must-Have, Should-Have, Could-Have, Would-Have) for an initial grouping of the backlog requirements. The business process owner is responsible for determining the relative priority of each requirement. Once the requirements are assigned to the appropriate group, the business owner needs to determine a sequence of requirements in each of those groups. This will help project team to understand the relative priority of items in each group and this will facilitate selection of the high priority items during the sprint planning in Realize phase.
- 218: The purpose of this task is to define a common framework to address Gaps prioritization. The MSCW prioritization (Must-Have, Should-Have, Could-Have, Would-Have) is used for an initial grouping of requirements. During prioritization the following dimensions need to be considered:&nbsp; (a) Dependencies&nbsp; and Integration &ndash; assess impact of the requirement on other requirements (technical risk, dependencies, integration points); (b) Scale &ndash; the desirability of the feature to a broad base of users (business impact, acceptance); and, (c) Importance &ndash; the desirability of the requirement to a small number of important users or customers (influencing key stakeholders, business value). The backlog gets prioritized, estimated (relative sizing or in person days).

| ID | WBS | Task | Duration | Start | Finish | Predecessors | Total slack | Free slack | Resources | Work | Workstream | FLAVORS | Assembly Category |
| --- | --- | --- | --- | --- | --- | --- | --- | --- | --- | --- | --- | --- | --- |
| 219 | 3.29 | **Business Solution Design for Business Objects** | 13d | 2019-03-28 | 2019-04-15 | 217 | 96d | 50d |  | 104h | Application: Design & Configuration | Waterfall ,Agile |  |
| 220 | 3.29.1 | Define Business Organization Structure | 3d | 2019-03-28 | 2019-04-01 |  | 98d | 0d | Руководитель проекта (PM) | 24h | Application: Design & Configuration | Waterfall ,Agile | None (NONE) |
| 221 | 3.29.2 | Define General Settings and Master Data | 4d | 2019-04-02 | 2019-04-05 | 220 | 98d | 0d | Специалист по миграции данных (Data Migration Specialist) | 32h | Application: Design & Configuration | Waterfall ,Agile | None (NONE) |
| 222 | 3.29.3 | Define User Role Concept | 2d | 2019-04-12 | 2019-04-15 | 221 | 96d |  | Руководитель проекта (PM) | 16h | Application: Design & Configuration | Waterfall ,Agile | None (NONE) |
| 223 | 3.29.4 | Define Logical Data Model | 4d | 2019-04-08 | 2019-04-11 | 221 | 98d |  | Руководитель проекта (PM) | 32h | Application: Design & Configuration | Waterfall ,Agile | None (NONE) |
| 224 | 3.30 | **Business Scenario #1 - n - Detailed Design** | 4d | 2019-06-25 | 2019-06-28 | 219 | 46d | 2d |  | 32h | Application: Design & Configuration | Waterfall ,Agile |  |
| 225 | 3.30.1 | Refine Epics and Update Product Backlog | 4d | 2019-06-25 | 2019-06-28 |  | 46d |  | Функциональный консультант | 32h | Application: Design & Configuration | Waterfall ,Agile | None (NONE) |
| 226 | 3.31 | **Business Process #1 - n - Detailed Design** | 7d | 2019-07-03 | 2019-07-11 | 224 | 44d |  |  | 56h | Application: Design & Configuration | Waterfall ,Agile |  |
| 227 | 3.31.1 | Complete Business Process Design Document | 3d | 2019-07-03 | 2019-07-05 |  | 44d | 0d | Функциональный консультант | 24h | Application: Design & Configuration | Waterfall ,Agile | None (NONE) |
| 228 | 3.31.2 | Define User Stories and Update Product Backlog | 2d | 2019-07-08 | 2019-07-09 | 227 | 44d | 0d | Функциональный консультант | 16h | Application: Design & Configuration | Waterfall ,Agile | None (NONE) |
| 229 | 3.31.3 | Develop Stories Board | 2d | 2019-07-10 | 2019-07-11 | 228 | 44d |  | Технический консультант | 16h | Application: Design & Configuration | Waterfall ,Agile |  |
| 230 | 3.32 | **Value Realization** | 4d | 2019-03-25 | 2019-03-28 |  | 80d | 0d |  | 32h | Application: Solution Adoption | Waterfall ,Agile |  |
| 231 | 3.32.1 | Prepare Value Dashboard | 4d | 2019-03-25 | 2019-03-28 |  | 80d |  | Офис управления проектом / PMO (PMO) | 32h | Application: Solution Adoption | Waterfall ,Agile | None (NONE) |
| 232 | 3.33 | **Detailed Design - Configuration and Enhancements** | 9d | 2019-03-29 | 2019-04-10 | 230 | 80d | 0d |  | 40h | Custom Code Extensions | Waterfall ,Agile |  |
| 233 | 3.33.1 | Define Functional Design - RICEFW Object #1 - n | 5d | 2019-03-29 | 2019-04-10 |  | 80d |  | Функциональный консультант | 40h | Custom Code Extensions | Waterfall ,Agile | None (NONE) |
| 234 | 3.34 | **Baseline Build Sign-Off** | 14d | 2019-04-16 | 2019-05-03 | 232 | 93d |  |  | 80h | Application: Design & Configuration | Agile |  |
| 235 | 3.34.1 | Conduct Baseline Build and Visualizations Demo | 3d | 2019-04-22 | 2019-04-30 |  | 93d | 0d | Руководитель проекта (PM) | 24h | Application: Design & Configuration | Agile | None (NONE) |
| 236 | 3.34.2 | Conduct Acceptance Testing of Baseline Build | 4d | 2019-04-16 | 2019-04-19 |  | 100d | 7d | Руководитель проекта (PM) | 32h | Application: Design & Configuration | Agile | None (NONE) |
| 237 | 3.34.3 | Finalize Documentation of Baseline Build | 2d | 2019-05-01 | 2019-05-02 | 235, 236 | 93d | 0d | Офис управления проектом / PMO (PMO) | 16h | Application: Design & Configuration | Agile | None (NONE) |
| 238 | 3.34.4 | Signoff Baseline Build and Visualizations | 1d | 2019-05-03 | 2019-05-03 | 237 | 93d |  | Руководитель проекта (PM) | 8h | Application: Design & Configuration | Agile | None (NONE) |
| 239 | 3.35 | **Legacy Data Migration** | 30d | 2019-04-11 | 2019-05-22 | 232 | 80d |  |  | 144h | Technical Architecture & Infrastructure | Waterfall ,Agile |  |
| 240 | 3.35.1 | Ensure Master Data Management Processes Ownership | 3d | 2019-04-11 | 2019-04-15 |  | 80d | 0d | Специалист по миграции данных (Data Migration Specialist) | 24h | System & Data Migration | Waterfall ,Agile | Non-core (N) |
| 241 | 3.35.2 | Conduct Data Mapping workshops (master data for pre-defined solutions) | 3d | 2019-04-16 | 2019-04-22 | 240 | 82d | 2d | Специалист по миграции данных (Data Migration Specialist) | 24h | System & Data Migration | Waterfall ,Agile | Non-core (N) |
| 242 | 3.35.3 | Conduct Data Quality Assessment | 2d | 2019-04-23 | 2019-04-24 | 240 | 80d | 0d | Специалист по миграции данных (Data Migration Specialist) | 16h | System & Data Migration | Waterfall ,Agile | Non-core (N) |
| 243 | 3.35.4 | Define Automated Data Migration Approach | 2d | 2019-04-30 | 2019-05-01 | 241, 242 | 80d | 0d | Специалист по миграции данных (Data Migration Specialist) | 16h | System & Data Migration | Waterfall ,Agile | Non-core (N) |
| 244 | 3.35.5 | Define Manual Data Migration Approach | 3d | 2019-04-25 | 2019-04-29 | 241, 242 | 82d | 2d | Специалист по миграции данных (Data Migration Specialist) | 24h | System & Data Migration | Waterfall ,Agile | Non-core (N) |
| 245 | 3.35.6 | Prepare Data Quality Plan | 3d | 2019-05-16 | 2019-05-20 | 243, 244 | 82d |  | Специалист по миграции данных (Data Migration Specialist) | 24h | System & Data Migration | Waterfall ,Agile | Non-core (N) |
| 246 | 3.35.7 | Prepare Data Security Design and plans | 2d | 2019-05-21 | 2019-05-22 | 243, 244 | 80d |  | Специалист по миграции данных (Data Migration Specialist) | 16h | System & Data Migration | Waterfall ,Agile | Non-core (N) |

Notes:
- 219: The purpose of business objects modeling (cross-process view) is to identify business objects that are relevant for the scope of the implementation, such as organizational structures or customer or material masters, and to design a solution for these business objects within the SAP solution. Business objects are associated to processes and reflected in applications. Understanding these relationships is essential for overall integration and cross-process integrity. Business object modeling may also build the foundation for service modeling, if the project is implementing a service-oriented architecture (SOA).
- 220: The purpose of this task is to capture the design and requirements of the organizational structure. This should reflect multiple views of a company i.e. Legal, Fiscal, Functional, Product-oriented, Regional and geographical, Customer-group, Distribution-channels, Purchasing-channels etc. depending on the process scope. It is best to store all organizational structure deliverables in the process hierarchy in SAP Solution Manager.
- 221: The purpose of General Settings and Master Data is a detailed description of design and maintenance processes for general settings and master data. This includes definition of business rules and ownership. General Settings and Master Data Design also addresses cross-application general settings and master data for e.g. countries, languages, currencies, organizational units, units of measure, number ranges, product hierarchies, material types and shipment rules.
- 222: The purpose of the user role concept is to describe all relevant end-user roles and corresponding responsibilities from a business point of view. This includes User role concept overview, User role documents - one per role, Consistent user role name and assignment to defined business organization model, Corresponding SAP default roles, mapping rules etc.
- 223: The purpose of this task is to define a logical data model for master or transactional data relevant to the implementation scope across the application landscape, including both legacy and SAP components. This will help manage the data relationships and align interfaces correctly.
- 224: The purpose of the Detailed Design - Business Scenarios deliverable is the continuation of process decomposition started in project preparation. This includes documentation of requirements, solution design for the scenarios and processes. This information is populated in the business process hierarchy in SAP Solution Manager.
- 225: The purpose of this task is for the project team to decompose the initial product backlog EPICS into more granular backlog items that the SCRUM teams can design, develop and deliver in the sprint. The Product Backlog consists of the following elements: . Vision and Business Case: Why do we want to do this? What is the value? What are current pain points? . Detailed Business Process scope: What are the business scenarios and processes (down to level 3) to be implemented? . Who will work with the processes and what are their primary business requirements? This will be used as input for the definition of the user stories. . Priority of each backlog item. Like the previous 2 tasks, this step is interactive, i.e. the SCRUM team needs to define criteria of which backlog item has the priority to be worked on in each iteration / sprint. . Estimated size and effort (the effort is estimated by the SCRUM team not the PO team) . Business Value: What are the alternative solutions? Pros and cons of each. Especially, if there is any standard solution delivered by SAP S/4 HANA? Why you need to have a custom solution other than standard SAP one? . How to test the backlog item upon completion (e.g. definition of done for the feature)
- 226: The purpose of this deliverable is to design, in detail, the to-be business process down to activity level (PL 3 - 5) and to describe gaps where the standard solution does not cover all required functionalities.
- 227: The purpose of this task is to continue collecting input and finalize the Business Process Design Document, in a format suitable for both communication purpose as well as for formal sign-off purpose. The document provides details of the to-be business process down to activity level (PL 3 - 5) and describes the gaps where the standard solution does not cover all required functionalities.
- 228: The purpose of this task is to capture all identified delta requirements from the demo / visualization sessions in the product backlog. The requirements are captured in form of user stories that define the requirement from end-user perspective, provide details on how to test the feature when it is completed, priority of the backlog item and business value. It is responsibility of Product Owner team to maintain the product backlog and detail the user stories so they are understood by the SCRUM team.
- 229: &lt;span>The purpose of this task is to consolidate all identified delta requirements from the demo / visualization sessions in the product backlog. These requirements were captured in form of user stories that define the requirement from end-user perspective, provide details on how to test the feature.&lt;/span>&lt;br/>
- 230: The purpose of Value Realization is to establish the sustainable mechanisms to monitor and controls the predefined KPI's and PPI's of the to-be process and/or process changes.
- 231: The purpose of this task is to design the Value Dashboard by specifying the KPI's and PPI's and how these are monitored and controlled during project execution and post Go-Live.
- 232: The purpose of this deliverable is to specify and detail how to realize the solution, both Core Configuration and identified gaps and core enhancements needed to complement standard functionality, in order to fulfill business requirements. These RICEFW objects are based on process requirements, and they are specified in business process and solution design documents.
- 233: The project team needs to finalize the Functional Design Document, in a format suitable for both communication purpose as well as for formal sign-off purpose. The documents build on top of the Business Process Documents and provides detailed solution that address specific business requirements. Later on, the development will translate such documents into Technical Specifications. Both the Functional Design and the Technical Specification documents should be paired together and stored in SAP Solution Manager process levels 3 - 5. It is an iterative process that requires close synchronization between the design and implementation activities. The following description explains the steps necessary to design the UI. With "design" we mean "look and feel and lay-out where necessary, and technical design for all the UIs that are modified and/or developed. The following diagram illustrates two types of UI-changes. (insert UI Change Activities.jpg here) Type 1: Changes that do not include major modifications on the lay-out of the screen . No designer is needed and any changes focus on existing SAP Fiori apps . Use Fiori Design Technical Spec template to capture technical implementation information Type 2: Changes that do include major modifications on the lay-out of the screen . A consultant with design skills is needed . The focus is on existing Fiori apps, new UI apps ("Fiori style") and Screen Personas UI . Use appropriate Technical Specification template (Fiori Design Technical Spec or Screen Personas Design Technical Spec) to capture implementation information. . Follow Fiori Design Guidelines, SAP UI5 Complete Info and Reference In either cases, the development team needs to: . Use SAP Splash tool to capture UI design activities . Update effort estimate when necessary . Review the proposed UI solution and adjust if necessary (iteration) . Once the specified UI solution is signed-off it is handed-over for the UI implementation Extensibility in SAP S/4 HAA suite can be categorized into 2 main parts: side-by-side extensibility through SAP HANA Cloud Platform and in-app extensibility through built-in capabilities. Side-by-side extensibility allows customers to do the following: . Build completely new UI based on SAP Fiori or integrate with other cloud applications from SAP . Build completely new applications and business logic that run on SAP HANA or loosely coupled to SAP HANA ABAP program In-app extensibility allows customers to do the following: . Key user in-app extensibility: .. change and adapt UI layout, context .. create custom tables / fields ..create / extend analytical reports and forms ..add business logic Managed.extensible: ..Transform parts of the custom ABAP coding into the cloud in SAP hosted development landscape with restricted scope . Classic extensibility: ..Extend / modify SAP S/4 HANA software on-premise edition with full access
- 234: The purpose of this deliverable is to obtain final sign-off for the baseline build (and visualizations) and product backlog prior to proceeding to the Realization phase.
- 235: The purpose of this task is to demo the baseline build functionality and visualizations to the key users and product owner team along with the product backlog to obtain acceptance of the baseline build and product backlog. The results of the demo is either acceptance of standard feature or in exceptional cases new delta requirement that is captured in the form of user story in the product backlog. This demo is conducted at the end of the Baseline Build to serve as an input to formal sign-off for the baseline build.
- 236: The purpose of this task is for the key users and product owner team to conduct acceptance test of the features built in the baseline build. This may also include walk-throughs of the visualizations for features that have not been fully built in the system.
- 237: The purpose of this task is to complete documentation of the baseline build and capture it in SAP Solution Manager. In particular this pertains to configuration documents, test cases, test scripts, visualizations, etc. as defined in the project documentation standards defined in previous phase.
- 238: The purpose of this task is to formally signoff the baseline build, visualizations and product backlog. This signals to the project team that they can proceed to the next phase to iteratively build the features defined in product backlog.
- 239: The purpose of the legacy data migration deliverables is to develop the designs, plans, and procedures to support the migration of legacy data during the implementation of the SAP applications.
- 240: The purpose of this task is to ensure that defined processes and procedures needed to ensure correct quality and handling of master data are operational in the organization.
- 241: This task ensures that provided master data for Assemble to order and/or Industrialized content, can be utilized by the project.
- 242: The purpose of this task is to conduct a detailed analysis of legacy data in order to determine:. The availability and quality of existing data to support the SAP applications to be implemented. The complexities and risks associated with the data and migration process
- 243: The purpose of this task is to design the specific architecture, programs, processes, and tasks required to support the extraction, validation, harmonization, enrichment, and cleansing of the legacy data.
- 244: The purpose of Manual Data Migration design is to develop the approach for manually bringing legacy data into the SAP database when automated programs are not available or the data volume does not justify the investment in developing such programs.
- 245: The purpose of the data quality plan is to define the metrics that track and monitor data quality during the data migration process.
- 246: The purpose of data Security Design is to identify and develop the necessary architectural designs and plans to support the security requirements.

| ID | WBS | Task | Duration | Start | Finish | Predecessors | Total slack | Free slack | Resources | Work | Workstream | FLAVORS | Assembly Category |
| --- | --- | --- | --- | --- | --- | --- | --- | --- | --- | --- | --- | --- | --- |
| 247 | 3.36 | **Technical Solution Design** | 8d | 2019-04-11 | 2019-04-22 |  | 96d | 0d |  | 40h | Technical Architecture & Infrastructure | Waterfall ,Agile |  |
| 248 | 3.36.1 | Prepare technical infrastructure specification | 3d | 2019-04-11 | 2019-04-15 |  | 98d | 0d | Офис управления проектом / PMO (PMO) | 24h | Technical Architecture & Infrastructure | Waterfall ,Agile | None (NONE) |
| 249 | 3.36.2 | Identify System Environment for Baseline Build and Baseline Acceptance | 2d | 2019-04-19 | 2019-04-22 | 248 | 96d |  | Технический консультант | 16h | Technical Architecture & Infrastructure | Waterfall ,Agile | None (NONE) |
| 250 | 3.37 | **User Access and Security** | 6d | 2019-04-23 | 2019-04-30 | 247 | 96d |  |  | 48h | Application: Design & Configuration | Waterfall ,Agile |  |
| 251 | 3.37.1 | Authorization Requirements and Design | 6d | 2019-04-23 | 2019-04-30 |  | 96d |  | Технический руководитель / Архитектор (Technical Lead / Basis) | 48h | Application: Design & Configuration | Waterfall ,Agile | Non-core (N) |
| 252 | 3.38 | **Development Environment (DEV)** | 14d | 2019-04-01 | 2019-04-18 |  | 95d | 0d |  | 128h | Technical Architecture & Infrastructure | Waterfall ,Agile |  |
| 253 | 3.38.1 | Execute Technical Installation of SAP Products for DEV environment | 2d | 2019-04-01 | 2019-04-02 |  | 97d | 2d | Технический консультант | 16h | Technical Architecture & Infrastructure | Waterfall ,Agile | Core Cloud Value Prototyping (CC) |
| 254 | 3.38.2 | Execute Technical Upgrade of SAP Products for DEV environment | 2d | 2019-04-03 | 2019-04-04 |  | 95d | 0d | Технический консультант | 16h | Technical Architecture & Infrastructure | Waterfall ,Agile | None (NONE) |
| 255 | 3.38.3 | Install Solution Documentation in Solution Manager | 2d | 2019-04-05 | 2019-04-08 | 253, 254 | 95d | 0d | Технический консультант | 16h | Technical Architecture & Infrastructure | Waterfall ,Agile | Non-core (N) |
| 256 | 3.38.4 | Execute Technical Installation of 3rd party products | 2d | 2019-04-09 | 2019-04-10 | 255 | 97d | 2d | Технический консультант | 16h | Technical Architecture & Infrastructure | Waterfall ,Agile | Non-core (N) |
| 257 | 3.38.5 | Set up Role assignment / Authorizations / Test Users in DEV | 2d | 2019-04-09 | 2019-04-10 | 255 | 97d | 2d | Технический руководитель / Архитектор (Technical Lead / Basis) | 16h | Technical Architecture & Infrastructure | Waterfall ,Agile | Non-core (N) |
| 258 | 3.38.6 | Perform Manual Configuration in DEV | 2d | 2019-04-11 | 2019-04-12 | 255 | 95d | 0d | Технический консультант | 16h | Technical Architecture & Infrastructure | Waterfall ,Agile | Non-core (N) |
| 259 | 3.38.7 | Validate Role assignment / Authorizations / Test Users in DEV | 2d | 2019-04-15 | 2019-04-16 | 256, 257, 258 | 95d | 0d | Технический руководитель / Архитектор (Technical Lead / Basis) | 16h | Technical Architecture & Infrastructure | Waterfall ,Agile | Non-core (N) |
| 260 | 3.38.8 | Create Master Data in DEV Environment - Master Data #1 - n | 2d | 2019-04-17 | 2019-04-18 | 259 | 95d |  | Специалист по миграции данных (Data Migration Specialist) | 16h | Technical Architecture & Infrastructure | Waterfall ,Agile | Non-core (N) |
| 261 | 3.39 | **Testing Strategy** | 9d | 2019-04-19 | 2019-05-01 | 252 | 95d |  |  | 64h | Application: Testing | Waterfall ,Agile |  |
| 262 | 3.39.1 | Prepare Test Strategy document | 4d | 2019-04-19 | 2019-04-24 |  | 95d | 0d | Руководитель тестирования / QA (Testing Lead) | 32h | Application: Testing | Waterfall ,Agile | Non-core (N) |
| 263 | 3.39.2 | Review and Validate Testing Strategy with Customer | 3d | 2019-04-25 | 2019-04-29 | 262 | 95d | 0d | Офис управления проектом / PMO (PMO) | 24h | Application: Testing | Waterfall ,Agile | Non-core (N) |
| 264 | 3.39.3 | Obtain Customer Sign-Off on Testing Strategy | 1d | 2019-05-01 | 2019-05-01 | 263 | 95d |  | Руководитель проекта (PM) | 8h | Application: Testing | Waterfall ,Agile | Non-core (N) |
| 265 | 3.40 | **Release and Sprint Plan** | 63d | 2019-04-16 | 2019-07-11 | 120 | 42d |  |  | 96h | Project Management | Agile |  |
| 266 | 3.40.1 | Update and Prioritize Backlog | 3d | 2019-04-16 | 2019-04-18 |  | 42d | 0d | Функциональный консультант | 24h | Project Management | Agile |  |
| 267 | 3.40.2 | Estimate Backlog Items Effort | 2d | 2019-07-01 | 2019-07-02 | 266 | 44d | 0d | Функциональный консультант | 16h | Project Management | Agile |  |
| 268 | 3.40.3 | Conduct Release and Sprint Planning Meeting | 4d | 2019-07-03 | 2019-07-08 | 267 | 44d | 0d | Офис управления проектом / PMO (PMO) | 32h | Project Management | Agile |  |
| 269 | 3.40.4 | Validate Release and Sprint Plan Against SoW | 2d | 2019-07-09 | 2019-07-10 | 268 | 44d | 0d | Координатор проекта / Администратор проекта (PC) | 16h | Project Management | Agile |  |
| 270 | 3.40.5 | Phase Closure and Sign-Off of Phase Deliverables | 1d | 2019-07-11 | 2019-07-11 | 269 | 44d |  | Руководитель проекта (PM) | 8h | Project Management | Agile |  |

Notes:
- 247: The purpose of the Technical Solution Design deliverable is to provide a detailed technical and integration design of the solution to be implemented, accounting for all decisions made during the.Validate Phase including business process definitions, integration with external systems, and physical server deployment.
- 248: The purpose of this task is to complete the technical infrastructure specification which provides a technical description of the entire technology landscape from a physical standpoint, showing where each of the SAP and non-SAP systems are installed, and the physical or virtual servers assigned to each system along with their specifications.
- 249: The purpose of this task is to define system environment that will be used for the baseline build. At minimum the environment needs to have two systems Development and Quality Assurance. It is recommended to also provide team with Sandbox environment where they can experiment with the functionality during the baseline build.
- 250: The purpose of this deliverable is to ensure proper set up of a Roles and Authorizations procedure and approach for the project.
- 251: The purpose of this task is to document the authorization requirements at the level of business scenario and process, to evaluate chosen authorizations concepts against SAP standards and to determine a feasible implementation approach.
- 252: The purpose of the development environment deliverable is to install a viable, correctly configured technical development environment that is available for use by the project team to begin the realize phase. The QAS system will need to be set up as managed systems and clients assigned to the Logical Compoenenst and System Roles.
- 253: The purpose of this task is to install SAP components needed for the realization of project scope.
- 254: The purpose of this task is to upgrade SAP components needed for the realization of project scope.
- 255: This task ensures that all solution documentation is made available for the project team. Preferably the repository for this should be Solution Manager.
- 256: This task deals with the installation of 3rd party products needed to realize scope of the project.
- 257: The purpose of this task is to set up users in the development environment.
- 258: The objective of this task is to perform any remaining manual configuration changes in the Development environment.
- 259: The objective of this task is to validate the assignment of user role profiles / authorizations to the test users in the development landscape.
- 260: Prepare master data required for a business process.
- 261: The purpose of this deliverable is to create project related test framework, which gets content input from the existing Test Policy, to build a central foundation around the taken approach (e.g. Test Approach and Methodology, Test Standards and Guidelines, Test Case Development, Defect Management, Reporting and Analysis, Roles and Responsibilities) on functional testing (unit-, string-, integration-, scenario-, user acceptance, regression testing etc.) and performance testing. The actual test strategy documentation for functional testing and performance testing have to be separated.
- 262: The objective of this task is to create a centralized document for functional- and performance testing, which incorporates standard and procedures which will be used for the detailed test plan preparation / documentation.
- 263: The objective of this task is to communicate the testing strategy (functional and performance) to the customer project team and validate it.
- 264: Purpose of this task is to obtain customer approval (sign-off).
- 265: The purpose of this deliverable is to refine the Initial Release Plan that was defined earlier. At this time the team also defined sprint plan for the first few iterations. SAP provides customers with a SAP Solution Manager tool set that supports customers in implementation of the project standards for the purposes of the project or operations. It is highhly recommended to use the SAP Solution Manager Focused Build service solution. Additional details can be found&nbsp;&nbsp;in the SAP Solution Manager Focused Build accelerator. The Focused Build material currently relates to SolMan 7.1 functionality and the above training materials will be updated for SolMan 7.2.&nbsp; In this update step there will be opportunity to create greater alignment with existing WBS . Project Managers may also want to consider more significant updates to the WBS to align with the project approach of the Focused Build approach. .. Procedure: .. .. Update and Prioritize Backlog .. Estimate Backlog Items Effort .. Conduct Release and Sprint Planning Meeting .. Validate Release and Sprint Plan Against SoW . .
- 266: The purpose of this task is to update the backlog with delta requirements / gaps and to prioritize the backlog items by business importance. The SAP Activate Methodology recommends to use the MSCW prioritization framework (e.g. the Must-Have, Should-Have, Could-Have, Would-Have) for an initial grouping of the backlog requirements. The business process owner is responsible for determining the relative priority of each requirement. Once the requirements are assigned to the appropriate group, the business owner needs to determine a sequence of requirements in each of those groups. This will help project team to understand the relative priority of items in each group and this will facilitate selection of the high priority items during the sprint planning in Realize phase. During prioritization the following dimensions need to be considered:&nbsp; .. Dependencies and Integration .. The project team will help business owner assess the impact of the requirement on other requirements (technical risk, dependencies, integration points); .. Scale .. The desirability of the feature to a broad base of users (business impact, acceptance); .. Importance .. The desirability of the requirement to a small number of important users or customers (influencing key stakeholders, business value). .. How to establish clear priorities: &nbsp; In agile projects the Process Owner must prioritize and force rank list of all requirements in project backlog. &nbsp; No two items can end up being &lsquo;equal&rsquo; on the list (e.g. have the same priority and ranking). &nbsp; Main reason for this is to prevent that everything is rated as a &ldquo;Must Have&rdquo;. &nbsp; The MSCW prioritization (Must-Have, Should-Have, Could-Have, Would-Have) is used for an initial grouping of requirements. &nbsp; Secondary step is to rank items within the same priority group. .
- 267: The objective of this task is to estimate effort for the backlog items. This activity is done by the project team that has the expertise to estimate the effort required to complete the backlog items (requirements) from the backlog. &nbsp; For the project team it is critical to understand when we consider the backlog item done. Definition of done must be clearly understood by everybody involved in the project. See examples below for recommended definitions. The project team needs to ensure that the estimates in the backlog include all activities required for completion of the item in the sprint and for completion of the item in the release. Project team should follow these guidelines during the estimation process: &nbsp; Estimates are done by the experts in the team who are implementing the functionality and have experience from similar projects &nbsp; More expert opinions lead to better the estimation results &nbsp; Everybody on the team participates in the estimation process &nbsp; Verbal communication is preferred over detailed written specs &nbsp; It is possible to use Planning Poker especially for estimates where experts disagree widely (see next slide) &nbsp; Clear the assumptions of estimates prior to estimating - e.g. what is the definition of done for sprint and for the release &nbsp; Avoid anchoring, it invalidates estimates &ndash; e.g. &ldquo;I would say this is easy so it should be X ideal person days&rdquo; &nbsp; Estimate in the same unit of measure for the entire project (e.g. Ideal Person Days / Story Points) &nbsp; If consensus cannot be reached defer the estimate of requirement to later time. .
- 268: The objective of this task is to prepare release and sprint plan that will guide the project team in building the requirements in the backlog into a fully functional and integrated solution that supports customer&rsquo;s business. The starting point for the release and sprint planning is the prioritized and estimated backlog (activities covered in the previous tasks). The image below shows an example of the iterative agile approach to build functionality for one release. Release represents functionality that is deployed to production system and rolled out to the end users. Each release is built in sequence of time-boxed sprints in which the project team develops the highest priority capabilities as determined by the business owners. One or multiple sprints may be needed to finalize functionality for end-to-end scenario (or Epic as it is known in agile projects) During each sprints the project team conducts following activities: Sprint Planning Meeting Sprint Execution Activities Daily Stand-up Meeting Sprint Demo Sprint Retrospective During the project the team will run two types of sprints: Build sprints &nbsp; - the goal of these sprints is to build and unit test the new capabilities Firm-up sprints &nbsp; - the goal of these sprints is to conduct testing of strings of process steps to continuously ensure integration. During this sprint the team also develops solution documentation. .
- 269: The purpose of this task is to review the release and sprint plans against the statement of work(SoW). The objective of this task is to identify any new features that have been surfaced during the baseline build that may not be part of the original scope and may require amendment of the SoW or Change Request.It is important to ensure that the project manager validates that the requirements and user stories in the backlog document are in alignment with the scope of the project as it is reflected in the SoW&nbsp;and other contractual documents. The Project Manager(PM) should also ensure the alignment of the release and sprint plan with the high level plan covered in the SoW. In case any discrepancies are discovered the PM needs to take appropriate corrective action, like raising a change request according tothe integrated change request management plan defined in the Prepare phase. .
- 270: Procedures: .. .. Conduct Project Quality Gate .. Obtain Customer Sign-Off for Phase Completion .. Document Lessons Learned .. Debrief Explore Phase with DEO . .

| ID | WBS | Task | Duration | Start | Finish | Predecessors | Total slack | Free slack | Resources | Work | Workstream | FLAVORS |
| --- | --- | --- | --- | --- | --- | --- | --- | --- | --- | --- | --- | --- |
| 271 | 4 | **Realize** | 104d | 2019-07-17 | 2019-12-09 | 119 | 39d | 0d |  | 3800h |  |  |
| 272 | 4.1 | **Phase Initiation** | 8d | 2019-07-25 | 2019-08-05 |  | 42d | 0d |  | 64h | Project Management | Waterfall ,Agile |
| 273 | 4.1.1 | Review Deliverables of Realize Phase | 3d | 2019-07-25 | 2019-07-29 |  | 42d | 0d | Управление изменениями и обучение (Change Management & Training) | 24h | Project Management | Waterfall ,Agile |
| 274 | 4.1.2 | Review Acceptance Criteria | 3d | 2019-07-30 | 2019-08-01 | 273 | 42d | 0d | Управление изменениями и обучение (Change Management & Training) | 24h | Project Management | Waterfall ,Agile |
| 275 | 4.1.3 | Review RACI Chart for Realize Phase | 2d | 2019-08-02 | 2019-08-05 | 274 | 42d |  | Офис управления проектом / PMO (PMO) | 16h | Project Management | Waterfall ,Agile |
| 276 | 4.2 | **Plan Realize Phase** | 5d | 2019-08-06 | 2019-08-12 | 272 | 42d | 0d |  | 40h | Project Management | Waterfall ,Agile |
| 277 | 4.2.1 | Plan Sprints and Solution Reviews | 3d | 2019-08-06 | 2019-08-08 |  | 42d | 0d | Офис управления проектом / PMO (PMO) | 24h | Project Management | Agile |
| 278 | 4.2.2 | Plan Testing | 2d | 2019-08-09 | 2019-08-12 | 277 | 42d |  | Координатор проекта / Администратор проекта (PC) | 16h | Project Management | Waterfall ,Agile |
| 279 | 4.3 | **Execution Plan for Realize Phase** | 52d | 2019-08-13 | 2019-10-23 | 276 | 42d |  |  | 520h | Project Management | Waterfall ,Agile |
| 280 | 4.3.1 | Manage Sprints | 20d | 2019-08-13 | 2019-09-09 |  | 42d | 5d | Управление изменениями и обучение (Change Management & Training) | 160h | Project Management | Agile |
| 281 | 4.3.2 | Manage Unit/String Tests | 20d | 2019-09-10 | 2019-10-14 | 280FF | 37d | 0d | Руководитель функционального направления (Functional Lead) | 160h | Project Management | Waterfall ,Agile |
| 282 | 4.3.3 | Manage Integration Test | 10d | 2019-10-01 | 2019-10-14 | 281FF | 37d | 0d | Специалист по интеграциям (Integration Specialist) | 80h | Project Management | Waterfall ,Agile |
| 283 | 4.3.4 | Manage Security Test | 10d | 2019-10-10 | 2019-10-23 | 282FF | 72d | 0d | Руководитель тестирования / QA (Testing Lead) | 80h | Project Management | Waterfall ,Agile |
| 284 | 4.3.5 | Manage User Acceptance Test | 5d | 2019-10-17 | 2019-10-23 | 283FF | 72d |  | Технический руководитель / Архитектор (Technical Lead / Basis) | 40h | Project Management | Waterfall ,Agile |
| 285 | 4.4 | **QAS Setup** | 43d | 2019-07-22 | 2019-09-18 |  | 88d | 0d |  | 40h | System & Data Migration | Waterfall ,Agile |
| 286 | 4.4.1 | QAS Setup (New Implementation) | 2d | 2019-07-22 | 2019-07-23 |  | 88d | 0d | Руководитель тестирования / QA (Testing Lead) | 16h | System & Data Migration | Waterfall ,Agile |
| 287 | 4.4.2 | QAS Setup (System Conversion) | 3d | 2019-09-16 | 2019-09-18 | 286 | 88d |  | Руководитель тестирования / QA (Testing Lead) | 24h | System & Data Migration | Waterfall ,Agile |
| 288 | 4.5 | **Data Migration and Verification** | 9d | 2019-09-19 | 2019-10-01 | 285 | 88d |  |  | 72h | System & Data Migration | Waterfall ,Agile |
| 289 | 4.5.1 | Legacy Data Migration (New Implementation) | 2d | 2019-09-19 | 2019-09-20 |  | 88d | 0d | Специалист по миграции данных (Data Migration Specialist) | 16h | System & Data Migration | Waterfall ,Agile |
| 290 | 4.5.2 | Perform Load and Verification Runs (System Conversion) | 1d | 2019-09-23 | 2019-09-23 | 289 | 88d | 0d | Специалист по миграции данных (Data Migration Specialist) | 8h | System & Data Migration | Waterfall ,Agile |
| 291 | 4.5.3 | Perform Client Transfer (LT Scenario- Client Transfer) | 2d | 2019-09-24 | 2019-09-25 | 290 | 92d |  | Специалист по миграции данных (Data Migration Specialist) | 16h | System & Data Migration | Waterfall ,Agile |
| 292 | 4.5.4 | Perform System Merge (LT scenario- System Merge) | 2d | 2019-09-26 | 2019-09-27 | 290 | 90d |  | Специалист по миграции данных (Data Migration Specialist) | 16h | System & Data Migration | Waterfall ,Agile |
| 293 | 4.5.5 | Perform Company Code Transfer (LT Scenario- Company Code Transfer) | 2d | 2019-09-30 | 2019-10-01 | 290 | 88d |  | Специалист по миграции данных (Data Migration Specialist) | 16h | System & Data Migration | Waterfall ,Agile |
| 294 | 4.6 | **Execution/Monitoring of Project** | 55d | 2019-07-17 | 2019-10-01 |  | 88d |  |  | 296h | Project Management | Waterfall ,Agile |
| 295 | 4.6.1 | Direct and Manage Project Execution | 5d | 2019-07-17 | 2019-07-23 |  | 88d | 0d | Технический руководитель / Архитектор (Technical Lead / Basis) | 40h | Project Management | Waterfall ,Agile |
| 296 | 4.6.2 | Update the Project Management Documents | 5d | 2019-08-06 | 2019-08-12 | 295 | 88d | 0d | Технический консультант | 40h | Project Management | Waterfall ,Agile |
| 297 | 4.6.3 | Plan and Execute Agile Sprints | 20d | 2019-08-13 | 2019-09-20 | 296 | 88d | 0d | Технический консультант | 160h | Project Management | Agile |
| 298 | 4.6.4 | Manage Project Issues, Risks, and Changes | 5d | 2019-09-23 | 2019-09-27 | 297 | 88d | 0d | Руководитель проекта (PM) | 40h | Project Management | Waterfall ,Agile |
| 299 | 4.6.5 | Communicate Project Status and Progress | 2d | 2019-09-30 | 2019-10-01 | 298 | 88d |  | Офис управления проектом / PMO (PMO) | 16h | Project Management | Waterfall ,Agile |

Notes:
- 271: The purpose of this phase is to use a series of iterations to incrementally build and test an intergrated business and system environment that is based on the business scenarios and process requirements identified in the previous phase. During this phase, data is loaded, adoption activites occur, and operations are planned. .. &nbsp; .. .. &nbsp; .. Realize Activities: .. &nbsp; .. &nbsp; .. .. .. Establish the solution landscape .. .. Implement the solution in the development environment using incremental build in time-boxed iterations .. Conduct overall end-to-end testing of the solution within the QA environment .. Setup production environment .. Prepare for data migration and data archiving .. Conduct performance testing .. Conduct project team and key user training .. Finalize end user training materials and documentation .. Track and report on value delivery . .. &nbsp; .. During Realize phase, the project team uses a series of iterations to incrementally configure, test, confirm, and document the entire end-to-end solution and to create legacy data conversion programs. The project team actively works with business representatives to ensure good fit of the built solution to the requirements from the backlog. Project Team releases results of multiple iterations to the business users to accelerate time to value and provide early access to finalized functionality. Each release is thoroughly tested in end-to-end integration test and user acceptance test. .. &nbsp; .. The project team documents the configuration decisions and solution in the SAP Solution Manager tool. They also document all development &ndash;including interfaces, integration points, data conversion programs, reports, and any required enhancements &ndash; in SAP Solution Manager. Once these activities are complete for particular release and the team has obtained business approval, they make the release available in the production environment. .. &nbsp;
- 272: The purpose of this deliverable is to formally recognize that a new project phase starts. .
- 273: The purpose of this task is to review all Deliverables of the Realize Phase with the customer. .
- 274: The purpose of this task is to review the acceptance criteria with the customer. .
- 275: The purpose of this task is to review the R.A.C.I Chart for the Explore Phase with the Customer. It is important to clarify roles and responsibilities in completing&nbsp;tasks and deliverables during this phase .
- 276: The purpose of this activity is to define plans for Sprints, Solution Reviews and prepare all business-process-related tests according to customer- specific configurations. ..
- 277: The purpose of this task is to plan Sprints and prepare to evaluate the proposed solution. .
- 278: The purpose of this task is to plan the test sessions from a Project Management point of view. .. Procedure .. .. Review Test entry and exit criteria with customer .. Schedule Test Sessions and Plan Resources . .
- 279: The purpose of this deliverable is to execute the work defined in the Realize Phase and manage the Sprints and Testing according to previously defined plans. During test execution all issues must be logged and documented in the system for traceability purpose. ..
- 280: The purpose of this task is to ensure consistent execution and monitoring of sprint activities. .
- 281: The purpose of this task is to properly manage the Unit/Spring Test. During the test all issues must be logged and documented in the system for traceability purpose. .
- 282: The purpose of this task is to properly manage the integration test. During the test all issues must be logged and documented in the system for traceability purpose. .
- 283: The purpose of this task is to properly manage the security test. During the test all issues must be logged and documented in the system for traceability purpose. .
- 284: The purpose of this task is to properly manage the User Acceptance test (UAT). During the test all issues must be logged and documented in the system for traceability purpose. .
- 285: This activity sets up a quality assurance environment (QAS). It depends on the scenario how this is done. .. Please note: This road map documents the setup of a DEV and a QAS system. Of course, the design of the production support landscape depends on customer requirements for change management. Maybe additional supporting systems need to be set up (e.g. pre-production or training). In those cases the project plan template needs to be adjusted accordingly. .. Requirements and Constraints .. This activity is required for all scenarios. .. There is a technical design document stored in SAP Solution Manager which includes the technical deployment plan, and the software components which need to be installed / updated. .. The DEV environment has been set up successfully. .. Procedure .. .. QAS Setup (New Implementation) . .. or .. .. QAS Setup (System Conversion) . .. Please note: Before converting an SAP system, or installing a fresh one, you will need to download SAP software from SAP Service Marketplace. The planning of such a change event is done in the Maintenance Planner. After entering the required data, the Maintenance Planner fills your download basket, and creates a control file (&ldquo;stack-xml&rdquo;), which is later on required for the conversion and installation tools. The Maintenance Planner has been described in the activity Transition Planning of the Explore phase - Please make yourself familiar with the tool, enter the required information, and download the corresponding software including stack-xml. See accelerator section for details. .. How SAP Can Support .. SAP offers the provisioning of the QAS environment for both scenarios as part of the &ldquo;Platform Execution&rdquo; &nbsp;service. This is a dedicated scope option.mThe setup of the technical Fiori components is covered by scope option&nbsp; SAP Fiori Platform Setup . See accelerator section for more information. However, the configuration of the Fiori UIs is not included in this scope option&nbsp;but is part of the functional setup.
- 286: The goal of this task is to provide a viable, correctly configured technical quality assurance environment that is available for use by the project team to test configuration and development in a &ldquo;production like&rdquo; environment. .. Procedure .. Proceed as follows: .. .. Execute the technical installation of the required SAP Products for QAS environment as documented in the technical design document. .. Run the technical system setup as documented in the administration guide. .. Transport development and configuration changes from DEV to QAS. Consider also the manual rework activities as described in the administration guide. .. Check to what degree the Fiori apps require additional configuration in QAS. . .. Results .. Finally, the QAS environment is ready for testing. .. How SAP Can Support .. SAP offers the installation of a QAS as part of the&nbsp; Platform Execution &nbsp;service. The setup of the Fiori platform can be supported as well (scope option&nbsp;&ldquo; SAP Fiori Platform Setup &rdquo;). However, the configuration of the Fiori UIs is not included in this scope option&nbsp;but is part of the functional setup.
- 287: The goal of this task is to provide a viable, correctly configured quality assurance environment that is available for use by the project team to test configuration and development in a &ldquo;production like&rdquo; environment. QAS is not installed newly &ndash; instead, the old QAS system is converted to the new system. .. Prerequisites .. Prerequisite is that the migration approach that has been validated in a sandbox environment (see activity SANDBOX System Setup in the Explore phase ) , a detailed migration plan is in place, and the required hardware for hosting the&nbsp;new DEV system is already available and set up. .. Furthermore the cleanup of the productive system is already underway or has been finished (see activity Cleanup / Archive in the Realize phase for details). .. Procedure .. Convert the QAS system according to the migration plan. Depending on the transport landscape configuration, there may be a need to perform multiple iterations of the conversion in order to solidify and finalize the cutover plan. Executing test migrations will validate the end-state of the conversion, as well as provide the figures for expected system downtime (see activity Downtime Optimization Preparation for details). Depending on the approach and the transport landscape configuration, there may be a requirement to execute additional sandbox conversions in order to optimize the cutover procedure. .. Transport development and configuration changes from the new DEV to QAS. .. Check to what degree the Fiori apps require additional configuration in QAS. .. Results .. Finally, the QAS environment has been converted to&nbsp;the new system&nbsp;It is ready for further configuration. .. How SAP Can Support .. SAP offers the QAS conversion as part of the &ldquo; Platform Execution&rdquo; service. The setup of the Fiori platform can be supported as well (scope option&nbsp;&ldquo; SAP Fiori Platform Setup &rdquo;). However, the configuration of the Fiori UIs is not included in this scope option&nbsp;but is part of the functional setup.
- 288: For large systems, the conversion using standard tools may exceed the available downtime window. In this case the SAP Downtime Minimization Service supports performing the conversion within the given constraints. This method uses a clone of the production system for performing the conversion activities outside of the production and in parallel records the changes on the production system. These changes are replicated to the target system after the completion of the conversion on the clone system. An appropriate preparation of this method for the production cut-over requires the corresponding verification of the end-to-end procedure in so called Load &amp; Verification runs. These activities are planned along the project and using data from the production system, they are mocking the cut-over steps. During these runs the validation of the procedure is done and the final timings for the production cut-over are determined. .. For new implementations this activity is to develop, implement, and test the data migration programs and processes defined in the Explore phase. This activity consists of iterative development and testing cycles focused on the analysis of data, refinement of business rules, and deployment of migration programs and processes designed to move, cleanse, transform, and enrich legacy data required to support the various test cycles and ultimately the production cutover. The test cycles enable the migration team to improve data quality to an acceptable production level, develop a detailed cutover sequencing plan, and exercise data reconciliation and validation processes required to support the production cutover. .. In case of landscape transformation, the tasks within this activity largely depends on the scenario. In case of client transfer, system merge, and company code transfer harmonization and adjustment tasks (e.g. for customizing and repository objects) need to be performed before data can be successfully transferred. Test runs ensure that the target state is consistent. .. Requirements and Constraints .. This activity is required for all scenarios. .. Procedure .. .. Legacy Data Migration (New Implementation) . .. or .. .. Perform Load &amp; Verification Runs (System Conversion) . .. or .. .. Perform Client Transfer (LT Scenario &ndash; Client Transfer) .. Perform System Merge (LT Scenario &ndash; System Merge) .. Perform Company Code Transfer (LT Scenario &ndash; Company Code Transfer) .
- 289: The purpose of this task is to develop, implement, and test the data migration programs and processes defined in the Explore phase. This task consists of iterative development and testing cycles focused on the analysis of data, refinement of business rules, and deployment of migration programs and processes designed to move, cleanse, transform, and enrich legacy data required to support the various test cycles and ultimately the production cutover. The test cycles enable the migration team to improve data quality to an acceptable production level, develop a detailed cutover sequencing plan, and exercise data reconciliation and validation processes required to support the production cutover. .. Procedure .. Proceed as follows: .. .. Provide Templates and Instruction for Data Loads .. Obtain Data Migration Test Results (see accelerator section): . .. The purpose is to obtain the results of the various test cycles so the team can monitor the accuracy and efficiency of the data migration solution. The data migration test results are statistics that provide a detailed account of data load issues and successfully loaded data. The metrics should be available at summary and detailed levels. The test results are a subcomponent of the overall test reporting process. By completing this task, the project team gains visibility into the progress for each of the data migration iterations and gains the information to determine the level of readiness of the data. The test results can be stored in SAP Solution Manager to track the issues history and progress. .. .. Conduct Final Data Quality Assessment: . .. The purpose is to provide one final assessment at the end of the Realize phase to report on the quality of the loaded data. .. Once all tests and queries have been conducted, the data migration team compiles the results and requests a preliminary review by the data owners and subject matter experts (SMEs).&nbsp; .. Once the data owners and SMEs have provided feedback, the team prepares the final findings as a written report or verbal presentations to be delivered to key stakeholders. .. Depending on the requirements, the final data quality report includes topics such as: .. .. Updated data mappings and business rules .. Summary of data quality metrics for all the business objects .. Data profiling results of selected data .. Any outstanding data quality issues that need to be resolved At the end of this task, the data migration team can move into the next phase with the confidence that the vast majority of data quality issues and migration issues have been resolved and mitigated. .
- 290: The Load &amp; Verification Run is a task, which belongs to the best practice of the SAP Downtime Minimization Service. .. Prerequisites .. This task is always planned in projects using the clone based Near-Zero Downtime method. .. Procedure .. In general, two Load &amp; Verification Runs are performed. .. .. Run 1: ... During this run, the correctness of the conversion procedure is verified based on the data from the production system. Therefore, it is a very realistic simulation of the actual cut-over. It includes: ... ... efficient creation of the production clone ... correct conversion of the system to&nbsp;the new system&nbsp;on the clone ... appropriate recording of changes on the production system ... correct and efficient synchronization of the recorded data ... detailed verification of the final conversion result .. ... This run offers an opportunity to create the detailed and realistic step description (runbook) including actual system names and timings for the execution of the procedure in the production cut-over. .. .. Run 2: .. This run is the second iteration of the Load &amp; Verification Run. It belongs to the best practice of the SAP Downtime Minimization Service. This task is always planned in projects using the clone based Near-Zero Downtime method. This is the final end-to-end verification of the cut-over procedure including the technical and human aspects. In this run all parties planned for the production cut-over are involved. The dress rehearsal is executed based on the runbook finalized in the Load &amp; Verification Run 1. Beside of the confirmation of items verified in the first run it provides information about: ... ... detailed timing of the individual steps ... finalization of the required hand-over procedures .. ... The findings of this run provide information for the fine tuning of the runbook. ... Based on the both Load &amp; Verification Runs the risks in the production cut-over can be considerably reduced. .. . .. Results .. As the result the production cut-over is executed according to the well described and practiced procedure.
- 291: The &ldquo; Client Transfer &rdquo; service component as part of the Data Migration Execution service helps customers to move clients from one SAP instance to a new&nbsp;system. The SAP Landscape Transformation client transfer functionality used in this service component moves one or more complete clients (including customizing, master,and transactional data) from one or more sender systems to a single new receiver system. It allows customers to combine consolidation, upgrade, Unicode conversion and database change to HANA in one step. In addition, it ensures process continuity and can consolidate data from more than one sender system in the new system. / However, because a client transfer affects many areas in your system landscape, it can be realized only if the repository and client-independent customizing and settings are compatible at system level. / The client transfer analysis which is part of the Landscape Transformation Assessment service component (see Explore phase) reveals any data conflicts and determines all data that requires harmonization at system level. The activity is only relevant in case for landscape transformation scenarios, where clients need to be transferred across systems. / Procedure / Proceed as follows: / 1.&nbsp;&nbsp;&nbsp;&nbsp; Perform Cross-Client Customizing Harmonization / In this task, customers harmonize the cross-client customizing for the following areas:&nbsp; / Basis, cross application and additional topics / Logistics&nbsp; / Accounting / 2.&nbsp;&nbsp;&nbsp;&nbsp; Perform Repository Harmonization / The goal of this task is the harmonization of the sender system and the new receiver system repositories: / Use the repository comparison results from the Data Migration Design service to define the repository harmonization activities. Note that additional harmonization activities are necessary if a Unicode conversion is required. Business process requirements of the sender and receiver systems, as well as any redesigned business processes can be relevant for harmonization. / Determine the required harmonization strategy for the relevant objects, and also define the technical procedure for the harmonization strategy (the steps involved). / For complex conflicts without a standard harmonization strategy, also create specifications. Create design documents for the specifications, if required. / Plan the necessary activities for implementing the harmonization. Take into account the required resources (for example developers and systems), the migration schedule and the synchronization strategy with ongoing development and maintenance activities.&nbsp; / 3.&nbsp;&nbsp;&nbsp;&nbsp; Perform Test Cycles / Before the conflict-free client migration can become live in the productive new environment, customers must test the following several times in the new landscape: / The data migration process,&nbsp;&nbsp; / Harmonized and adapted customizing settings, and&nbsp; / The adjustment of repository and the business processes. / This usually involves three test cycles. A test cycle involves the following activities: / Refreshing temporary test migration landscape / Build new temporary test the new receiver system and the test sender system using an up-to-date copy of the productive systems. / Executing the client migration with SAP LT Client Transfer The data migration copies all client-specific data from test sender system client to the assigned client of the test receiver system. / Executing the upgrade procedure / If migration involves an upgrade SAP LT Client Transfer has to adapt the migrated data records to the release ofthe new environment. The SAP LT Client Transfer Upgrade adds SAP template customizing &ndash; as shipped with upgrade transports &ndash; to the migrated client. In addition, the necessary logical adaptation of the data is executed by the means of XPRA programs. / Validating Blueprint / Application- and Integration testing / Check data that are renamed or changed on base of harmonization rules; Execute testing of business processes,process flows, interfaces etc. / Analyzing problem messages and correction of errors / Solve the problems and errors that arise during the testing.&nbsp;&nbsp;&nbsp;&nbsp;&nbsp; / &nbsp; / 1st Test cycle: / Create an exclusive test environment that contains copies of the sender and receiver systems / Refresh sender and receiver system / Executing client migration / Executing upgrade procedure / In case of integrated upgrade: create Delta Customizing and store in transport request / Validation of Blueprint / Application testing / Analyze problem messages and correct errors / Release transport request with delta customizing / 2nd Test cycle / Refresh the sender and receiver test environment with a recent copy of the sender and receiver systems (this ensures that you have up-to-date data for testing). / Create a copy of the SAP LT Client Transfer Package from the first test cycle to ensure that all settings from the first test cycle are taken over into the new package.&nbsp;Examples of these settings are table and field mappings, entries excluded from tables, domains, rules, and mapping values. / Executing client migration / Executing upgrade procedure / In case of integrated upgrade: Import Delta Customizing transport request / Validation of Blueprint / Application and Integration testing, User Acceptance Test / Analyze problem messages and correct errors / Acceptance by application departments / 3rd Test cycle (Dress Rehearsal) / Frozen Zone&nbsp; / Refresh the sender and receiver test environment with a recent copy of the sender and receiver systems (this ensures that you have up-to-date data for testing). / Create a copy of the SAP LT Client Transfer Package from the first test cycle to ensure that all settings from the first test cycle are taken over into the new package. Examples of these settings are table and field mappings, entries excluded from tables, domains, rules, and mapping values. / Executing client migration / Executing upgrade procedure / In case of integrated upgrade: Import Delta Customizing transport request / Application and Integration testing, User Acceptance Test, test cut-over plan / Analyze problem messages and correct errors / Sign off acceptance by application departments / &nbsp; / How SAP Can Support / The &ldquo; Client Transfer &rdquo; scope option&nbsp;(part of the &ldquo;Data Migration Execution&rdquo; Service )helps customers to perform this task. See accelerator section for details.
- 292: The SAP Landscape Transformation system merge methodology used in this service merges business data of two or more clients from one or more sender systems to a single, empty new receiver system. It allows you to combine consolidation, data model conversion, Unicode conversion, and database changes to HANA in one step. In addition, it ensures process continuity and can consolidate data from more than one sender system in the new system. / However, because a system merge affects many areas in your system landscape, it can be realized only if the repository, client-independent and client dependent customizing and settings are compatible at system level and at client level. / The system merge analysis carried out during the data migration Design reveals any data conflicts and determines all data that requires harmonization at system and at client level. / Prerequisites / This chapter describes only the tasks relevant for the execution of the tasks specific for the LT scenario. Other tasks relevant for moving to&nbsp;the new system&nbsp;are still relevant, such as topics to be addressed as outcome of the SAP Readiness Check. / Procedure / Proceed as follows: / Create future development and production systems / The future development system for the&nbsp;new landscape can be created in two ways: / Installation from scratch / LT shell creation as a copy of repository and Customizing out of one of the existing systems / The missing Customizing and repository from the additional source systems and also the future Customizing resulting out of the harmonization blueprint, need to be implemented manually in the target development system. / The target test systems and future production can either be created out of the development box. Alternatively it can be created in the same way as described above and then supplied with the customizing and repository delta by transports. / Perform cross-client customizing harmonization / The objective is to harmonize the cross-client customizing for the following areas: / Basis, cross application, and additional topics / Logistics / Accounting / Use the Customizing comparison results from the Data Migration Design service to define the repository harmonization activities. Note that additional harmonization activities are necessary if a Unicode conversion is required. Business process requirements of the sender and&nbsp;the new&nbsp;receiver systems as well as any redesigned business processes can be relevant for harmonization. / The comparison is executed between the affected source systems. The solution of the conflicts identified between the sources have to be projected to the future target system and maintained there. / For more information, see the &lsquo;Client Transfer&rsquo; Product road map of SAP Landscape Transformation software, for example in the accelerator &lsquo;General Rules for Cross-Client Customizing Conflicts&rsquo; in activity 1.4.1 &lsquo;Cross-Client Customizing Analysis&rsquo;. / Perform repository harmonization / The objective is to harmonize the sender systems and the new receiver system repositories. / Use the repository comparison results from the Data Migration Design service to define the repository harmonization activities. Note that additional harmonization activities are necessary if a Unicode conversion is required. Business process requirements of the sender and the new receiver systems as well as any redesigned business processes can be relevant for harmonization. / The comparison is executed between the affected source systems. The solution of the conflicts identified between the sources have to be projected to the future target system and maintained there. / Determine the required harmonization strategy for the relevant objects, and also define the technical procedure for the harmonization strategy (the steps involved). / For complex conflicts without a standard harmonization strategy, also create specifications. Create design documents for the specifications, if required. / Plan the necessary activities for implementing the harmonization. Take into account the required resources (for example developers and systems), the migration schedule, and the synchronization strategy with ongoing development and maintenance activities. / For more information, see the &lsquo;Client Transfer&rsquo; Product road map of SAP Landscape Transformation software, for example in the accelerator &rsquo;Guide for Repository Harmonization&rsquo; which can serve as a basis for creating specifications that detail the implementation of the harmonization strategies. / Also consider the aspects from the activity Custom Code Cleanup &amp; Improve. / Document the Customizing harmonization concept in the accelerator &lsquo;Template for System Merge Number Range Concept&rsquo; (accelerator section). / Perform client-dependent customizing harmonization / The objective is to harmonize the client-dependent Customizing for all affected areas. / Use the Customizing comparison results from the Data Migration Design service to define the Customizing harmonization activities. Business process requirements of the sender and&nbsp;the new&nbsp;receiver systems as well as any redesigned business processes can be relevant for harmonization. / The comparison is executed between the affected source systems. The solution of the conflicts identified between the sources have to be projected to the future target system and maintained there. / Determine the required harmonization strategy for the relevant objects, and also define the technical procedure for the harmonization strategy (the steps involved). / For complex conflicts without a standard harmonization strategy, also create specifications. Create design documents for the specifications, if required. / General rules for customizing conflicts can be found in the above-mentioned accelerator &lsquo;General Rules for Cross-Client Customizing Conflicts&rsquo; in the &lsquo;Client Transfer&rsquo; Product road map of SAP Landscape Transformation software. / In particular for conflicts, the following mapping scenarios apply: / Plan the necessary activities for implementing the harmonization. Take into account the required resources (for example, developers and systems), the migration schedule, and the synchronization strategy with ongoing development and maintenance activities. / To facilitate a uniform documentation and maintenance of mappings, the mappings are maintained centrally in an SAP system. For this purpose there is a tool to document these mappings. The tool is installed on both the development of the target system and the LT central system. The mapping values will be entered by the harmonization team in the development system. The mapping tool logs changes and can store versions. At an agreed deadline for the test cycles and the go-live, a version of the current mappings will be copied into the LT central system and used for the data transformation of the respective cycle. / Document the Customizing harmonization concept in the accelerator &lsquo;Template for System Merge Number Range Concept&rsquo; and maintain the mappings in the mapping tool. / Define a number range concept / Use the Number Range Analysis results from the Data Migration Design service to define the number range concept. / Number range conflicts can become very complex and need special attention. In general, all number ranges can be converted within the system merge. / There are several options to define renumbering solutions to number range conflicts in the number range concept. The solution can always be assigned to a whole number range. / Renumbering with offset (into the same number range) / Renumbering into new number range (optional with offset) / Prefix or pattern logic / Mappings / General Principles &ndash; Renumbering with Offset (into the Same Number Range) / &nbsp; / The picture above shows the general principles of renumbering with offset (into the Same Number Range). / General Principles &ndash; Renumbering into New Number Range Without Offset / The picture above shows the general principles of renumbering without offset. / General Principles &ndash; Prefix or Pattern Logic / If alphanumeric values are allowed for a number range, it is possible define prefix or pattern logic to the number range. The pattern can be used to set almost any character. / &lsquo;&ndash;&rsquo; is the placeholder for not replacing / Any character unequal &lsquo;&ndash;&rsquo; will be used for replacement / Length of pattern must match interval / Target interval must be flagged as &ldquo;External&rdquo; / Example: / In this example, a number belonging to number range 01 will be matched with the pattern and an &ldquo;A&rdquo; will be put into the second position. / Attention: Make sure that the pattern is placed in the right position to guarantee conflict-free replacement. Bad example: / This pattern assignment will result in duplicates since for example the input numbers 10000023, 11000023, 12000023 will all be converted to the same output number 1A000023. / The pattern is a convenient solution especially in case of high volume number ranges such as sales (RV_BELEG), purchase (EINKBELEG), or material documents (MATBELEG). It is Best Practice to use the same character as placeholder representing a system, for example, use character A for system 1, character B for system 2, and so on. / Note: A pure numeric document in the source will be converted to an alphanumeric document in the target system. This can have a side effect to interfaces because leading zeros will disappear. / General Principles &ndash; Mappings / The typical solution to a number range conflict is a renumbering. In some cases, a systematic renumbering approach does not meet the requirements or cannot be applied and a mapping meets the requirement. For this purpose, you can maintain mappings in the mapping tool, see the section &ldquo; Client-Dependent Customizing Harmonization &rdquo; for details on the mapping tool. These mappings will be used by the renumbering tool. / Prioritization: The tool will first check if a mapping exists. If yes, this mapping will be used to convert the input number, otherwise the tool will apply the logic maintained for the number range. That means, you can for example specify few mappings for certain instances of a number range and still keep the systematic renumbering for the huge remaining instances. Typical use cases are handling of exceptional data inconsistencies, harmonization of instances, or to cover a conversion of alphanumeric number ranges. / Number Range Concept / Number ranges with technical purpose are not visible to the end user and usually not interesting from a customer point of view (for example, KONH=condition masters, ADRNR=address numbers). These can be covered by a migration consultant. The principle &ldquo; Renumbering with offset into same number range &rdquo; will be used. / Relevant for the number range concept are the number ranges of master and transactional data of business data. / Typical number range topics: / Customer (DEBITOR) / Customers should be renumbered with an offset to easily keep reference / For alphanumeric conversion (for example, A-1015 to become B-1015), it is necessary to provide a mapping in the mapping tool / A merge of customers is possible (extension of basic scope) / Vendor (KREDITOR) / Like customers / Materials (MATERIALNR) / A merge of materials is possible (extension of basic scope) / Material documents (MATBELEG) / Need to find free space in target especially in case of high volumes / Sales documents (RV_BELEG) / Like material documents / Document the number range concept in the accelerator &lsquo;Template for System Merge Number Range Concept&rsquo;: / Start implementation / After the completion of the concepts and harmonization activities, the implementation of the migration solution can start. / The landscape has to be ready first in order to be able to start the implementation. The requirements affecting the data transfer of business data are implemented in the central or control system for the SAP Landscape Transformation software. / Perform test cycles / Before the conflict-free client migration can become live in the productive&nbsp;new environment, you must test the merge during the execution phase. / The execution phase is subdivided into test cycles. / A test cycle comprises / New/refreshed landscape / Data migration process to the new target, / Harmonized and adapted Customizing settings in the new target, and / Adjustment of repository and the business processes in the new target. / This usually involves three test cycles. / A test cycle involves the following activities: / Refresh temporary test migration landscape / Build new temporary test the new receiver system and test sender systems using an up-to-date copy of the productive systems / Prepare target system with transports from repository and Customizing harmonization from future development system / Execute business data migration with SAP Landscape Transformation system merge / The LT data migration functionality copies all client-specific business data from test sender system client(s) to the assigned client of the test receiver system. / If necessary, include Customizing manually, for example in scenario &lsquo;Installation from scratch&rsquo; / Data model conversion: If migration involves a data model conversion from ECC to S/4HANA, SAP LT client software has to adapt the migrated data records to the release of the new environment. This can either be done in the LT software directly or necessary logical adaptation of the data is executed by a post-processing. / Validation of Blueprint / Application and Integration testing / Check data that are renamed or changed on base of harmonization rules / Execute testing of business processes, process flows, interfaces, and so on / Analyze problem messages and correct errors / Solve the problems and errors that arise during testing. / First Test cycle: / Create an exclusive test environment that contains copies of the sender and receiver systems / Refresh sender and receiver system / Execute repository and Customizing adjustment/transports from DEV / Execute data migration (LT Execution Support) / Execute post-processing (LT Execution Support) / Validate Blueprint / Application testing / Analyze problem messages and correct errors / Release transport request with delta Customizing / Second test cycle: / Refresh the sender and receiver test environment with a recent copy of the sender and receiver systems (this ensures that you have up-to-date data for testing). / Create a copy of the SAP LT system merge package from the first test cycle to ensure that all settings from the first test cycle are taken over into the new package. Examples of these settings are table and field mappings, entries excluded from tables, domains, rules, and mapping values. (LT Execution Support) / Execute repository and Customizing adjustment/transports from DEV / Execute data migration (LT Execution Support) / Execute post-processing (LT Execution Support) / Validate Blueprint / Application and Integration testing, user acceptance test / Analyze problem messages and correct errors / Get acceptance from application departments / Third test cycle (conducted in Dress Rehearsal mode) / Frozen zone / Refresh the sender and receiver test environment with a recent copy of the sender and receiver systems (this ensures that you have up-to-date data for testing). / Create a copy of the SAP LT system merge package from the first test cycle to ensure that all settings from the first test cycle are taken over into the new package. Examples of these settings are table and field mappings, entries excluded from tables, domains, rules, and mapping values. (LT Execution Support) / Execute repository and Customizing adjustment/transports from DEV / Execute data migration (LT Execution Support) / Execute post-processing (LT Execution Support) / Test application and integration, user acceptance test, test cut-over plan / Analyze problem messages and correct errors / Sign off acceptance by application departments / How SAP Can Support / SAP supports this task with the &ldquo;System Merge&rdquo; scope option&nbsp;which is part of the &ldquo;Data Migration Execution&rdquo; service. See accelerator section for more information.
- 293: The Company Code Transfer service helps you to transfer company code related data from the ECC 6.0 system in use to a new, empty&nbsp;new&nbsp;system. It is a service covering a selective migration of company codes. .. The following use cases can be differentiated: .. .. Company Code Transfer (Complete History): ... ... The data migration covers master data and transactional data, optional also Customizing ... Full data history will be migrated ... Customer-specific tables can be handled as well .. .. .. Company Code Transfer (Shell): .. ... Company code Customizing is covered, and optional master data ... Customer-specific tables can be handled as well .. .. . .. Procedure .. Proceed as follows: .. .. .. Check tables in use ... Especially customer-specific tables have to be evaluated and discussed in regards to selection and migration rules. Afterwards they have to be added to the tool to make sure they are in scope of the data migration. This task will be supported by analysis tools provided by SAP. .. .. .. Alignment of Target Organizational Structure (only Relevant for Company Code Transfer Shell) ... The objective is to align the organizational structure in the target. ... The full history company code transfer migrates data without any changes. If only a shell of a company code has to be moved, the target organizational structure has to be defined. ... Example:Source system: Company code 1000 has two plants: 1100 and 1200. In the target system it should look like: Company code 1000 with three plants: 1500, 1600,and 1700. .. .. .. Perform dictionary and repository harmonization during the project ... The objective is to harmonize dictionary and repository between source and target. ... Company code transfer projects last several months. In this time frame changes are usually applied to the source system. To make sure that all relevant data will be moved during the different test cycles and especially during go-live, it is essential to keep dictionary and repository of source and target system in sync. ... Example: A customer-specific table will be imported into the source production system after test cycle 1. This table definition has also to be transported to the target system to make sure it can be migrated as of test cycle 2. ... The harmonization of the sender system and&nbsp;the new&nbsp;receiver system is a prerequisite for a company code transfer. ... Determine the required harmonization strategy for the relevant objects, and also define the technical procedure for the harmonization strategy (the steps involved).&nbsp; ... For complex conflicts without a standard harmonization strategy, also create specifications. Create design documents for the specifications, if required. ... Plan the necessary activities for implementing the harmonization. Take into account the required resources (for example, developers and systems), the migration schedule, and the synchronization strategy with ongoing development and maintenance activities.&nbsp; .. .. .. Perform Test Cycles ... A company code transfer project is not done in a single shot. Usually 3 test cycles are performed before the migration of production data during go-live can take place. The different test cycles cover the following activities: ... ... Source system refresh ... Target system creation and harmonization of source and target environment ... Data migration preparation and execution ... Data migration post processing, for example, integrated upgrade ... Data model conversion ... Test ingand issue handling ... Preparation of next cycle .. ... This usually involves three test cycles. While the first and second test usually focus on functional correctness, the third test focuses on performance and execution according to the cut-over plan.&nbsp; .. . .. How SAP Can Support .. SAP supports this task with the scope option&nbsp;&ldquo; Company Code Transfer as Shell &rdquo; and &ldquo; Company Code Transfer with Full Data Set &rdquo; (both part of Data Migration Execution service) . See accelerator section for moreinformation.
- 294: During the Executing/Monitoring of the Project deliverable, the project management team carries out the planned and approved project work and measures project performance to identify variances from the project plan. Executing manages the scope of the work to be done, while monitoring the execution, identifies variances from the plan, monitors quality results, controls progress against the plan, controls changes throughout the project, assesses and responds to risks, and communicates project status.&nbsp;&nbsp; .The project management plan developed during the Prepare phase for each of the project management knowledge areas guides the team&rsquo;s approach to management, execution, monitoring, and control of project activities. This methodology provides steps to be considered when each activity is engaged and supported by the team&rsquo;s monitoring/controlling plans. The project manager is responsible for ensuring that the monitoring/controlling plans developed in the planning phase are applied at the appropriate level of control.&nbsp;&nbsp; . . Additional information for Premium Engagement Implementations: .The SAP (Technical Quality Manager) TQM is responsible for oversight activities in projects which are run under the SAP Premium Engagement agreement (such as SAP Active Embedded or SAP MaxAttention). The roles of the SAP TQM and the Project Manager are unique with distinct responsibilities during the project delivery. . . Prerequisite: .. .. The project management plan has been developed . .. Procedure: .Understand the execution and monitoring processes for the project and the activities involved in each as referenced in the Project Management Plan. .. .. Direct and Manage Project Execution .. Update the Project Management Documents .. Plan and Execute Agile Sprints .. Manage Project Issues, Risks, and Changes .. Communicate Project Status and Progress .
- 295: In the Direct and Manage Project Execution task, the project manager and the project team will perform actions to execute the project management plan to accomplish the work defined in the project scope statement. .. In executing the project work, the project team will perform the following types of activities: .. .. Perform project tasks to reach project objectives .. Expend effort and funds to accomplish project objectives .. Staff, train, and manage the project team members assigned to the project .. Obtain, manage, and utilize resources .. Implement and execute the planned methods and standards .. Create, control, verify, and validate project deliverables .. Manage the scope of the approved work .. Manage risks and implement risk response activities .. Manage issues to closure .. Adapt approved changes into the scope, plans, and project environment .. Establish and manage internal and external communications .. Collect project data and report on progress and performance . .. In monitoring/controlling work results, the project team performs the following types of activities: .. .. Compare actual project performance to the project management plan .. Assess performance to determine whether corrective or preventive actions are necessary .. Monitor and control project risks .. Provide metrics to support progress and performance reporting and forecasting .. Monitor implementation of approved changes .. Take corrective action as needed . .. Management plans developed during the Prepare phase guide the team&#39;s approach to management, execution, and control of project activities. See &ldquo;Prepare Project Management Plan&rdquo; task in the Prepare phase for details. The project manager is responsible for ensuring the management plans are applied at the appropriate level of control. .&nbsp;
- 296: The purpose of the Updating the Project Management Documents task is to ensure the project manager keeps the key project management documents up-to-date. This task includes refinement of the project schedule, refinement of the project budget, and appropriate updates to the management plans, scope document and business case to reflect the detailed scope information created during the project. . .The project management documents are, together, a comprehensive body of project documents that includes the project schedule, budget/cost information, monitoring/controlling plans for each of the nine knowledge areas of the Project Management Body of Knowledge (PMBOK), and other information as appropriate. The project management plan document developed for each of the knowledge areas provide the foundation for the consistent application of project management practices. . .This task includes updates to: .. .. Project management plan .. Project WBS .. Project schedule .. Project budget .. Business case .. Scope document .. Backlog document (created in Explore phase) . .. &nbsp;
- 297: The purpose of the Plan and Execute Agile Sprints task is for the project team to run the Realize phase in sequence of sprints in which the project team follows the process outlined below. The goal of these sprints is to incrementally and iteratively build the solution capabilities captured in the backlog, test them, and review their completion with the customer process owners (product owner in Agile terminology). .. .. During each sprint, the project team conducts following activities: . . Sprint Planning Meeting .At the beginning of the sprint, the project team runs a planning meeting during which the team, jointly with the process owner, select the highest priority items from the backlog and conducts detailed planning for the execution activities in the sprint. Each backlog item is further decomposed to tasks that need to be completed during the sprint. These tasks may be configuration, coding, unit testing, data preparation, documentation, and others. These tasks are then captured in the sprint backlog and estimated to validate the original estimates for each backlog item. As a result of this planning, the team has clarity on what needs to be completed for each backlog item included in the sprint and has confidence the team has sufficient capacity to complete the work. .. Sprint Execution Activities .During the sprint, the team members execute the tasks that have been planned and the team keeps track of the progress on the team board. The team board contains swim lanes showing the status of each backlog item and each task. Teams are encouraged to use boards on the wall and use the post-it notes to keep visual track of their progress. .The team also regularly updates the burn-down chart which is used to track the progress of completing the individual tasks and backlog items. The team reviews the progress daily in the daily stand-up meetings. .. Daily Stand-up Meeting .During the daily stand-up meeting, the team members review the (a) progress they have made since last meeting, (b) plans for activities and tasks until the next meeting, and (c) any issues of blockers which may prevent them from completing the tasks they are working on. The daily stand-up meeting is not a project status meeting, but rather a session designed to help the team communicate the progress with each other. .. Sprint Demo .Towards the end of the sprint, the team conducts the sprint demo meeting during which the team demonstrates to the business owners (product owner in Agile projects) the completed functionality. The project team seeks acceptance of the completed features. During this meeting, the business owner may request additional items to be added to the backlog (or items to be removed from the backlog). It is recommended the team previews the functionality with process owners prior to this meeting. From experience, many projects had great experience with having the business process owners demo the completed functionality to the rest of the business users and decisions makers (instead of the project team members). .. Sprint Retrospective .The SCRUM Master organizes and facilitates the retrospective meeting for the team. The meeting is typically scheduled shortly after the sprint demo meeting. The purpose of the meeting is to continuously improve the SCRUM process using lessons learned from the sprint execution. .Meeting participants answer the following questions: .. .. What went well during the sprint? .. What do we want to preserve? .. What can be improved for the next sprint and how? . .. The team selects one or two improvement opportunities and puts it into the backlog for the next sprint. This way the Agile process gets improved in an incremental way and remains responsive to the changing environment of the project. .&nbsp;
- 298: The purpose of the Manage Project Issues, Risks, and Changes task is to have a consistent, comprehensive approach to managing project issues is a critical component of an effective project management system. Effective issue management involves the appropriate level of management making decisions on issues and tracking progress on issue resolution in accordance with the project issue management procedure. Identified issues are maintained in one, central environment. . .In on-premise projects, this environment is the SAP Solution Manager, and depending on the type and status, it may be directly transferred over to SAP for resolution. .The issue management handling involves the following steps: .. .. An issue is raised and properly classified as it is related to the system conversion, solution implementation, or solution operations of an SAP solution or technology. It is created in the issue tracking tool, either by SAP, a customer or a system integrator. .. During the issue creation, the person raising the issues assigns the priority and the responsible person for resolution of the issue. .. The project manager follows up on issues on a regular basis in addition to the standard issue management process defined for the project (part of the management plans). .. Critical issues will be reviewed as an input for each quality gate review meeting. . .. As a result, issues are documented in an issue tracking tool or system such as SAP Solution Manager. Open issues are reviewed and updated on a regular basis and communicated to the appropriate stakeholder groups as part of the regular project reporting and communication. . .From SAP&#39;s perspective, issue tracking allows for better visibility and transparency of open issues, problems, action items, and associated action plans to the project management team. .A central issue tracking system (i.e. a support or an incident ticket system) allows stakeholders to manage and maintain lists of issues that require action and resolution to ensure the success of the project. .&nbsp;
- 299: The purpose of the Communicate Project Status and Progress task is to prepare and communicate project status and progress reports to the team and stakeholders involved in the project implementation. Throughout the project, several project performance reports need to be produced for different purposes and audiences as defined in the project communication plan. The project manager and project team are responsible for clearly communicating the progress of the key activities, completion of the deliverables, and status against the schedule and budget. . .The project teams typically prepare: .. .. Team member status update produced typically weekly and shared with the team lead. It is recommended this report is kept very lightweight and provided to the team lead via e-mail or in a team meeting. .. Team status reports on a regular cadence, typically weekly. The team status reports are prepared by the team leads and are delivered to the project manager as an input for the project status report. The team status report may be reviewed in regular team review with the project manager or provided in a predefined format. .. Project status report, using the project status report template. The project status report is created weekly, based on the input from individual teams and additional information such as an issues list, risk list, etc. .. Executive status reports are typically prepared on monthly or quarterly cadence and is provided to the project executive steering group (committee). Generally, this report re-uses the key information from the weekly project status report, expands on the value and benefits of the program, and includes discussion of the decisions which are needed from the executive steering group. . .. Additionally, throughout the project, as more is known, the project communication matrix should be reviewed and updated. The communication matrix documents the project team&rsquo;s approach to communication (including status reporting). It captures the analysis completed as part of communications planning and serves as a tool to guide the project team throughout the project. .&nbsp;

| ID | WBS | Task | Duration | Start | Finish | Predecessors | Total slack | Free slack | Resources | Work | Workstream | FLAVORS |
| --- | --- | --- | --- | --- | --- | --- | --- | --- | --- | --- | --- | --- |
| 300 | 4.7 | **Configuration - Introduction** | 10d | 2019-07-17 | 2019-07-30 |  | 96d | 0d |  | 80h | Application: Design & Configuration | Waterfall ,Agile |
| 301 | 4.8 | **Configuration - Core Finance** | 10d | 2019-07-17 | 2019-07-30 |  | 96d |  |  | 80h | Application: Design & Configuration | Waterfall ,Agile |
| 302 | 4.8.1 | Configure General Settings and Organizational Structure | 3d | 2019-07-17 | 2019-07-19 |  | 96d | 0d | Функциональный консультант | 24h | Application: Design & Configuration | Waterfall ,Agile |
| 303 | 4.8.2 | Configure Master Data | 4d | 2019-07-25 | 2019-07-30 | 302 | 96d |  | Специалист по миграции данных (Data Migration Specialist) | 32h | Application: Design & Configuration | Waterfall ,Agile |
| 304 | 4.8.3 | Configure Core Finance | 3d | 2019-07-24 | 2019-07-30 | 302 | 96d |  | Функциональный консультант | 24h | Application: Design & Configuration | Waterfall ,Agile |
| 305 | 4.9 | **Configuration - Accelerated Plan to Product** | 27d | 2019-07-31 | 2019-09-05 | 300 | 106d |  |  | 72h | Application: Design & Configuration | Waterfall ,Agile |
| 306 | 4.9.1 | Configure General Settings and Organizational Structure | 3d | 2019-07-31 | 2019-08-02 |  | 106d | 0d | Функциональный консультант | 24h | Application: Design & Configuration | Waterfall ,Agile |
| 307 | 4.9.2 | Configure Master Data | 2d | 2019-08-05 | 2019-08-06 | 306 | 128d |  | Специалист по миграции данных (Data Migration Specialist) | 16h | Application: Design & Configuration | Waterfall ,Agile |
| 308 | 4.9.3 | Core Configuration Accelerated Plan to Product | 4d | 2019-09-02 | 2019-09-05 | 306 | 106d |  | Функциональный консультант | 32h | Application: Design & Configuration | Waterfall ,Agile |
| 309 | 4.10 | **Configuration - Enhanced Request to Service** | 15d | 2019-08-19 | 2019-09-06 | 300 | 105d |  |  | 56h | Application: Design & Configuration | Waterfall ,Agile |
| 310 | 4.10.1 | Configure General Settings and Organizational Structure | 2d | 2019-08-19 | 2019-08-20 |  | 105d | 0d | Функциональный консультант | 16h | Application: Design & Configuration | Waterfall ,Agile |
| 311 | 4.10.2 | Configure Master Data | 3d | 2019-08-21 | 2019-09-06 | 310 | 105d |  | Специалист по миграции данных (Data Migration Specialist) | 24h | Application: Design & Configuration | Waterfall ,Agile |
| 312 | 4.10.3 | Core Configuration Enhanced Request to Service | 2d | 2019-08-27 | 2019-08-28 | 310 | 112d |  | Функциональный консультант | 16h | Application: Design & Configuration | Waterfall ,Agile |
| 313 | 4.11 | **Configuration - Streamlined Procure to Pay** | 20d | 2019-08-21 | 2019-09-17 | 300 | 98d |  |  | 56h | Application: Design & Configuration | Waterfall ,Agile |
| 314 | 4.11.1 | Configure General Settings and Organizational Structure | 2d | 2019-08-21 | 2019-08-22 |  | 98d | 0d | Функциональный консультант | 16h | Application: Design & Configuration | Waterfall ,Agile |
| 315 | 4.11.2 | Configure Master Data | 3d | 2019-09-13 | 2019-09-17 | 314 | 98d |  | Специалист по миграции данных (Data Migration Specialist) | 24h | Application: Design & Configuration | Waterfall ,Agile |
| 316 | 4.11.3 | Core Configuration Streamlined Procure to Pay | 2d | 2019-08-23 | 2019-08-26 | 314 | 114d |  | Функциональный консультант | 16h | Application: Design & Configuration | Waterfall ,Agile |
| 317 | 4.12 | **Configuration - Optimized Order to Cash** | 24d | 2019-08-12 | 2019-09-12 | 300 | 101d |  |  | 64h | Application: Design & Configuration | Waterfall ,Agile |
| 318 | 4.12.1 | Configure General Settings and Organizational Structure | 2d | 2019-08-12 | 2019-08-13 |  | 101d | 0d | Функциональный консультант | 16h | Application: Design & Configuration | Waterfall ,Agile |
| 319 | 4.12.2 | Configure Master Data | 4d | 2019-09-09 | 2019-09-12 | 318 | 101d |  | Специалист по миграции данных (Data Migration Specialist) | 32h | Application: Design & Configuration | Waterfall ,Agile |
| 320 | 4.12.3 | Core Configuration Optimized Order to Cash | 2d | 2019-08-29 | 2019-08-30 | 318 | 110d |  | Функциональный консультант | 16h | Application: Design & Configuration | Waterfall ,Agile |
| 321 | 4.13 | **Configuration - Core Human Resources** | 37d | 2019-08-14 | 2019-10-03 | 300 | 86d |  |  | 64h | Application: Design & Configuration | Waterfall ,Agile |
| 322 | 4.13.1 | Configure General Settings and Organizational Structure | 3d | 2019-08-14 | 2019-08-16 |  | 86d | 0d | Функциональный консультант | 24h | Application: Design & Configuration | Waterfall ,Agile |
| 323 | 4.13.2 | Configure Master Data | 3d | 2019-09-18 | 2019-10-03 | 322 | 86d |  | Специалист по миграции данных (Data Migration Specialist) | 24h | Application: Design & Configuration | Waterfall ,Agile |
| 324 | 4.13.3 | Core Configuration Core Human Resources | 2d | 2019-09-06 | 2019-09-09 | 322 | 104d |  | Функциональный консультант | 16h | Application: Design & Configuration | Waterfall ,Agile |

Notes:
- 300: The purpose of this activity is to configure the mandatory settings, according to the delta design defined and agreed during the Explore phase (see activity Fit Gap / Delta Design / Backlog for details). The delta design documents contain changes related to both the implementation of new functionality, and the mandatory configuration adjustments. .. In case of a system conversion existing customizing will be taken over during technical conversion, but of course will need to be adjusted according to newly introduced or changed functionality. Document the configuration settings and changes, and collect related customizing transports. Mandatory configuration activities are well documented in the SAP Reference Implementation Guide (SAP IMG in transaction SPRO). Unless stated otherwise, the corresponding actions should be initiated from there. .. In case of a newly implemented business process, configuration data will be taken from Best Practices content from SAP Activate. .. SAP Solution Manager &#39;Configuration Library&#39; can hold links to the configuration tasks and documents to capture a living record of setting changes made (including the reason for each decision). A configuration object can also be linked to the relevant process structure. .. Procedure .. The purpose of this phase is to use a series of iterations to incrementally build and test an integrated business and system environment that is based on the business scenarios and process requirements identified in the previous phase (see&nbsp;picture below): .. . &nbsp; .. . . .. &nbsp; . .. &nbsp; .. Accordingly configuration steps will be executed in different iterations (sprints) starting from general settings per business priority up to detailed configuration for each area. .. For each cycle the following steps will apply (example for core configuration in three business priorities is shown in the picture below): .. .. Handover .. Configuration .. Unit Test .. String Test .. Solution Walk Through .. Bug Fixing .. Documentation . .. . &nbsp; .. . . .. &nbsp; . .. &nbsp; .. Step 1 - Handover Session: .. Purpose of the handover session is a structured handover from the design team (in charge of the delta design documents) to the configuration team. This step can be performed remote or onsite. .. Step 2 &ndash; Configuration: .. Performing the necessary customizing according to the agreed scope in the Development System. This is usually performed remote. .. Step 3 &ndash; Unit Test: .. Purpose is to validate configuration settings within the development system. .. Step 4 &ndash; String test: .. Purpose is to test an initial solution integration within the business priorities in scope. This is not a fully loaded integration test. Rather more recommendation is to consider in this early step the following frame conditions: .. .. Testing only with manually created test data (no consideration and test of migrated data) .. No testing of customer specific WRICEF objects .. Test results will be documented and stored in solution manager but will be no subject for acceptance .. Identified test issues (errors) will be resolved directly, only issues that cannot be resolved within the same day will be documented in solution manager. .. No test of authorizations . .. Step 5 &ndash; Solution walk through .. Purpose of this step is to have an early knowledge transfer from the team in charge of configuration. .. This step will be performed via remote workshops per Business Priority: .. .. Solution explanation per solution capability from an application perspective .. Configuration explanation per solution capability from an IT perspective .. Baseline for the presentation are existing string test cases from Best Practice . .. Step 6 &ndash; Bug Fixing .. Purpose of this step is to resolve issues identified during the string test or solution walk through .. Step 7 &ndash; Documentation .. Purpose of this step is to document the configured settings and upload the results in solution manager .. How SAP Can Support .. SAP supports this activity with the &ldquo; Configuration &rdquo; scope option as part of the Build Execution&nbsp; service.&nbsp;
- 301: The purpose of this task is to implement the general settings and organizational structure for Core Finance. Procedure Configure General Settings and Organizational Structure Configure Master Data Core Configuration Accelerated Plan to Product
- 302: The purpose of this task is to implement the general settings and organizational structure for Core Finance according to the procedure described in the Configuration - Introduction activity. Procedure Proceed as described in the Configuration - Introduction activity. Typical examples for Core Finance in this section are: Chart of Account VAT Numbers Company codes Controlling area
- 303: The purpose of this task is to implement the master data for Core Finance according to the procedure described in the Configuration - Introduction activity. Procedure Proceed as described in the Configuration - Introduction activity. Typical examples for Core Finance in this section are: Profit center Cost center Bank directory SAP Business Partner
- 304: The purpose of this task is to implement the configuration for Core Finance according to the procedure described in the Configuration - Introduction activity. Procedure Proceed as described in the Configuration - Introduction activity. Typical examples for Core Finance in this section are: Document types Localization settings (e.g withholding tax) Correspondence Document splitting Statistical key figures Payments (ingoing / outgoing) Clearing Dunning Month end closure procedures (periodical processing)
- 305: The purpose of this task is to implement the general settings and organizational structure for Accelerated Plan to Product. .. Procedure .. &nbsp;Configure General Settings and Organizational Structure. .. &nbsp;Configure Master Data .. &nbsp;Core Configuration Accelerated Plan to Product . .
- 306: The purpose of this task is to implement the general settings and organizational structure for Accelerated Plan to Product according to the procedure described in the. Configuration - Introduction .activity. Procedure Proceed as described in the. Configuration - Introduction .activity. Typical examples for. Accelerated Plan to Product .in this section are: . Plant definition . Maintenance planning plant . Definition of location (within a plant)
- 307: The purpose of this task is to implement the master data for Accelerated Plan to Product according to the procedure described in the. Configuration - Introduction .activity. Procedure Proceed as described in the. Configuration - Introduction .activity. Typical examples for. Accelerated Plan to Product .in this section are: . Bill of Material . Routings . Work center . Work center hierarchy . Production resources
- 308: The purpose of this task is to implement the configuration for Accelerated Plan to Product according to the procedure described in the. Configuration - Introduction .activity. Procedure Proceed as described in the. Configuration - Introduction .activity. Typical examples for. Accelerated Plan to Product .in this section are: . Planning profiles . Order types . Inspection planning . Quality notifications . Project profiles
- 309: The purpose of this task is to implement the general settings and organizational structure for Enhanced Request to Service. .. Procedure .. .. &nbsp;Configure General Settings and Organizational Structure .. &nbsp;Configure Master Data .. &nbsp;Core Configuration Enhanced Request to Service .
- 310: The purpose of this task is to implement the general settings and organizational structure for Enhanced Request to Service according to the procedure described in the. Configuration - Introduction .activity. Procedure Proceed as described in the. Configuration - Introduction .activity. Typical examples for. Enhanced Request to Service .in this section are: . Plant
- 311: The purpose of this task is to implement the master data for Enhanced Request to Service according to the procedure described in the. Configuration - Introduction .activity. Procedure Proceed as described in the. Configuration - Introduction .activity. Typical examples for. Enhanced Request to Service .in this section are: . Technical objects . Bill of Materials
- 312: The purpose of this task is to implement the configuration for Enhanced Request to Service according to the procedure described in the. Configuration - Introduction .activity. Procedure Proceed as described in the. Configuration - Introduction .activity. Typical examples for. Enhanced Request to Service .in this section are: . Maintenance and service notifications . Maintenance and service orders . Subcontracting
- 313: The purpose of this task is to implement the general settings and organizational structure for Streamlined Procure to Pay. .. Procedure .. .. &nbsp;Configure General Settings and Organizational Structure .. &nbsp;Configure Master Data .. &nbsp;Core Configuration Streamlined Procure to Pay .
- 314: The purpose of this task is to implement the general settings and organizational structure for Streamlined Procure to Pay according to the procedure described in the. Configuration - Introduction .activity. Procedure Proceed as described in the. Configuration - Introduction .activity. Typical examples for. Streamlined Procure to Pay .in this section are: Storage Location Purchasing Organization Plant Definition Loading points
- 315: The purpose of this task is to implement the master data for Streamlined Procure to Pay according to the procedure described in the. Configuration - Introduction .activity. Procedure Proceed as described in the. Configuration - Introduction .activity. Typical examples for. Streamlined Procure to Pay .in this section are: Material Master Business Partner Payment terms
- 316: The purpose of this task is to implement the configuration for Streamlined Procure to Pay according to the procedure described in the. Configuration - Introduction .activity. Procedure Proceed as described in the. Configuration - Introduction .activity. Typical examples for. Streamlined Procure to Pay .in this section are: Purchasing info record Source list RfQ procedure Purchase order settings Contract settings Scheduling agreements Account assignment Goods receipt / Goods issue settings
- 317: The purpose of this task is to implement the general settings and organizational structure for Optimized Order to Cash. .. Procedure .. .. &nbsp;Configure General Settings and Organizational Structure .. &nbsp;Configure Master Data .. &nbsp;Core Configuration Optimized Order to Cash .
- 318: The purpose of this task is to implement the general settings and organizational structure for Optimized Order to Cash according to the procedure described in the. Configuration - Introduction .activity. Procedure Proceed as described in the. Configuration - Introduction .activity. Typical examples for. Optimized Order to Cash .in this section are: Sales Organization Distribution Channel Sales Office Sales Group
- 319: The purpose of this task is to implement the master data for Optimized Order to Cash according to the procedure described in the. Configuration - Introduction .activity. Procedure Proceed as described in the. Configuration - Introduction .activity. Typical examples for. Optimized Order to Cash .in this section are: Material Master Business Partner Payment terms
- 320: The purpose of this task is to implement the configuration for Optimized Order to Cash according to the procedure described in the. Configuration - Introduction .activity. Procedure Proceed as described in the. Configuration - Introduction .activity. Typical examples for. Optimized Order to Cash .in this section are: Basic functions like: pricing, taxes, account assignment Sales documents, document types Billing documents
- 321: The purpose of this task is to implement the general settings and organizational structure for Core Human Resources. .. Procedure .. .. &nbsp;Configure General Settings and Organizational Structure .. &nbsp;Configure Master Data .. &nbsp;Core Configuration Human Resources .
- 322: The purpose of this task is to implement the general settings and organizational structure for Core Human Resources according to the procedure described in the. Configuration - Introduction .activity. Procedure Proceed as described in the. Configuration - Introduction .activity. Typical examples for. Core Human Resources .in this section are: Personal areas Personal subareas Employee groups
- 323: The purpose of this task is to implement the master data for Core Human Resources according to the procedure described in the. Configuration - Introduction .activity. Procedure Proceed as described in the. Configuration - Introduction .activity. Typical examples for. Core Human Resources .in this section are: Organizational plan Qualifications catalogue
- 324: The purpose of this task is to implement the configuration for Core Human Resources according to the procedure described in the. Configuration - Introduction .activity. Procedure Proceed as described in the. Configuration - Introduction .activity. Typical examples for. Core Human Resources .in this section are: Infotypes ESS Work schedules Time data recording

| ID | WBS | Task | Duration | Start | Finish | Predecessors | Total slack | Free slack | Resources | Work | Workstream | FLAVORS | Assembly Category |
| --- | --- | --- | --- | --- | --- | --- | --- | --- | --- | --- | --- | --- | --- |
| 325 | 4.14 | **Product Enhancements** | 59d | 2019-08-01 | 2019-10-22 |  | 73d |  |  | 160h | Application: Design & Configuration | Waterfall ,Agile |  |
| 326 | 4.14.1 | Adjust Affected Existing Custom Code | 3d | 2019-08-01 | 2019-08-05 |  | 76d | 0d | Руководитель проекта (PM) | 24h | Application: Design & Configuration | Waterfall ,Agile |  |
| 327 | 4.14.2 | Development of WRICEF objects | 4d | 2019-10-01 | 2019-10-04 | 326 | 76d | 0d | Технический консультант | 32h | Application: Design & Configuration | Waterfall ,Agile |  |
| 328 | 4.14.3 | Enhancement and development of user interface (e.g. FIORI) | 3d | 2019-10-15 | 2019-10-17 | 327 | 76d |  | Специалист по интеграциям (Integration Specialist) | 24h | Application: Design & Configuration | Waterfall ,Agile |  |
| 329 | 4.14.4 | Custom Development | 10d | 2019-10-07 | 2019-10-22 |  | 73d |  | Технический консультант | 80h | Application: Design & Configuration | Waterfall ,Agile |  |
| 330 | 4.15 | **Security Implementation** | 22d | 2019-07-17 | 2019-08-15 |  | 121d |  |  | 136h | Application: Design & Configuration | Waterfall ,Agile |  |
| 331 | 4.16 | **Organizational Alignment** | 22d | 2019-07-17 | 2019-08-15 |  | 121d |  |  | 136h | Application: Solution Adoption | Waterfall ,Agile |  |
| 332 | 4.16.1 | Execute Role Mapping and Transition Planning | 3d | 2019-07-17 | 2019-07-19 |  | 121d | 0d | Руководитель тестирования / QA (Testing Lead) | 24h | Application: Solution Adoption | Waterfall ,Agile | Non-core (N) |
| 333 | 4.16.2 | Conduct Sounding Board and Pulse Checks | 4d | 2019-07-24 | 2019-07-29 | 332 | 121d | 0d | Руководитель проекта (PM) | 32h | Application: Solution Adoption | Waterfall ,Agile | None (NONE) |
| 334 | 4.16.3 | Communicate Sprint Scope and Plan (Iterative) | 5d | 2019-07-30 | 2019-08-05 | 333 | 121d | 0d | Координатор проекта / Администратор проекта (PC) | 40h | Application: Solution Adoption | Waterfall ,Agile | None (NONE) |
| 335 | 4.16.4 | Communicate Sprint Result (Iterative) | 2d | 2019-08-06 | 2019-08-07 | 334 | 121d | 0d | Руководитель проекта (PM) | 16h | Application: Solution Adoption | Waterfall ,Agile | None (NONE) |
| 336 | 4.16.5 | Refine and Execute Communication Plan | 3d | 2019-08-13 | 2019-08-15 | 335 | 121d |  | Специалист по обучению и коммуникациям | 24h | Application: Solution Adoption | Waterfall ,Agile | None (NONE) |
| 337 | 4.17 | **Educational Readiness Review** | 3d | 2019-07-22 | 2019-07-24 |  | 82d | 0d |  | 24h | Application: Solution Adoption | Waterfall ,Agile |  |
| 338 | 4.17.1 | Prepare Educational Readiness Report | 3d | 2019-07-22 | 2019-07-24 |  | 82d |  | Специалист по обучению и коммуникациям | 24h | Application: Solution Adoption | Waterfall ,Agile | None (NONE) |
| 339 | 4.18 | **Knowledge Transfer** | 6d | 2019-07-25 | 2019-08-01 | 337 | 82d | 0d |  | 64h | Application: Solution Adoption | Waterfall ,Agile |  |
| 340 | 4.18.1 | Prepare for Key User Knowledge Transfer | 3d | 2019-07-25 | 2019-07-29 |  | 82d | 0d | Специалист по обучению и коммуникациям | 24h | Application: Solution Adoption | Waterfall ,Agile | Core (C) |
| 341 | 4.18.2 | Perform Solution Walkthrough and Knowledge Transfer to Key Users | 3d | 2019-07-30 | 2019-08-01 | 340 | 82d |  | Специалист по обучению и коммуникациям | 24h | Application: Solution Adoption | Waterfall ,Agile | Core (C) |
| 342 | 4.18.3 | Perform KT for Delta Scope | 2d | 2019-07-30 | 2019-07-31 | 340 | 83d |  | Руководитель проекта (PM) | 16h | Application: Solution Adoption | Waterfall ,Agile | None (NONE) |
| 343 | 4.19 | **End User Training Delivery Enabled** | 10d | 2019-08-02 | 2019-08-15 | 339 | 80d | 41d |  | 80h | Application: Solution Adoption | Waterfall ,Agile |  |
| 344 | 4.19.1 | Prepare End User Training Materials and Documentation | 2d | 2019-08-02 | 2019-08-05 |  | 82d | 2d | Специалист по обучению и коммуникациям | 16h | Application: Solution Adoption | Waterfall ,Agile | Non-core (N) |
| 345 | 4.19.2 | Set up Training Environment | 2d | 2019-08-06 | 2019-08-07 |  | 80d | 0d | Специалист по обучению и коммуникациям | 16h | Application: Solution Adoption | Waterfall ,Agile | Non-core (N) |
| 346 | 4.19.3 | Perform Training of the Trainers | 3d | 2019-08-08 | 2019-08-12 | 344, 345 | 80d | 0d | Специалист по обучению и коммуникациям | 24h | Application: Solution Adoption | Waterfall ,Agile | Non-core (N) |
| 347 | 4.19.4 | Develop End User Training Schedule and Logistics Plan | 3d | 2019-08-13 | 2019-08-15 | 346 | 80d |  | Координатор проекта / Администратор проекта (PC) | 24h | Application: Solution Adoption | Waterfall ,Agile | Non-core (N) |
| 348 | 4.20 | **OCM Alignment activities** | 6d | 2019-07-17 | 2019-07-24 |  | 41d | 0d |  | 48h | Application: Solution Adoption | Agile |  |
| 349 | 4.20.1 | OCM and Testing alignment | 3d | 2019-07-17 | 2019-07-19 |  | 41d | 0d | Специалист по обучению и коммуникациям | 24h | Application: Solution Adoption | Agile,Waterfall |  |
| 350 | 4.20.2 | OCM and Data Migration alignment | 3d | 2019-07-22 | 2019-07-24 | 349 | 41d |  | Специалист по миграции данных (Data Migration Specialist) | 24h | Application: Solution Adoption | Agile,Waterfall |  |

Notes:
- 325: The activity&nbsp; Product Enhancements &nbsp;covers the development of custom code to close the gaps identified in the&nbsp; Fit / Gap &nbsp;activities in the Explore phase. .. It further covers the adjustment of already existing custom code identified in the activity Custom Code Impact Analysis. .. Procedure .. .. Adjust affected existing custom code .. Development of WRICEF objects .. Development of user interfaces (e.g. FIORI) .. Custom Development . .. Please note : .SAP recommends to explore the options for the agile creation of customer innovations using the extensibility capabilites of the new system and SAP Cloud Platform. This is of particular interest for: .. .. SAP Fiori and the mobile journey in the SAP Cloud Platform (decoupling custom user interface development from the stable core, when developing mobile apps for B2B, B2C, C2B) .. Agile data mart: Running SAP BI and Predictive Self-Services in an SAP Cloud Platform sidecar . .. The usage of the SAP Cloud Platform has two additional benefits: .. .. You can run innovations in parallel to the conversion project .. You can consume innovations without upgrading the stable core (e.g. LoB Finance innovations delivered via SAP Cloud Platform applications). . .. You will find helpful&nbsp;information resources at SAP SCN. Also, look up training courses on SAP Cloud Platform at openSAP. .. See the accelerator section for more information.
- 326: The purpose of this task is to adjust the custom code and make it ready for the new system. .. Requirements and Constraints .. This activity is relevant in case own code needs to be made ready for&nbsp;the new system&nbsp;(e.g. the system conversion case). In case of a new implementation, or a landscape transformation, some custom code from an old SAP ERP system might be in scope to be used in the new system. .. The custom code work list of affected objects has been created (see&nbsp;activity&nbsp; Custom Code Impact Analysis). .. The development system is has been converted to the new system. .. Procedure .. To adjust custom code that is affected by the conversion to&nbsp;the new&nbsp;project, proceed as follows: .. .. Make sure your developers have the required skill set to adjust your custom code for the new system. There are multiple options for developer training (e-learnings, classroom). Please see accelerator section for more information. .. Make sure you have the prioritized list of custom objects requiring adjustment (see activity&nbsp; Custom Code Impact Analysis &nbsp;for details). .. Wait until your DEV system has been converted to the new system. .. Adjust custom code objects in the converted DEV system according to the prioritized custom object list. Log all changes in transport requests. .. Transport your changes to QAS, once it has been converted to the new system. Test your changes in QAS. In case corrections are required, perform the corrections in DEV and transport to QAS again. .. All transport requests should then be populated in the PRD buffer, ready for import during the Go-Live. . .. Please note: &nbsp;In case of a system conversion, the old DEV system will stay for production support of PRD as long as PRD is not converted. Take care to properly&nbsp; retrofit &nbsp;changes performed in the production support landscape to the new DEV system to ensure the latest business requirements are accounted for within the project landscape. .. Results .. All custom code is adjusted to function properly with the new system. .. How SAP Can Support .. SAP supports the identification and the adjustment of custom code with the &ldquo; Custom Code Management Execution Support &rdquo; scope option&nbsp;(part of the &ldquo; &nbsp;Build Execution &rdquo; service). .. SAP also offers to check the security of your custom code (service&nbsp; Custom Code Quality Management ). Please see task Improve Custom Code Quality Measures &nbsp;from the Explore phase for more details.
- 327: The purpose of this task is to provide coded enhancements within the defined project scope and specified from a functional perspective during the Explore phase. .. WRICEF is defined as follows: .. .. W = workflow .. R = reports .. I = interfaces .. C = conversions .. E = enhancements .. F = forms . .. Procedure .. Development of WRICEF objects is following the procedure: .. Step 1: Technical Design .. Based on the functional requirements described in the delta design document, the purpose of this task is to specify the WRICEF object from a technical perspective. A detailed technical specification will be provided. This comprises in case of ABAP developments development details like entry point in the system, enhancement logic, process flow diagram, data model and required authorizations. .. WRICEF objects are new objects or objects to be adjusted, identified during the explore phase, e.g. a requirement for a new workflow or form identified. .. All information will be documented in a technical specification document (see Accelerator&rsquo;s section for details). .. For each enhancement, the appropriate test case(s) will be defined and documented. The final documents will be stored in SAP Solution Manager for shared access. .. Step 2: Development of WRICEF objects .. The developer is in charge to realize the requirement, which includes the development itself but for sure also documentation and unit testing. .. Step 3: Unit testing for all developed objects .. The purpose of this task is to perform a unit test of the developments. The objective is to resolve any issues identified during the WRICEF object(s) test. It is crucial that the issues are solved, and re-tested by users that reported them (or designated re-testers) and that they are confirmed. .. Additionally, during this task, a final code review of the development objects will be performed and readiness for transport into QAS has to be confirmed. .. How SAP Can Support .. SAP supports this activity with the &ldquo; WRICEF Developments &rdquo; service as part of SAP Professional Services. .. SAP also offers to check the security of your custom code (service Custom Code Quality Management). Please see task Improve Custom Code Quality Measures from the Explore phase for more details.
- 328: The purpose of this task is to provide UI enhancements within the defined project scope and specified from a functional perspective during the Explore phase. .. Procedure .. Development of customer-specific user interfaces, such as SAP Fiori UX or Screen Personas. .. Configuration and development of user interfaces follows in general the procedure described in the task before: .. .. Technical Design .. Development .. Unit Test . .. Examples: .. .. .. Extend an existing SAP Fiori App ... ... ... Configuration, hide / add fields by use of configuration framework, UI enhancements using backend configuration ... ... ... Enhancements through Fiori extension points ... ... ... UI changes &amp; backend extensions; change of &quot;look &amp; feel&quot; and backend functionality of a standard application. ... .. .. .. .. Full screen modifications .. .. .. UI enhancements using functional customizations .. .. .. Development of new Fiori AppsCreate new FIORI launch pads and catalogues. .. .. .. Create new FIORI launch pads and catalogues. .. . .. How SAP Can Support .. SAP supports this activity with the &ldquo; Fiori Enhancement Pack &rdquo; service or with SAP Custom Development. These services are not part of the SAP Value Assurance, but are available as an SAP Professional Service offering.
- 329: For development requirements exceeding a certain threshold (which is project specific) or considering those as critical for the project, it is recommended to manage those as custom developments. .. Procedure .. Custom development follows in general the same procedure as described in the task&nbsp; Development of WRICEF objects : .. .. Technical Design .. Development .. Unit Test . .... How SAP Can Support .. With SAP&rsquo;s Custom Application Development Services SAP is able to develop one-of-a-kind solutions that help you thrive in the digital economy -- with SAP&rsquo;s application development team. Conceptualize, design, build, and maintain custom applications that run on any device &ndash; and in on premise, cloud, or hybrid environments &ndash; with help from the SAP Application Services team. .. .. Speed mission-critical app development with agile development methods and by reusing existing software .. Develop on a variety of SAP platforms, including those from SAP companies Hybris, Ariba, and SuccessFactors .. Be a leader in your industry with individualized solutions that support innovation and the continuous transformation of your business . .. See accelerator section for details.
- 330: In the Security Implementation activity the customer specific results from the Security Design phase are implemented. All required and planned security tasks are now initiated. .. Requirements and Constraints .. This activity is recommended for all scenarios. .. Procedure .. .. Define the Security Activities .. Prepare the Project Plan per Security Service .. Realize the Security Services .. Document the results of the Security Activities (e.g. S/4HANA Authorization Concept) . .. See &ldquo;SAP Security Products&rdquo; road map for details. .. Results .. As the result of the Security Implementation Phase all the planned and defined Security Activities are initiated and in realization. They will continue across the Deploy phase.
- 331: The purpose of Organizational Alignment is to ensure a smooth transition process towards the new way of working. This includes the alignment of roles and responsibilities and activities to ensure that all employees are fully aligned to the goals of the project and organization.
- 332: The purpose of this task is to use the results from previous change impact analysis and the role mapping information (mapping of new business user roles to existing roles and organizational structure) and determine an appropriate transition approach for the business.
- 333: The purpose of this task is to get to get complex organizational feedback regarding the progress and acceptance of the project from the customer's view.
- 334: The purpose of this task is to communicate the scope and plan for the sprint to the users outside of the core project team. This may include end users, key stakeholders, people external to the project that have interest in information about the project plans and progress.
- 335: The purpose of this task is to communicate the sprint results to the users outside of the core project team. This may include end users, key stakeholders, people external to the project that have interest in information about the progress of the project and accomplishments of the project team.
- 336: The purpose of this task is update communication plan and execute accordingly
- 337: The purpose of this deliverable is to determine the potential issues with the SAP education strategy and solution before they impact the quality of the SAP software deployment.
- 338: The purpose of this task is to capture feedback on both the training strategy and approach, determine issues and propose resolutions for identified issues.
- 339: The purpose of this deliverable is to ensure that key users get a good understanding of the implemented solution.
- 340: In this task the SAP project team prepares for training and enablement of the customer project team to understand the solution and how it is implemented in their area, as well as trains the key users as defined in the statement of work.
- 341: The purpose of this task is to execute knowledge transfer by means of solution walkthrough sessions, system demos on scenario and/or process level, functional reviews etc., etc.
- 342: The purpose of this task is to execute knowledge transfer for the solution delta scope by means of solution walkthrough sessions, system demos on scenario and/or process level, functional reviews etc., etc.
- 343: The purpose of the deliverable End User Training Content Enabled is to ensure availability of end user training material, training environment, logistics infrastructure and skilled instructors.
- 344: This task ensures a consistent appearance of the training materials and documentation by providing the development team with standard templates.
- 345: The purpose of this task is to ensure that the training environment is correctly populated with correct data for training.
- 346: The purpose of this task is to provide a detailed outline of presentations and activities that serve to educate and prepare the trainers scheduled to instruct end-user training classes
- 347: The purpose of this task is to prepare the execution of end-user training by mapping end users to appropriate training courses, developing a training schedule and logistics plan, and inviting end users to courses
- 348: The purpose of this deliverable is to identify and assess other OCM relevant areas. .
- 349: The purpose of this task is to understand the testing strategy, validate its alignment with the project charter, and to identify any potential roadblocks or risks associated with functionality not working as expected. Any deviation from expectations should be communicated to project management and project sponsors. .. Procedure : .. .. Perform Assessment of Testing Strategy and Execution .. Capture Feedback from Testing Team . .
- 350: The purpose of this task is to understand the data migration strategy, validate its alignment with the project charter, and to identify any potential roadblocks or risks associated with data quality or availability not as expected. Any deviation from expectations should be communicated to project management and project sponsors. .. Procedure: .. .. Perform Assessment of Data Migration Strategy and Execution&nbsp; .. Capture Feedback of Data Migration Team . .

| ID | WBS | Task | Duration | Start | Finish | Predecessors | Total slack | Free slack | Resources | Work | Workstream | FLAVORS | Assembly Category |
| --- | --- | --- | --- | --- | --- | --- | --- | --- | --- | --- | --- | --- | --- |
| 351 | 4.21 | **Process #1 - n - Core Configuration and Documentation** | 42d | 2019-07-25 | 2019-09-20 | 348 | 41d | 0d |  | 136h | Application: Design & Configuration | Waterfall ,Agile |  |
| 352 | 4.21.1 | Complete Core Configuration | 2d | 2019-07-25 | 2019-07-26 |  | 41d | 0d | Функциональный консультант | 16h | Application: Design & Configuration | Waterfall ,Agile | Non-core (N) |
| 353 | 4.21.2 | Prepare Unit Test Cases | 3d | 2019-07-29 | 2019-07-31 | 352 | 43d | 2d | Руководитель тестирования / QA (Testing Lead) | 24h | Application: Design & Configuration | Waterfall ,Agile | Non-core (N) |
| 354 | 4.21.3 | Prepare String Test Cases | 2d | 2019-08-01 | 2019-08-02 | 352 | 41d | 0d | Руководитель тестирования / QA (Testing Lead) | 16h | Application: Design & Configuration | Waterfall ,Agile | Non-core (N) |
| 355 | 4.21.4 | Execute Business Process Unit Test | 3d | 2019-08-05 | 2019-08-07 | 353, 354 | 41d | 0d | Функциональный консультант | 24h | Application: Design & Configuration | Waterfall ,Agile | Non-core (N) |
| 356 | 4.21.5 | Perform Defect Resolution for Business Process Unit Test | 2d | 2019-09-19 | 2019-09-20 | 355 | 41d |  | Руководитель тестирования / QA (Testing Lead) | 16h | Application: Design & Configuration | Waterfall ,Agile | Non-core (N) |
| 357 | 4.21.6 | Execute Business Process String Test | 2d | 2019-08-08 | 2019-08-09 | 355 | 71d |  | Функциональный консультант | 16h | Application: Design & Configuration | Waterfall ,Agile | Non-core (N) |
| 358 | 4.21.7 | Perform Defect Resolution for Process String Test | 3d | 2019-08-08 | 2019-08-12 | 355 | 70d |  | Руководитель тестирования / QA (Testing Lead) | 24h | Application: Design & Configuration | Waterfall ,Agile | Non-core (N) |
| 359 | 4.22 | **Enhancement Development - RICEFW Object #1 - n** | 15d | 2019-09-23 | 2019-10-11 | 351 | 39d | 0d |  | 120h | Application: Design & Configuration | Waterfall ,Agile |  |
| 360 | 4.22.1 | Develop RICEFW Object #1 - n | 4d | 2019-09-23 | 2019-09-26 |  | 41d | 2d | Технический консультант | 32h | Application: Design & Configuration | Waterfall ,Agile | Non-core (N) |
| 361 | 4.22.2 | Document RICEFW Object #1 - n | 2d | 2019-09-27 | 2019-09-30 |  | 39d | 0d | Технический консультант | 16h | Application: Design & Configuration | Waterfall ,Agile | Non-core (N) |
| 362 | 4.22.3 | Execute Test Cases - RICEFW Object #1 - n | 3d | 2019-10-01 | 2019-10-03 | 360, 361 | 39d | 0d | Руководитель тестирования / QA (Testing Lead) | 24h | Application: Design & Configuration | Waterfall ,Agile | Non-core (N) |
| 363 | 4.22.4 | Perform Defect Resolution for RICEFW Object(s) Test | 4d | 2019-10-04 | 2019-10-09 | 362 | 39d | 0d | Руководитель тестирования / QA (Testing Lead) | 32h | Application: Design & Configuration | Waterfall ,Agile | Non-core (N) |
| 364 | 4.22.5 | Conduct Final Code Review | 2d | 2019-10-10 | 2019-10-11 | 363 | 39d |  | Технический консультант | 16h | Application: Design & Configuration | Waterfall ,Agile | Non-core (N) |
| 365 | 4.23 | **Business Process Procedure** | 5d | 2019-07-17 | 2019-07-23 |  | 59d | 0d |  | 40h | Application: Design & Configuration | Waterfall ,Agile |  |
| 366 | 4.23.1 | Develop Business Process Procedure Document | 3d | 2019-07-17 | 2019-07-19 |  | 59d | 0d | Технический консультант | 24h | Application: Design & Configuration | Waterfall ,Agile | Non-core (N) |
| 367 | 4.23.2 | Validate and Complete Business Process Procedure Document | 2d | 2019-07-22 | 2019-07-23 | 366 | 59d |  | Функциональный консультант | 16h | Application: Design & Configuration | Waterfall ,Agile | Non-core (N) |
| 368 | 4.24 | **Scenario Test #1 - n** | 38d | 2019-07-24 | 2019-09-13 | 365 | 59d | 20d |  | 160h | Application: Testing | Waterfall ,Agile |  |
| 369 | 4.24.1 | Prepare Test Case - Scenario #1 - n | 4d | 2019-07-24 | 2019-08-05 |  | 59d | 0d | Руководитель тестирования / QA (Testing Lead) | 32h | Application: Testing | Waterfall ,Agile | Non-core (N) |
| 370 | 4.24.2 | Execute Test Case - Scenario #1 - n | 10d | 2019-08-23 | 2019-09-05 | 369 | 59d | 0d | Руководитель тестирования / QA (Testing Lead) | 80h | Application: Testing | Waterfall ,Agile | Non-core (N) |
| 371 | 4.24.3 | Resolve Issues for Scenario #1 - n | 5d | 2019-09-06 | 2019-09-12 | 370 | 59d | 0d | Руководитель тестирования / QA (Testing Lead) | 40h | Application: Testing | Waterfall ,Agile | Non-core (N) |
| 372 | 4.24.4 | Obtain Customer Sign-off for Testing of Scenario #1 - n | 1d | 2019-09-13 | 2019-09-13 | 371 | 59d |  | Руководитель тестирования / QA (Testing Lead) | 8h | Application: Testing | Waterfall ,Agile | Non-core (N) |
| 373 | 4.25 | **Quality Assurance Environment (QAS): SW Setup** | 15d | 2019-07-17 | 2019-08-06 |  | 60d | 0d |  | 56h | Technical Architecture & Infrastructure | Waterfall ,Agile |  |
| 374 | 4.25.1 | Execute Technical Installation of SAP Products for QAS environment | 3d | 2019-07-17 | 2019-07-19 |  | 60d | 0d | Управление изменениями и обучение (Change Management & Training) | 24h | Technical Architecture & Infrastructure | Waterfall ,Agile | Non-core (N) |
| 375 | 4.25.2 | Execute Technical Upgrade of SAP Products for QAS Environment | 3d | 2019-07-22 | 2019-07-24 | 374 | 60d | 0d | Управление изменениями и обучение (Change Management & Training) | 24h | Technical Architecture & Infrastructure | Waterfall ,Agile | Non-core (N) |
| 376 | 4.25.3 | Check and Apply Latest HANA Revision and OS Patches | 1d | 2019-08-06 | 2019-08-06 | 375FF | 65d |  | Руководитель тестирования / QA (Testing Lead) | 8h | Technical Architecture & Infrastructure | Waterfall ,Agile | Non-core (N) |

Notes:
- 351: The purpose of the Core Configuration and Documentation deliverable is to ensure that the configuration is implemented, tested and documented.
- 352: The purpose of this task is to implement the Core Configuration, write valid test cases and to document this in Solution Manager.
- 353: The purpose of this task is to prepare the test cases
- 354: The purpose of this task is to prepare the test cases
- 355: The purpose of this task is to perform unit test for the configuration
- 356: The objective of this task is to resolve any issues identified during the Business Process Unit Test. It is crucial that the issues are re-tested by users that reported them (or designated re-testers) and that they are confirmed.
- 357: The purpose of this task is to perform string test for the configuration
- 358: The objective of this task is to resolve any issues identified during the Process String Test. It is crucial that the issues are re-tested by users that reported them (or designated re-testers) and that they are confirmed.
- 359: The purpose of this deliverable is to develop and test the RICEFW objects. Documentation to be stored in Solution Manager.
- 360: The purpose of this task is to develop the RICEFW object according to the functional specification. For example, in terms of UI / UX development, the purpose of this task is to develop the RICEFW object according to the UI related functional specification that was agreed upon during the Explore stage. From this task until "Perform Defect Resolution for RICEFW Object(s) Test," it is an iterative process - i.e. the development team will program the RICEFW items, then the users will perform the testing and give feedbacks; then the development team will respond to the defects, the users will test more, until the users agree all the RICEFW items properly address the business requirements as per the functional design documents. On a high level, the development includes the following steps: . Fiori App Customization + Theming . Fiori New (Custom) Application Development . Fiori Standard Application Deployment . Fiori Backend Role Configuration . Fiori Frontend Role Configuration . Fiori Security Configuration . Fiori steps from Development to Production
- 361: The purpose of this task is to document the RICEFW object information in a technical specification and define the appropriate test case(s). Documentation is stored in Solution Manager.
- 362: The purpose of this task is to perform unit and string test of the developments. The tester should follow the test scripts and record the actual result. Normally, it is a good idea to attach screen shots to the test steps. Especially, when the actual result is different from the expected result. In such case, the tester is expected to create a defect, link it to the test script and send it to the appropriate team for resolution.
- 363: The objective of this task is to resolve any issues identified during the RICEFW object(s) Test. It is crucial that the issues are re-tested by users that reported them (or designated re-testers) and that they are confirmed.
- 364: The purpose of this task is to perform final code review of the development objects and confirm readiness for transport into QAS.
- 365: The purpose of the Business Process Procedures deliverable is to provide the basis for end-user training, end-user training documentation and test case creation. The procedures may also be used by security to develop roles and authorizations.
- 366: The purpose of this task is to validate and complete Business Process Procedures from the previous phase.
- 367: The purpose of this task is to validate and complete Business Process Procedures from the Validate Phase.
- 368: The purpose of this deliverable is to provide evidence that the scenarios designed can be supported by the solution implemented.
- 369: The purpose of this task is to identify and document applicable test case(s) for the scenario.
- 370: The purpose of this deliverable is to provide evidence that the scenarios designed can be supported by the solution implemented.
- 371: The objective of this task is to resolve any issues identified during the scenario testing. It is crucial that the issues are re-tested by users that reported them (or designated re-testers) and that they are confirmed.
- 372: The purpose of this task is to obtain customer approval (sign-off)
- 373: The purpose of the quality assurance environment (SW setup) is to install a viable, correctly configured technical QA environment that is available for use by the project team to perform QA testing.
- 374: The purpose of this task is to install SAP components needed for the realization of project scope.
- 375: The purpose of this task is to upgrade SAP components needed for the realization of project scope.
- 376: The purpose of this task is to check the version of the HANA revision and apply the latest revision patch, as well as apply any needed OS patches. Since HANA revisions patches are released on a frequent basis, it is very likely that multiple revisions have been released since the start of development and initial system setup. It is strongly advised to apply latest revisions prior to the start of QA testing to 1) apply any required bug fixes; 2) ensure we're not falling too far behind current patch levels; and 3) perform any regression testing to ensure the developed solution still behaves as expected.

| ID | WBS | Task | Duration | Start | Finish | Predecessors | Total slack | Free slack | Resources | Work | Workstream | FLAVORS | Assembly Category |
| --- | --- | --- | --- | --- | --- | --- | --- | --- | --- | --- | --- | --- | --- |
| 377 | 4.26 | **Quality Assurance Environment (QAS): Roles and Transport** | 12d | 2019-08-07 | 2019-08-22 | 373 | 65d | 0d |  | 72h | Technical Architecture & Infrastructure | Waterfall ,Agile |  |
| 378 | 4.26.1 | Import Configuration and Development Objects to QAS Environment | 3d | 2019-08-07 | 2019-08-14 |  | 65d | 0d | Руководитель тестирования / QA (Testing Lead) | 24h | Technical Architecture & Infrastructure | Waterfall ,Agile | Non-core (N) |
| 379 | 4.26.2 | Set up Role Assignment / Authorizations / Test Users in QAS | 2d | 2019-08-15 | 2019-08-16 | 378 | 69d |  | Руководитель тестирования / QA (Testing Lead) | 16h | Technical Architecture & Infrastructure | Waterfall ,Agile | Non-core (N) |
| 380 | 4.26.3 | Import of System Fast-track Configuration into QAS | 2d | 2019-08-19 | 2019-08-20 | 378 | 67d |  | Руководитель тестирования / QA (Testing Lead) | 16h | Technical Architecture & Infrastructure | Waterfall ,Agile | Non-core (N) |
| 381 | 4.26.4 | Perform Manual Configuration Settings in QAS | 2d | 2019-08-21 | 2019-08-22 | 378 | 65d |  | Руководитель тестирования / QA (Testing Lead) | 16h | Technical Architecture & Infrastructure | Waterfall ,Agile | Non-core (N) |
| 382 | 4.27 | **Quality Assurance Environment (QAS): Data Load** | 10d | 2019-08-23 | 2019-09-05 | 377 | 65d | 26d |  | 80h | System & Data Migration | Waterfall ,Agile |  |
| 383 | 4.27.1 | Prepare and Load Master Data into QAS Environment for SCOPE OPTION | 4d | 2019-08-23 | 2019-08-28 |  | 65d | 0d | Специалист по миграции данных (Data Migration Specialist) | 32h | System & Data Migration | Waterfall ,Agile | Non-core (N) |
| 384 | 4.27.2 | Prepare and Load Transactional Data into QAS for SCOPE OPTION | 6d | 2019-08-29 | 2019-09-05 | 383 | 65d |  | Специалист по миграции данных (Data Migration Specialist) | 48h | System & Data Migration | Waterfall ,Agile | Non-core (N) |
| 385 | 4.28 | **Sprint Closing** | 9d | 2019-10-14 | 2019-10-24 | 359, 368, 382, 343 | 39d | 0d |  | 32h | Project Management | Agile |  |
| 386 | 4.28.1 | Conduct the Sprint Review Meeting | 2d | 2019-10-14 | 2019-10-15 |  | 39d | 0d | Офис управления проектом / PMO (PMO) | 16h | Project Management | Agile | None (NONE) |
| 387 | 4.28.2 | Sign-off Sprint Results | 1d | 2019-10-16 | 2019-10-16 | 386 | 45d |  | Руководитель проекта (PM) | 8h | Project Management | Agile | None (NONE) |
| 388 | 4.28.3 | Conduct Sprint Retrospective | 1d | 2019-10-24 | 2019-10-24 | 386 | 39d |  | Руководитель проекта (PM) | 8h | Project Management | Agile | None (NONE) |
| 389 | 4.29 | **Value Audits** | 7d | 2019-11-15 | 2019-11-25 | 385 | 49d |  |  | 56h | Application: Solution Adoption | Waterfall ,Agile |  |
| 390 | 4.29.1 | Perform Value Audit | 7d | 2019-11-15 | 2019-11-25 |  | 49d |  | Бизнес-аналитик (BA) | 56h | Application: Solution Adoption | Waterfall ,Agile | None (NONE) |
| 391 | 4.30 | **Integration Implementation** | 8d | 2019-11-12 | 2019-11-21 | 385 | 51d |  |  | 64h | Application: Integration | Waterfall ,Agile |  |
| 392 | 4.30.1 | Implement Integration Design | 5d | 2019-11-12 | 2019-11-18 |  | 51d | 0d | Специалист по интеграциям (Integration Specialist) | 40h | Application: Integration | Waterfall ,Agile |  |
| 393 | 4.30.2 | Validate Integration Implementation | 3d | 2019-11-19 | 2019-11-21 | 392 | 51d |  | Специалист по интеграциям (Integration Specialist) | 24h | Application: Integration | Waterfall ,Agile |  |
| 394 | 4.32 | **Preliminary Cutover plan** | 13d | 2019-10-25 | 2019-11-12 | 385 | 58d |  |  | 128h | System & Data Migration | Waterfall ,Agile |  |
| 395 | 4.32.1 | Conduct Organizational Change Management Readiness Check | 3d | 2019-10-25 | 2019-10-29 |  | 60d | 2d | Технический руководитель / Архитектор (Technical Lead / Basis) | 24h | System & Data Migration | Waterfall ,Agile | Non-core (N) |
| 396 | 4.32.2 | Conduct Production Support Readiness Check | 2d | 2019-10-30 | 2019-10-31 |  | 58d | 0d | Технический руководитель / Архитектор (Technical Lead / Basis) | 16h | System & Data Migration | Waterfall ,Agile | Non-core (N) |
| 397 | 4.32.3 | Conduct Master Data Process Governance Readiness Check | 3d | 2019-10-25 | 2019-10-29 |  | 60d | 2d | Специалист по миграции данных (Data Migration Specialist) | 24h | System & Data Migration | Waterfall ,Agile | Non-core (N) |
| 398 | 4.32.4 | Prepare Preliminary Cutover plan | 4d | 2019-11-01 | 2019-11-06 | 395, 396, 397 | 58d | 0d | Офис управления проектом / PMO (PMO) | 32h | System & Data Migration | Waterfall ,Agile | Non-core (N) |
| 399 | 4.32.5 | Review Preliminary Cutover Plan with customer | 2d | 2019-11-07 | 2019-11-08 | 398 | 58d | 0d | Офис управления проектом / PMO (PMO) | 16h | System & Data Migration | Waterfall ,Agile | Non-core (N) |
| 400 | 4.32.6 | Refine Preliminary Cutover Plan | 2d | 2019-11-11 | 2019-11-12 | 399 | 58d |  | Координатор проекта / Администратор проекта (PC) | 16h | System & Data Migration | Waterfall ,Agile | Non-core (N) |

Notes:
- 377: The purpose of this.deliverable is to set-up, document and execute the administrative procedure for Roles and Authorizations in QA environment.
- 378: The purpose of this task is to build the quality assurance (QA) environment with changes that have been unit-tested and released from the development environment.
- 379: The purpose of this task is to set up users in the Quality Assurance environment.
- 380: The objective of this task it to perform import of Fast-Track configuration into the Quality Assurance environment.
- 381: The objective of this task is to perform any remaining manual configuration changes in the Quality Assurance environment.
- 382: The purpose of the quality assurance environment (Data load setup) is to ensure all the data to used by the project team is available for QA testing.
- 383: The purpose of this task is to prepare master data required for all business processes in QAS.
- 384: The purpose of this task is to prepare transactional data for upload into QAS
- 385: The purpose of the Sprint Closing&nbsp; deliverable is to formally close the sprint by conducting the sprint review meeting with key users, product owner groups, and key stakeholders to formally sign-off the results and conduct the sprint retrospective. . . Prerequisite: .. .. Sprint Planning . .. Procedure: .Formally close the sprint by conducting the sprint review meeting with key members of the project. .. .. Conduct Sprint Review Meeting .. Sign-off Sprint Results .. Conduct the Sprint Retrospective .
- 386: The purpose of the Conduct the Sprint Review Meeting task&nbsp;is to demonstrate the results of the sprint to the product owner teams, key users, and key project stakeholders. The results of the demo is either the acceptance of backlog item, or in cases when the feature is not accepted, the user story is amended by the product owner team, prioritized, and remains in the product backlog ready for next sprint planning meeting. The demo in the sprint review meeting serves as an input to formal sign-off for the sprint. .&nbsp;
- 387: The purpose of the Sign-off Sprint Results&nbsp; task is to obtain formal acceptance and sign-off the sprint results following the sprint review meeting. The product owner team is the party that provides the sign-off to the project team. In case some features are not accepted, they are brought back into the product backlog as requirement, properly prioritized and included in planning for next sprint. .&nbsp;
- 388: The purpose of the Conduct the Sprint Retrospective task is to conduct the retrospective meeting with the SCRUM team to identify potential improvements of the SCRUM process. The objective of this task is to serve as continuous improvement mechanism for the team to adjust to the changing project environment and needs. The team will select one or two key improvements to implement in the next iteration and handle them as user stories which are added to the product backlog, prioritized, and tracked along with other user stories. .&nbsp;
- 389: The purpose of the value audit deliverable during the realization phase is to monitor and control the implementation of key process changes and value enablers, as well as to ensure the design and implementation of the Value Dashboard for KPI tracking purposes.
- 390: The purpose of this task is to perform value audit according to defined Value Dashboard, and provide mitigation strategies for identified risks that could jeopardize the value identified during the business case development.
- 391: In the activity integration implementation, the customer specific integration design from the Explore phase is implemented. .. Requirements and Constraints .. This activity is recommended for all scenarios. .. Procedure .. This activity should be executed in close cooperation with the&nbsp; Configuration&nbsp; and&nbsp; Product Enhancement&nbsp; activities of the&nbsp; Application: Design &amp; Configuration &nbsp;work stream. .. The activity is structured into two tasks: .. .. Implement the integration design .. Validate integration implementation . .. Results .. As the result of the integration implementation the integration design has been fully implemented and validated.
- 392: The integration design documents the planned concept in order to realize the integration architecture requested by the customer. .. This may require the following types of activities: .. .. Configure and customize SAP standard integration .. Implement existing best practice scoping items for specific integration scenarios .. Develop new or enhance existing development objects (i.e. interfaces) as defined in the integration design . .. Prerequisites .. This activity is recommended for all scenarios. .. The integration activities have been fully defined and documented (i.e. write technical design/WRICEF). See activity&nbsp; Integration Design &nbsp;in the Explore phase. All required activities have been included in the project schedule. .. Procedure .. .. Realize the integration activities as planned .. Unit testing of implemented integration activities .. Document the results of the integration activities implementation . .. Results .. As the result of the integration implementation all the planned and defined integration activities are initiated and in realization. .. How SAP Can Support .. SAP supports this activity with the &ldquo;WRICEF Developments&rdquo; service as part of SAP Professional Services.
- 393: The objective of integration validation is to ensure technical readiness of the entire solution for Go.Live. It includes analysis of critical business processes and interfaces validating scalability, performance, data consistency and exception management. A comprehensive status (at least on monthly basis) of technical go-live readiness for core business processes (integration validation matrix) is recommended. .. This topic is already handled in detail in this road map in the activity&nbsp; Integration Validation . .. Prerequisites .. See activity&nbsp; Integration Validation &nbsp;in the Realize and Deploy phase. .. Procedure .. See activity&nbsp; Integration Validation &nbsp;in the Realize and Deploy phase. .. Results .. As the result of this activity, integration validation activities have been planned, documented and initiated. They will continue across the Deploy phase. .. How SAP Can Support .. SAP supports this activity with the&nbsp; &ldquo;Integration Validation&rdquo; &nbsp;service component as part of the&nbsp; &ldquo;Safeguarding the Digital Transformation&rdquo;&nbsp; service.
- 394: The purpose of the preliminary cutover plan deliverable is to document the strategy, scope and timelines for moving from the as-is solution to the to-be solution and the hyper care period immediately following go-live.
- 395: The purpose of this task is to assess to what level the organization is prepared for the cut over/transition
- 396: This purpose of this task is to check to what extent the support organization is operational and ready for cut over
- 397: This task checks that proper governance of master data quality is defined.
- 398: The purpose of the preliminary cutover plan task is to document the strategy, scope and timelines for moving from the as-is solution to the to-be solution and the hyper care period immediately following go-live. This includes documenting activities such as the transfer of data from the legacy systems to the SAP software production system, setting up and initializing the production system, closing the legacy systems, manually entering certain data in the new system, setting up and verifying interface connections, importing transports and all manual configurations.
- 399: The purpose of the review of the preliminary cutover plan is to validate the plan for completeness, dependencies, timing and other constraints. At the end of the review the project team will have understanding of necessary adjustments to the preliminary cutover plan.
- 400: The purpose of this task is to refine the preliminary cutover plan based on information the project team learned in the cutover plan review with customer.

| ID | WBS | Task | Duration | Start | Finish | Predecessors | Total slack | Free slack | Resources | Work | Workstream | FLAVORS | Assembly Category |
| --- | --- | --- | --- | --- | --- | --- | --- | --- | --- | --- | --- | --- | --- |
| 401 | 4.33 | **Approved Integration Test** | 12d | 2019-10-25 | 2019-11-11 | 385 | 39d | 0d |  | 96h | Application: Testing | Waterfall ,Agile |  |
| 402 | 4.33.1 | Prepare Integration Test Plan, Including Test of Roles and Authorizations | 3d | 2019-10-25 | 2019-10-29 |  | 39d | 0d | Специалист по интеграциям (Integration Specialist) | 24h | Application: Testing | Waterfall ,Agile | Non-core (N) |
| 403 | 4.33.2 | Prepare and Document Integration Test Case #1 - n | 2d | 2019-10-30 | 2019-10-31 | 402 | 39d | 0d | Специалист по интеграциям (Integration Specialist) | 16h | Application: Testing | Waterfall ,Agile | Non-core (N) |
| 404 | 4.33.3 | Execute Integration Test Case #1 - n | 4d | 2019-11-01 | 2019-11-06 | 403 | 39d | 0d | Специалист по интеграциям (Integration Specialist) | 32h | Application: Testing | Waterfall ,Agile | Non-core (N) |
| 405 | 4.33.4 | Perform Defect Resolution for Integration Test | 2d | 2019-11-07 | 2019-11-08 | 404 | 39d | 0d | Специалист по интеграциям (Integration Specialist) | 16h | Application: Testing | Waterfall ,Agile | Non-core (N) |
| 406 | 4.33.5 | Obtain Integration Test Results Sign-off | 1d | 2019-11-11 | 2019-11-11 | 405 | 39d |  | Специалист по интеграциям (Integration Specialist) | 8h | Application: Testing | Waterfall ,Agile | Non-core (N) |
| 407 | 4.34 | **Legacy Data Migration** | 15d | 2019-11-12 | 2019-12-02 | 401 | 39d | 0d |  | 120h | System & Data Migration | Waterfall ,Agile |  |
| 408 | 4.34.1 | Develop Data Migration Program Units | 3d | 2019-11-12 | 2019-11-14 |  | 39d | 0d | Специалист по миграции данных (Data Migration Specialist) | 24h | System & Data Migration | Waterfall ,Agile | None (NONE) |
| 409 | 4.34.2 | Execute and validate Manual Data Migration | 2d | 2019-11-15 | 2019-11-18 | 408 | 39d | 0d | Специалист по миграции данных (Data Migration Specialist) | 16h | System & Data Migration | Waterfall ,Agile | None (NONE) |
| 410 | 4.34.3 | Obtain Data Quality Reports | 4d | 2019-11-19 | 2019-11-22 | 409 | 39d | 0d | Специалист по миграции данных (Data Migration Specialist) | 32h | System & Data Migration | Waterfall ,Agile | None (NONE) |
| 411 | 4.34.4 | Perform SAP Target Load Test | 2d | 2019-11-25 | 2019-11-26 | 410 | 39d | 0d | Специалист по миграции данных (Data Migration Specialist) | 16h | System & Data Migration | Waterfall ,Agile | None (NONE) |
| 412 | 4.34.5 | Obtain Data Migration Test Results | 3d | 2019-11-27 | 2019-11-29 | 411 | 39d | 0d | Специалист по миграции данных (Data Migration Specialist) | 24h | System & Data Migration | Waterfall ,Agile | None (NONE) |
| 413 | 4.34.6 | Conduct Final Data Quality Assessment | 1d | 2019-12-02 | 2019-12-02 | 412 | 39d |  | Специалист по миграции данных (Data Migration Specialist) | 8h | System & Data Migration | Waterfall ,Agile | None (NONE) |
| 414 | 4.35 | **Approved User Acceptance Test** | 12d | 2019-11-19 | 2019-12-04 | 401 | 42d |  |  | 96h | Application: Testing | Waterfall ,Agile |  |
| 415 | 4.35.1 | Prepare UA Test Plan | 3d | 2019-11-19 | 2019-11-21 |  | 42d | 0d | Руководитель тестирования / QA (Testing Lead) | 24h | Application: Testing | Waterfall ,Agile | Non-core (N) |
| 416 | 4.35.2 | Prepare and Document User Acceptance Test Cases | 2d | 2019-11-22 | 2019-11-25 | 415 | 42d | 0d | Руководитель тестирования / QA (Testing Lead) | 16h | Application: Testing | Waterfall ,Agile | Non-core (N) |
| 417 | 4.35.3 | Execute UA Test Plan | 4d | 2019-11-26 | 2019-11-29 | 416 | 42d | 0d | Руководитель тестирования / QA (Testing Lead) | 32h | Application: Testing | Waterfall ,Agile | Non-core (N) |
| 418 | 4.35.4 | Perform UA Defect Resolution | 2d | 2019-12-02 | 2019-12-03 | 417 | 42d | 0d | Руководитель тестирования / QA (Testing Lead) | 16h | Application: Testing | Waterfall ,Agile | Non-core (N) |
| 419 | 4.35.5 | Obtain UA Test Results Sign-off | 1d | 2019-12-04 | 2019-12-04 | 418 | 42d |  | Руководитель тестирования / QA (Testing Lead) | 8h | Application: Testing | Waterfall ,Agile | Non-core (N) |
| 420 | 4.36 | **Production Environment (PRD)** | 24d | 2019-07-22 | 2019-08-22 |  | 69d | 0d |  | 192h | Technical Architecture & Infrastructure | Waterfall ,Agile |  |
| 421 | 4.36.1 | Execute Technical Installation of SAP Products for PRD | 5d | 2019-07-22 | 2019-07-26 |  | 69d | 0d | Технический консультант | 40h | Technical Architecture & Infrastructure | Waterfall ,Agile | Non-core (N) |
| 422 | 4.36.2 | Execute Technical Upgrade of SAP Products for PRD | 3d | 2019-07-29 | 2019-07-31 | 421 | 69d | 0d | Технический консультант | 24h | Technical Architecture & Infrastructure | Waterfall ,Agile | Non-core (N) |
| 423 | 4.36.3 | Import Configuration and Development Objects to PRD | 3d | 2019-08-01 | 2019-08-05 | 422 | 69d | 0d | Технический консультант | 24h | Technical Architecture & Infrastructure | Waterfall ,Agile | Non-core (N) |
| 424 | 4.36.4 | Set Up Role Assignment / Authorizations / Test Users in PRD | 3d | 2019-08-06 | 2019-08-08 | 423 | 69d | 0d | Технический руководитель / Архитектор (Technical Lead / Basis) | 24h | Technical Architecture & Infrastructure | Waterfall ,Agile | Non-core (N) |
| 425 | 4.36.5 | Populate PRD with Test Master Data | 5d | 2019-08-09 | 2019-08-15 | 424 | 69d | 0d | Специалист по миграции данных (Data Migration Specialist) | 40h | Technical Architecture & Infrastructure | Waterfall ,Agile | Non-core (N) |
| 426 | 4.36.6 | Prepare and Load Master Data into PRD | 3d | 2019-08-16 | 2019-08-20 | 425 | 69d | 0d | Специалист по миграции данных (Data Migration Specialist) | 24h | Technical Architecture & Infrastructure | Waterfall ,Agile | Non-core (N) |
| 427 | 4.36.7 | Perform Manual Configuration Settings in PRD | 2d | 2019-08-21 | 2019-08-22 | 426 | 69d |  | Технический консультант | 16h | Technical Architecture & Infrastructure | Waterfall ,Agile | Non-core (N) |

Notes:
- 401: The purpose of Approved Integration Test is to ensure functional correctness. It test the integration of SAP solutions with non-SAP applications and interfaces and can be executed in an iterative manner.
- 402: The purpose of this task is to define and document integration test cases, end-to-end customer business process scenarios, according to the test plan. Test plans and test case documentation is stored in Solution Manager.
- 403: The purpose of this task is to document the integration test case outlined in the integration test plan
- 404: The objective of this task is to perform the Integration test according to previously defined plan. During the test all issues must be logged and documented in the system for traceability purpose.
- 405: The objective of this task is to resolve any issues identified during the Integration Test. It is crucial that the issues are re-tested by users that reported them (or designated re-testers) and that they are confirmed.
- 406: The purpose of this task is to obtain customer approval (sign-off) of the integration test.
- 407: The purpose of this deliverable is to develop, implement, and test the data migration programs and processes defined in the Explore phase. This activity consists of iterative development and testing cycles focused on the analysis of data, refinement of business rules, and deployment of migration programs and processes designed to move, cleanse, transform, and enrich legacy data required to support the various test cycles and ultimately the production cutover. The test cycles enable the migration team to improve data quality to an acceptable production level, develop a detailed cutover sequencing plan, and exercise data reconciliation and validation processes required to support the production cutover. .. This involves populating the data migration templates, uploading the data into the staging area of the migration tool, validating the data, simulating the load and executing the data migration.
- 408: The purpose of this task is develop the specific architecture, programs, and processes that support the extraction, validation, harmonization, enrichment, and cleansing of the legacy data.
- 409: The purpose of this task is to execute and validate the manual conversion as described in the manual data migration approach
- 410: The purpose of this task is to visualize the data quality metrics defined in the data quality plan
- 411: The purpose of this task is to load the cleansed legacy data into the SAP software target structures using a standard SAP load utility such as LSMW.
- 412: The purpose of this task is to obtain the results of the various test cycles so the team can monitor the accuracy and efficiency of the data migration solution.
- 413: The purpose of this task is to provide one final assessment at the end of the realization phase to report on the quality of the converted legacy data
- 414: The purpose of this deliverable is to execute the User acceptance test (UAT). This is the last test cycle of an SAP solution implementation and is an essential part of gaining end-user acceptance of the software system.
- 415: The purpose of this task is to define and document UAT test cases according to the test plan. Test plans and test case documentation is stored in Solution Manager
- 416: The purpose of this task is to document the integration test case outlined in the UAT test plan
- 417: The objective of this task is to perform the End User Acceptance test according to previously defined plan. During the test all issues must be logged and documented in the system for traceability purpose.
- 418: The objective of this task is to resolve any issues identified during the User Acceptance Test. It is crucial that the issues are re-tested by users that reported them (or designated re-testers) and that they are confirmed.
- 419: The purpose of this task is to execute the testing, document the results and obtain customer approval (sign-off)
- 420: The purpose of the production infrastructure and environment design and setup deliverable is to install a viable, correctly configured technical production environment to support productive operations of the delivered solution.
- 421: The purpose of this task is to install and set up the production environment.
- 422: The purpose of this task is to upgrade the production environment.
- 423: The purpose of this task is to build the production (PRD) environment with changes that have been tested and released from the quality assurance (QA) environment.
- 424: The purpose of this task is to set up users in the production environment.
- 425: The purpose of this task is to ensure that appropriate master data is available for testing in the production environment (system test).
- 426: The purpose of this task is to prepare master data required for all business processes in PRD.
- 427: The purpose of this task is to perform any remaining manual configuration changes in the production environment.

| ID | WBS | Task | Duration | Start | Finish | Predecessors | Total slack | Free slack | Resources | Work | Workstream | FLAVORS | Assembly Category |
| --- | --- | --- | --- | --- | --- | --- | --- | --- | --- | --- | --- | --- | --- |
| 428 | 4.37 | **Failover Environment** | 23d | 2019-08-23 | 2019-09-24 | 420 | 69d | 22d |  | 72h | Technical Architecture & Infrastructure | Waterfall ,Agile |  |
| 429 | 4.37.1 | Prepare Failover Environment Design and Plan | 3d | 2019-08-23 | 2019-08-27 |  | 69d | 0d | Технический консультант | 24h | Technical Architecture & Infrastructure | Waterfall ,Agile | None (NONE) |
| 430 | 4.37.2 | Set-up Failover Environment and Execute Identified Scenarios | 4d | 2019-08-28 | 2019-09-02 | 429 | 69d | 0d | Технический консультант | 32h | Technical Architecture & Infrastructure | Waterfall ,Agile | None (NONE) |
| 431 | 4.37.3 | Obtain Failover Environment Test Results | 2d | 2019-09-23 | 2019-09-24 | 430 | 69d |  | Руководитель тестирования / QA (Testing Lead) | 16h | Technical Architecture & Infrastructure | Waterfall ,Agile | None (NONE) |
| 432 | 4.38 | **System and Performance Test** | 17d | 2019-10-25 | 2019-11-18 | 385, 428 | 40d | 0d |  | 136h | Application: Testing | Waterfall ,Agile |  |
| 433 | 4.38.1 | Prepare System Test Plan | 3d | 2019-10-25 | 2019-10-29 |  | 47d | 7d | Руководитель тестирования / QA (Testing Lead) | 24h | Application: Testing | Waterfall ,Agile | Non-core (N) |
| 434 | 4.38.2 | Prepare Performance Test Plan | 2d | 2019-11-04 | 2019-11-05 |  | 42d | 2d | Руководитель тестирования / QA (Testing Lead) | 16h | Application: Testing | Waterfall ,Agile | Non-core (N) |
| 435 | 4.38.3 | Prepare System Test Cases | 3d | 2019-10-30 | 2019-11-01 |  | 44d | 4d | Руководитель тестирования / QA (Testing Lead) | 24h | Application: Testing | Waterfall ,Agile | Non-core (N) |
| 436 | 4.38.4 | Prepare Performance Test Cases | 2d | 2019-11-06 | 2019-11-07 |  | 40d | 0d | Руководитель тестирования / QA (Testing Lead) | 16h | Application: Testing | Waterfall ,Agile | Non-core (N) |
| 437 | 4.38.5 | Execute Performance Tests | 4d | 2019-11-08 | 2019-11-13 | 433, 434, 435, 436 | 40d | 0d | Руководитель тестирования / QA (Testing Lead) | 32h | Application: Testing | Waterfall ,Agile | Non-core (N) |
| 438 | 4.38.6 | Perform Performance Test Defect Resolution | 2d | 2019-11-14 | 2019-11-15 | 437 | 40d | 0d | Руководитель тестирования / QA (Testing Lead) | 16h | Application: Testing | Waterfall ,Agile | Non-core (N) |
| 439 | 4.38.7 | Obtain Test Results Sign-off | 1d | 2019-11-18 | 2019-11-18 | 438 | 40d |  | Руководитель тестирования / QA (Testing Lead) | 8h | Application: Testing | Waterfall ,Agile | Non-core (N) |
| 440 | 4.39 | **SAP Going Live Check** | 10d | 2019-11-01 | 2019-11-14 |  | 56d |  |  | 80h | Technical Architecture & Infrastructure | Waterfall ,Agile |  |
| 441 | 4.39.1 | Perform SAP Going Live Check - Analysis Session | 10d | 2019-11-01 | 2019-11-14 | 385 | 56d |  | Управление изменениями и обучение (Change Management & Training) | 80h | Technical Architecture & Infrastructure | Waterfall ,Agile | Non-core (N) |
| 442 | 4.40 | **System User Roles and Authorization Administration** | 2d | 2019-11-19 | 2019-11-20 | 432 | 47d | 8d |  | 16h | Transition to Operations | Waterfall ,Agile |  |
| 443 | 4.40.1 | Set up administrative procedures for Roles and Authorizations | 2d | 2019-11-19 | 2019-11-20 |  | 47d |  | Технический руководитель / Архитектор (Technical Lead / Basis) | 16h | Transition to Operations | Waterfall ,Agile | Non-core (N) |
| 444 | 4.41 | **Technical Operations and Handover Plan** | 9d | 2019-11-19 | 2019-11-29 | 432 | 40d | 1d |  | 72h | Transition to Operations | Waterfall ,Agile |  |
| 445 | 4.41.1 | Validate Support Center and Help Desk Staffing Strategy | 2d | 2019-11-19 | 2019-11-20 |  | 40d | 0d | Технический консультант | 16h | Transition to Operations | Waterfall ,Agile | Non-core (N) |
| 446 | 4.41.2 | Establish Support Processes | 3d | 2019-11-21 | 2019-11-25 | 445 | 40d | 0d | Технический консультант | 24h | Transition to Operations | Waterfall ,Agile | Non-core (N) |
| 447 | 4.41.3 | Set-up Business Process Monitoring | 4d | 2019-11-26 | 2019-11-29 | 446 | 40d |  | Технический консультант | 32h | Transition to Operations | Waterfall ,Agile | Non-core (N) |
| 448 | 4.42 | **Phase Closure and Sign-Off Phase Deliverables** | 5d | 2019-12-03 | 2019-12-09 | 442, 444, 407, 411 | 39d |  |  | 40h | Project Management | Waterfall ,Agile |  |
| 449 | 4.42.1 | Conduct Project Quality Gate | 3d | 2019-12-03 | 2019-12-05 |  | 39d | 0d | Технический руководитель / Архитектор (Technical Lead / Basis) | 24h | Project Management | Waterfall ,Agile |  |
| 450 | 4.42.2 | Obtain Customer Sign-Off for Phase Completion | 1d | 2019-12-06 | 2019-12-06 | 449 | 39d | 0d | Технический руководитель / Архитектор (Technical Lead / Basis) | 8h | Project Management | Waterfall ,Agile |  |
| 451 | 4.42.3 | Close Explore Phase | 1d | 2019-12-09 | 2019-12-09 | 450 | 39d |  | Руководитель проекта (PM) | 8h | Project Management | Waterfall ,Agile |  |

Notes:
- 428: The purpose of this deliverable is to execute the setup of Availability and Continuity Management (ACM)
- 429: The purpose of this task is to define the approach and plan for Availability and Continuity Management.
- 430: The purpose of this task is to set and execute the identified failure scenarios.
- 431: The purpose of this task is to obtain the results from the failover scenario execution and determine the appropriate mitigation actions for the test findings.
- 432: The purpose of planned Performance and System Test is to checks the entire system, consisting of databases, applications servers, front ends, printers etc. The performance test measures the throughput and response times of the system.
- 433: The task defines and documents the identified test cases related to system and performance test. Outcome is documented in a test plan.
- 434: The task defines and documents the identified test cases related to system and performance test. Outcome is documented in a test plan.
- 435: The purpose of this task is to document the test case outlined in the test plan
- 436: The purpose of this task is to document the test case outlined in the test plan
- 437: The purpose of this task is to execute the performance tests and present the findings for these tests. The outcome should be formally approved by the customer.
- 438: The objective of this task is to resolve issues identified during the performance or load testing. Upon resolution the issues need to be re-tested and confirmed by responsible testers.
- 439: The purpose of this task is to obtain customer approval (sign-off)
- 440: The purpose of this service is to support the start of production of an SAP Solution. During this service, SAP service engineers check the solution for potential risks and give recommendations ensuring optimal performance and system availability for core business processes.
- 441: The purpose of this task is to perform the first session of the SAP GoingLive Check. The service consiste of two sessions - Analysis and Verification, and includes:- Verification of the technical capabilities of the production environment (sizing plausibility)- Check of system configuration (database, system components) - Check of version and release compatibility of all involved SAP components and Plug-Ins
- 442: The purpose of the System User Roles and Authorization Administration deliverable is to establish an effective operation processes for security
- 443: The purpose of this task is to set-up, document and execute the administrative procedure for Roles and Authorizations.
- 444: The purpose of the technical operations and handover strategy deliverable is to update and refine two deliverables from the previous phase, and prepare a strategy to hand off operations of the solution landscape to the post-production support organization.
- 445: The purpose of this task is to ensure that proper staffing(people and competence) is in place for the support org/team
- 446: The purpose of this task is to ensure that adequate support processes are in place for the Go Live Support phase and beyond.
- 447: This task describes the considerations that are required to recognize and solve critical situations during business process operation.
- 448: The purpose of this deliverable is to formally close the phase and conduct deliverable sign-off. During this time the project team will: Ensure that all required deliverables from thisphase and the project are complete and accurate, and close any outstandingissue Conduct formal Project Quality Gate Identify lessons learned during the phase Capture customer feedback and potential Customer References. .. Procedure: .. .. Conduct Project Quality Gate .. Obtain Customer Sign-Off for Phase Completion .. Close Explore Phase . .
- 449: The purpose of this task is to conduct regular quality checks at defined or critical stages of the project lifecycle to assess the health of the project. The execution of the Quality Gates is a joint responsibility of the SAP TQM and the customer Project Manager (system integrator PM will be involved in these activities as necessary). The scope and approach for the quality gate execution follows the plans defined in the Quality Management Plan that is defined during the Prepare phase (and agreed/signed-off by the customer). &nbsp; The objectives of the Project Quality Gate are to: assure that all key deliverables and actions of the gate have been completed in compliance with recommended practices and to the customer&rsquo;s satisfaction enable project management to continuously communicate the process and build quality directly into the project provide a tool to effectively manage project expectations and monitor customer satisfaction The deliverables assessed at each quality gate will be performed using the quality gate checklist and with the Quality Gates functionality in SAP Solution Manager. The Quality Gates are managed in SAP Solution Manager tool by the SAP TQM. All important documents and Quality Gate checklists are stored there. The execution of the quality gate includes the review of the project status, the confirmation that major deliverables are completed, and the formal sign-off of the quality gates based on the defined completion criteria.The main purpose of managing the quality gates is to ensure quality within the project. Process to execute the quality gate: The customer Project Manager and the SAP TQM are accountable for execution and completion of Quality Gate Process begins with a preparation call to establish assessment meeting attendees and plan the quality gate scorecard. During the assessment meeting, the participants include the customer Project Manager, SAP TQM, Project Team Leads, Program &nbsp;Manager as applicable and representation from others on Q-Gate invitation(Partner Project Manager, GD Project Manager, Project PMO&hellip;) The customer Project Manager presents overall project status, and Team Leads communicate the status of key deliverables. The TQM and the customer Project Manager review deliverable content and quality, and verify completeness and accuracy. Customer expectations and satisfaction results are gathered. Key stakeholders sign-off the Quality Gate Scorecard with potential follow-up action items to take corrective actions identified during the review. Upon completion of the Q-Gate the transition to next phase is confirmed, follow-up action items may be defined. In case the Q-Gate is not passed the transition to next phase is on hold and action items have to be defined for follow-up. .
- 450: The purpose of this task is to conduct formal closure of the project phase and sign-off the deliverables completed during the phase. The main goal of this process is to: Ensure that all required deliverables from this phase and the project are complete and accurate, and close any outstanding issues Identify lessons learned during the phase to prepare for formal project closure Capture customer feedback and potential customer references &nbsp; When sign-off is obtained, the project can proceed to the next phase. Use the attached sign-off sheet for this task. .
- 451: Procedures: .. .. Obtain Sign-off from Customer .. Conduct Deployment Readiness Quality Gate . .

| ID | WBS | Task | Duration | Start | Finish | Predecessors | Total slack | Free slack | Resources | Work | Workstream | FLAVORS | Assembly Category |
| --- | --- | --- | --- | --- | --- | --- | --- | --- | --- | --- | --- | --- | --- |
| 452 | 5 | **Deploy** | 91d | 2019-12-10 | 2020-04-14 | 271 | 19d | 0d |  | 1928h |  |  |  |
| 453 | 5.1 | **Execution/Monitoring of Project** | 71d | 2019-12-10 | 2020-03-17 |  | 39d |  |  | 760h | Project Management | Waterfall ,Agile |  |
| 454 | 5.1.1 | Direct and Manage Project Execution | 10d | 2019-12-10 | 2019-12-23 |  | 39d | 0d | Руководитель проекта (PM) | 80h | Project Management | Waterfall ,Agile |  |
| 455 | 5.1.2 | Update Project Management Documents | 15d | 2019-12-24 | 2020-01-13 | 454 | 39d | 0d | Технический консультант | 120h | Project Management | Waterfall ,Agile |  |
| 456 | 5.1.3 | Manage Project Issues, Risks, and Changes | 20d | 2020-01-14 | 2020-03-17 | 455 | 39d |  | Руководитель проекта (PM) | 160h | Project Management | Waterfall ,Agile |  |
| 457 | 5.1.4 | Communicate Project Status and Progress | 50d | 2019-12-10 | 2020-02-27 |  | 52d |  | Офис управления проектом / PMO (PMO) | 400h | Project Management | Waterfall ,Agile |  |
| 458 | 5.2 | **Phase Initiation** | 6d | 2019-12-10 | 2019-12-17 |  | 86d | 0d |  | 48h | Project Management | Waterfall ,Agile |  |
| 459 | 5.2.1 | Review Deliverables of Deploy Phase | 1d | 2019-12-10 | 2019-12-10 |  | 86d | 0d | Руководитель функционального направления (Functional Lead) | 8h | Project Management | Waterfall ,Agile |  |
| 460 | 5.2.2 | Review Acceptance Criteria | 2d | 2019-12-11 | 2019-12-12 | 459 | 86d | 0d | Руководитель функционального направления (Functional Lead) | 16h | Project Management | Waterfall ,Agile |  |
| 461 | 5.2.3 | Review RACI Chart for Deploy Phase | 3d | 2019-12-13 | 2019-12-17 | 460 | 86d |  | Офис управления проектом / PMO (PMO) | 24h | Project Management | Waterfall ,Agile |  |
| 462 | 5.3 | **Plan Deploy Phase** | 8d | 2019-12-18 | 2019-12-27 | 458 | 82d | 2d |  | 64h | Project Management | Waterfall ,Agile |  |
| 463 | 5.3.1 | Plan Cutover | 4d | 2019-12-18 | 2019-12-23 |  | 86d |  | Координатор проекта / Администратор проекта (PC) | 32h | Project Management | Waterfall ,Agile |  |
| 464 | 5.3.2 | Plan HyperCare | 4d | 2019-12-24 | 2019-12-27 |  | 82d |  | Координатор проекта / Администратор проекта (PC) | 32h | Project Management | Waterfall ,Agile |  |
| 465 | 5.4 | **Hand Over Solution** | 14d | 2020-01-01 | 2020-01-20 | 462 | 80d |  |  | 48h | Project Management | Waterfall ,Agile |  |
| 466 | 5.4.1 | Resolve and Close Open Issues | 2d | 2020-01-01 | 2020-01-02 |  | 80d | 0d | Руководитель проекта (PM) | 16h | Project Management | Waterfall ,Agile | Non-core (N) |
| 467 | 5.4.2 | Finalize the Project Closeout Report | 2d | 2020-01-03 | 2020-01-06 | 466 | 80d | 0d | Офис управления проектом / PMO (PMO) | 16h | Project Management | Waterfall ,Agile | Non-core (N) |
| 468 | 5.4.3 | Finalize Solution Manager Update - Solution Documentation | 1d | 2020-01-17 | 2020-01-17 | 467 | 80d | 0d | Технический консультант | 8h | Project Management | Waterfall ,Agile | Non-core (N) |
| 469 | 5.4.4 | Obtain Sign-off for Project Closure and Results Acceptance | 1d | 2020-01-20 | 2020-01-20 | 468 | 80d |  | Руководитель проекта (PM) | 8h | Project Management | Waterfall ,Agile | Non-core (N) |
| 470 | 5.5 | **Organizational and Production Support Readiness Check** | 13d | 2019-12-10 | 2019-12-26 |  | 47d | 1d |  | 104h | Transition to Operations | Waterfall ,Agile |  |
| 471 | 5.5.1 | Perform Business validation and Transition Planning | 3d | 2019-12-10 | 2019-12-12 |  | 47d | 0d | Руководитель тестирования / QA (Testing Lead) | 24h | Transition to Operations | Waterfall ,Agile | None (NONE) |
| 472 | 5.5.2 | Validate that Master Data Support Processes is established | 3d | 2019-12-13 | 2019-12-17 | 471 | 47d | 0d | Специалист по миграции данных (Data Migration Specialist) | 24h | Technical Architecture & Infrastructure | Waterfall ,Agile | None (NONE) |
| 473 | 5.5.3 | Establish Business Process Operations | 2d | 2019-12-20 | 2019-12-23 | 472 | 49d | 2d | Специалист по обучению и коммуникациям | 16h | Technical Architecture & Infrastructure | Waterfall ,Agile | None (NONE) |
| 474 | 5.5.4 | Establish System Administration and Control | 2d | 2019-12-24 | 2019-12-25 | 472 | 47d | 0d | Специалист по обучению и коммуникациям | 16h | Transition to Operations | Waterfall ,Agile | None (NONE) |
| 475 | 5.5.5 | Establish Security / Role and Authorization Management | 2d | 2019-12-18 | 2019-12-19 | 472 | 51d | 4d | Технический руководитель / Архитектор (Technical Lead / Basis) | 16h | Transition to Operations | Waterfall ,Agile | None (NONE) |
| 476 | 5.5.6 | Execute Transition to Production Support | 1d | 2019-12-26 | 2019-12-26 | 473, 474, 475 | 47d |  | Руководитель тестирования / QA (Testing Lead) | 8h | Transition to Operations | Waterfall ,Agile | None (NONE) |

Notes:
- 452: The purpose of this phase is to setup the production system, confirm customer organization readiness,&nbsp;and to switch business operations to the new system. .. .. Deploy Activities: &nbsp; &nbsp; &nbsp; &nbsp; &nbsp; &nbsp; &nbsp; &nbsp; &nbsp; &nbsp; &nbsp; &nbsp; &nbsp; &nbsp; &nbsp; &nbsp; &nbsp; &nbsp; &nbsp; &nbsp; &nbsp; &nbsp; &nbsp; &nbsp; &nbsp; &nbsp; &nbsp; &nbsp; &nbsp; &nbsp; &nbsp; &nbsp; &nbsp; &nbsp; &nbsp; &nbsp; &nbsp; &nbsp; &nbsp; &nbsp; &nbsp; &nbsp; &nbsp; &nbsp; &nbsp; &nbsp; &nbsp; &nbsp; &nbsp; &nbsp; &nbsp; &nbsp; &nbsp; &nbsp; &nbsp; &nbsp; &nbsp; &nbsp; &nbsp; &nbsp; &nbsp; &nbsp; &nbsp; &nbsp; &nbsp; &nbsp; &nbsp; &nbsp; &nbsp; &nbsp; &nbsp; &nbsp; &nbsp; &nbsp; &nbsp; &nbsp; &nbsp; &nbsp; &nbsp; &nbsp; &nbsp;&nbsp; .. .. Resolve all crucial open issues:.. ... Conduct system tests ... Check that system management is in place ... Proceed with cut-over activities, including data migration .. .. .. Execute transition and cutover plans including organizational change management (OCM) plans .. Complete all scheduled end user training .. Identify and document all issues encountered in the transition to the new solution .. Monitor business process results and the production environment .. Establish OCC** or a &ldquo;extra-care&rdquo; center of excellence for support that provides:&nbsp;.. ... Production support processes ... Exceptional business monitoring processes ... Extraordinary technical support ... System enhancements .. .. .. Track and report on value delivery&nbsp;&nbsp;&nbsp;&nbsp; .
- 453: The purpose of this deliverable is for&nbsp;the project the team to carry&nbsp;out the planned and approved project work and measures project performance to identify variances from the plan.&nbsp;The execution goal is to manage the scope of the work to be done, while monitoring the execution, identifying variances from the plan, monitoring quality results, controlling progress against the plan, controlling changes throughout the project, assess and respond to risks, and communicate the project status. .. The Project Management Plan developed during the Prepare phase for each of the PM knowledge areas, guide the team&#39;s approach to management, execution, monitoring, and control of project activities. This methodology provides steps to be considered when each activity is engaged and supported by the team&#39;s monitoring/controlling plans. The project manager is responsible for ensuring that the monitoring/controlling plans developed in the planning phase are applied at the appropriate level of control. .. &nbsp; .
- 454: The purpose of this task is for the project manager and the project team to execute the project management plan and to accomplish the work defined in the project scope statement. .. Procedure: .. .. In executing the project work, the project team will perform the following types of activities:... ... Perform project tasks to reach project objectives ... Expend effort and funds to accomplish project objectives ... Staff, train, and manage the project team members assigned to the project ... Obtain, manage, and utilize resources ... Implement and execute the planned methods and standards ... Create, control, verify, and validate project deliverables ... Manage the scope of the approved work ... Manage risks and implement risk response activities ... Manage issues to closure ... Adapt approved changes into the scope, plans, and project environment ... Establish and manage internal and external communications ... Collect project data and report on progress and performance .. .. .. In monitoring/controlling work results, the project team performs the following types of activities:.. ... Compare actual project performance to the project management plan ... Assess performance to determine whether corrective or preventive actions are necessary ... Monitor and control project risks ... Provide metrics to support progress and performance reporting and forecasting ... Monitor implementation of approved changes ... Take corrective action as needed .. .. . .. Management plans developed during the Prepare phase guide the team&#39;s approach to management, execution, and control of project activities. .. Note: See the &ldquo;Prepare Project Management Plan&rdquo; task in Prepare phase for details. .
- 455: The purpose of this task is to ensure that the project manager keeps the key project management documents up-to-date. .. The project management documents are, together, a comprehensive body of project documents that include the project schedule, budget/cost information, monitoring/controlling plans for each of the nine knowledge areas of the Project Management Body of Knowledge (PMBOK), and other information as appropriate. The project management plan document developed for each of the knowledge areas provide the foundation for the consistent application of project management practices. .. Procedure: .. .. Refine the project schedule, the project budget, and provide appropriate updates to the management plans, scope document and business case to reflect the detailed scope information created during the project. .. Includes updates to:.. ... Project management plan ... Project WBS ... Project schedule ... Project budget ... Business case ... Scope document ... Backlog document (created in Explore phase) .. .. . .
- 456: The purpose of this task is to manage project issues, risks, and changes . A consistent, comprehensive approach to managing project issues is a critical component of an effective project management system. .. Procedure: .. .. Effective issue management involves the appropriate level of management making decisions on issues and tracking progress on issue resolution in accordance with the project issue management procedure. .. Maintain identified issues in one, central environment. .. In cloud projects, use a dedicated issue tracking document based on the Open Issue List Template in the SAP Activate methodology. .. The Issue Management handling involves the following steps:.. ... Raise and properly classify an issue as it is related to the system conversion, solution implementation, or solution operations of an SAP solution or technology. ... Create it in the issue tracking tool, either by SAP, a customer or an implementation partner. ... During the issue creation, the person raising the issues assigns the priority and the responsible person for resolution of the issue. ... The Project Manager follows up on issues on a regular basis in addition to the standard issue management process defined for the project (part of the management plans). ... Critical issues will be reviewed as an input for each Quality Gate review meeting. .. .. .. Review and update open issues on a regular basis and communicate to the appropriate stakeholder groups as part of the regular project reporting and communication. From SAP&#39;s perspective, issue tracking allows for better visibility and transparency of open issues, problems, action items, and associated action plans to the project management team. .. Use a central issue tracking system to manage and maintain lists of issues that require action and resolution to ensure the success of the project. . .
- 457: The purpose of this task is to communicate project status and progress. Throughout the project, several project performance reports need to be produced for different purposes and audiences, as defined in the project communication plan . The project manager and project team are responsible for clearly communicating the progress of the key activities, completion of the deliverables, and status against the schedule and budget. .. Procedure: .. .. Produce team member status updates typically every week and share them with the team lead. It is recommended that this report is kept very lightweight and provided to the team lead via e-mail or in a team meeting. .. Report team status reports on regular cadence, typically weekly. The team status reports are prepared by the team leads and are delivered to the project manager as an input for the project status report. The team status report may be reviewed in regular team review with the Project Manager or provided in a predefined format. .. Use the project status report template for project status report... ... Create the project status report on weekly basis, based on the input from individual teams and additional information like issues list, risk list, etc. .. .. .. Prepare executive status report on monthly or quarterly cadence and provide it to the project executive steering group... ... Generally, In this report re-use the key information from the weekly project status report. ... Expand on the value and benefits of the program and include discussion of the decisions that are needed from the executive steering group. .. .. .. Additionally, throughout the project, as more is known, review and update the project communication matrix... ... The communication matrix documents the project team&rsquo;s approach to communication. It captures the analysis completed as part of communications planning and serves as a tool to guide the project team throughout the project. .. .. . .
- 458: The purpose of this deliverable is to formally recognize that a new project phase starts. .. Procedure: .. .. Review Deliverables of Realize Phase with Customer .. Review Acceptance Criteria with Customer .. Review RACI Chart for Realize Phase with Customer . .
- 459: The purpose of this tasks is to review all Deliverables of the Deploy Phase with Customer. .
- 460: The purpose of this task is to review the acceptance criteria with Customer. .
- 461: The purpose of this task is to review the RACI Chart for the Deploy Phase with Customer. It is important to clarify roles and responsibilities in completing tasks and deliverables during this phase. .
- 462: The purpose of this deliverable is to plan for the cutover to the production software and ensure that the resources and processes are in place to support the solution after cutover. .. Procedure: .. .. Plan Cutover .. Plan HyperCare . .
- 463: The purpose of this task is to plan cutover activities in the appropriate sequence to ensure preparatory steps are complete. .
- 464: Procedures: .. .. Plan HyperCare Organization and Process .. Plan Resources and Schedule . .
- 465: The purpose of the Hand Over Solution deliverable is to formally close the project and conduct deliverable sign-off. During this time, the project team will: .. .. Ensure all required deliverables from the project are complete and accurate, and close any outstanding issues .. Conduct the formal project quality gate .. Identify lessons learned during the phase .. Capture customer feedback and potential customer references . .. Procedure: .Formally close the phase and ensure all deliverables and tasks have been completed per the project management plans and policies. Once everything has been verified, the project can be officially closed and signed-off. .. .. Resolve and Close Open Issues .. Finalize Project Closeout Report .. Finalize Solution Manager Update - Solution Documentation .. Obtain Sign-off for Project Closure and Results Acceptance . .
- 466: The purpose of the Resolve and Close Open Issues task is to achieve a closure of all open project issues which is a prerequisite for the final project closure. . . Prerequisite: .. .. Review the overview description in the Hand Over Solution deliverable . .. Procedure: .Review all open issues, resolve open items with key teams involved in the solution, and close the item once successfully validated.
- 467: The purpose of the Finalize the Project Closeout Report&nbsp; task is to document the results of the project, both regarding achieved objectives and deliverables, as well as adherence to schedule, costs, and delivered value. .. Input to this report will include a: .. .. List of all solution information assets created in Solution Manager&nbsp; (for documents, also indicate the status and the approval signatories) .. List of the project deliverables and tasks listed in Solution Manager and the status of each . .. Procedure: .Document the results of the project closeout report which includes statuses on time, budget, resources, and value to the implementation with additional information from the solution information assets which are created in Solution Manager. .
- 468: Purpose of this task is to hand over the finalized implementation project and it's content, and set up as a productive solution in SAP Solution Manager. This provides the basis for the follow up activities in the Operate Phase.
- 469: The purpose of this task is to conduct formal closure of theproject execution and sign-off the deliverables completed during the project.The main goal of this process is to: Ensure that all required deliverables from theproject are complete and accurate, and close any outstanding issues Identify lessons learned during the project(collection of all lessons learned from the project) Capture customer feedback and potential customerreferences . When sign-off is obtained, the project can be formallyclosed.
- 470: The purpose of this survey is to take the pulse of the organization, prior to go-live, to determine the general comfort level with the upcoming changes. If that comfort level is not there, it is critical to determine where additional OCM work needs to be focused. In addition the check of production support readiness is to ensure that the resources and processes are in place to support the solution after cutover.
- 471: The purpose of this task is to validate the outcome of the role mapping and change impact analysis. This is done with the impacted business stakeholders in order to gain sponsors approval.
- 472: The purpose of this task is to ensure the customer establishes the means to manage their data in an integrated environment.
- 473: This task provide a single defined support approach for monitoring and measuring the customer's day-to-day support operations. The following four topics needs to be covered:- Exception Handling and Business Process and Interface Monitoring - Data Volume Management - Job Scheduling Management - Transactional Consistency and Data Integrity
- 474: This task describes how all SAP technologies can be administered to run a customer solution efficiently. The execution is mainly done locally but can be triggered and managed from a central administration system.
- 475: The task ensure that the customer establishes the means to manage security, roles and authorizations in their productive environment.
- 476: The purpose of this task is to extract the knowledge about the scope, customizations, and business processes of the customer's production environment and transfer that knowledge to a long-term SAP support center

| ID | WBS | Task | Duration | Start | Finish | Predecessors | Total slack | Free slack | Resources | Work | Workstream | FLAVORS | Assembly Category |
| --- | --- | --- | --- | --- | --- | --- | --- | --- | --- | --- | --- | --- | --- |
| 477 | 5.6 | **Pre Go-Live End-User Training Delivery** | 14d | 2019-12-10 | 2019-12-27 |  | 46d | 0d |  | 96h | Application: Solution Adoption | Waterfall ,Agile |  |
| 478 | 5.6.1 | Validate and Adapt End User Training Material Developed | 4d | 2019-12-10 | 2019-12-13 |  | 46d | 0d | Специалист по обучению и коммуникациям | 32h | Application: Solution Adoption | Waterfall ,Agile | Non-core (N) |
| 479 | 5.6.2 | Deliver End User training | 4d | 2019-12-16 | 2019-12-19 | 478 | 46d | 0d | Специалист по обучению и коммуникациям | 32h | Application: Solution Adoption | Waterfall ,Agile | Non-core (N) |
| 480 | 5.6.3 | Collect Training Evaluations feedback | 2d | 2019-12-20 | 2019-12-23 | 479 | 46d | 0d | Руководитель тестирования / QA (Testing Lead) | 16h | Application: Solution Adoption | Waterfall ,Agile | Non-core (N) |
| 481 | 5.6.4 | Perform People Readiness Assessment | 2d | 2019-12-26 | 2019-12-27 | 480 | 46d |  | Специалист по обучению и коммуникациям | 16h | Application: Solution Adoption | Waterfall ,Agile | Non-core (N) |
| 482 | 5.7 | **Approved Technical System Tests** | 9d | 2019-12-13 | 2019-12-25 |  | 87d | 13d |  | 56h | Application: Testing | Waterfall ,Agile |  |
| 483 | 5.7.1 | Execute Technical System Tests | 3d | 2019-12-13 | 2019-12-17 |  | 92d | 5d | Руководитель тестирования / QA (Testing Lead) | 24h | Application: Testing | Waterfall ,Agile | Non-core (N) |
| 484 | 5.7.2 | Perform System Test Defect Resolution | 3d | 2019-12-18 | 2019-12-24 |  | 87d | 0d | Руководитель тестирования / QA (Testing Lead) | 24h | Application: Testing | Waterfall ,Agile | Non-core (N) |
| 485 | 5.7.3 | Obtain System Test Results Sign-off | 1d | 2019-12-25 | 2019-12-25 | 483, 484 | 87d |  | Руководитель тестирования / QA (Testing Lead) | 8h | Application: Testing | Waterfall ,Agile | Non-core (N) |
| 486 | 5.8 | **Setup Operations Control Center** | 11d | 2020-01-14 | 2020-01-28 | 482 | 74d |  |  | 72h | Transition to Operations | Waterfall ,Agile |  |
| 487 | 5.8.1 | Run SAP Like a Factory Set up | 2d | 2020-01-14 | 2020-01-15 |  | 74d | 0d | Технический консультант | 16h | Transition to Operations | Waterfall ,Agile |  |
| 488 | 5.8.2 | Deliver RSLF Workshop | 1d | 2020-01-16 | 2020-01-16 | 487 | 74d | 0d | Технический консультант | 8h | Transition to Operations | Waterfall ,Agile |  |
| 489 | 5.8.3 | Set Central Monitors | 1d | 2020-01-27 | 2020-01-27 | 488 | 75d |  | Технический консультант | 8h | Transition to Operations | Waterfall ,Agile |  |
| 490 | 5.8.4 | Define Event Management Processes | 2d | 2020-01-21 | 2020-01-22 | 488 | 78d |  | Технический консультант | 16h | Transition to Operations | Waterfall ,Agile |  |
| 491 | 5.8.5 | Setup Event Management | 2d | 2020-01-23 | 2020-01-24 | 488 | 76d |  | Технический консультант | 16h | Transition to Operations | Waterfall ,Agile |  |
| 492 | 5.8.6 | Set up Continuous Improvement Process | 1d | 2020-01-28 | 2020-01-28 | 488 | 74d |  | Технический консультант | 8h | Transition to Operations | Waterfall ,Agile |  |
| 493 | 5.9 | **Production Cutover** | 16d | 2019-12-30 | 2020-01-20 | 477, 470 | 46d | 0d |  | 128h | System & Data Migration | Waterfall ,Agile |  |
| 494 | 5.9.1 | Execute Go Live Simulations 1 - n | 2d | 2019-12-30 | 2019-12-31 |  | 46d | 0d | Руководитель проекта (PM) | 16h | System & Data Migration | Waterfall ,Agile | Non-core (N) |
| 495 | 5.9.2 | Conduct Data Quality Readiness Check | 3d | 2020-01-01 | 2020-01-03 | 494 | 46d | 0d | Специалист по миграции данных (Data Migration Specialist) | 24h | System & Data Migration | Waterfall ,Agile | Non-core (N) |
| 496 | 5.9.3 | Finalize Cutover Plan | 2d | 2020-01-06 | 2020-01-07 | 495 | 46d | 0d | Координатор проекта / Администратор проекта (PC) | 16h | System & Data Migration | Waterfall ,Agile | Non-core (N) |
| 497 | 5.9.4 | Perform Pre-Cutover Weekend Closing Activities | 2d | 2020-01-08 | 2020-01-09 | 496 | 46d | 0d | Руководитель проекта (PM) | 16h | System & Data Migration | Waterfall ,Agile | Non-core (N) |
| 498 | 5.9.5 | Final Check of Production Readiness and Sign-Off | 1d | 2020-01-10 | 2020-01-10 | 497 | 46d | 0d | Руководитель проекта (PM) | 8h | System & Data Migration | Waterfall ,Agile | Non-core (N) |
| 499 | 5.9.6 | Perform Cutover Weekend Activities, Final Production Data Load | 4d | 2020-01-13 | 2020-01-16 | 498 | 46d | 0d | Специалист по миграции данных (Data Migration Specialist) | 32h | System & Data Migration | Waterfall ,Agile | Non-core (N) |
| 500 | 5.9.7 | Obtain Production Data Load Sign-off | 1d | 2020-01-17 | 2020-01-17 | 499 | 46d | 0d | Специалист по миграции данных (Data Migration Specialist) | 8h | System & Data Migration | Waterfall ,Agile | Non-core (N) |
| 501 | 5.9.8 | Initiate Solution Manager Update - Solution Documentation | 1d | 2020-01-20 | 2020-01-20 | 500 | 46d |  | Технический консультант | 8h | System & Data Migration | Waterfall ,Agile | Non-core (N) |

Notes:
- 477: The purpose of the EU training delivery and readiness checklist is to provide a checklist summarizing end-user training delivery to ensure readiness for adoption of the solution. In the checklist, items governing training delivery, communications, and future planning clarify the status of all aspects of the training initiative.
- 478: The purpose of this task is to prepare the training delivery.
- 479: The objective of this task is to deliver end user training to the previously developed training schedule.
- 480: The purpose of this task is to capture feedback on both the training session and the trainer delivering the material
- 481: This task checks how prepared the people in the organization are with regards to the identified changes and received EU training.
- 482: The purpose of this deliverable is to present the findings and recommendations from the results of technical tests such as disaster recovery tests, backup and restore tests, and other required technical or basis-related tests to the customer or project team for final signoff in order to exit system testing.
- 483: The purpose of this task is to prepare and execute the system tests. The outcome/results should be approved by the customer.
- 484: The objective of this task is to resolve issues identified during the system testing. Upon resolution the issues need to be re-tested and confirmed by responsible testers.
- 485: Purpose of this task is to obtain customer approval (sign-off)
- 486: The purpose of this deliverable is to establish the required organization to support the solution after the Go Live.
- 487: The purpose of this task is to define the Run SAP like a Factory Business Process Operations. It provides capabilities for central monitoring, alerting, reporting, and analytics of SAP and non-SAP business processes. It helps customers to reduce total cost of operations by predefined content and centralized configuration for all aspects of Business Process Operations in SAP Solution Manager. Business Process Operations is primarily intended for business operations and functional support teams and consists of the following capabilities: (a) Business Process and Interface Monitoring; (b) Data Consistency Management; (c) Job Scheduling Management; (d) Business Process Improvement; and (e) Business Process Performance Optimization.
- 488: The purpose of this task is to plan and deliver the Run SAP like a Factory Workshop (RSLAF Workshop). This workshop is the first step to get clarity if Run SAP like a Factory, making customer familiar with RSLAF concepts. It will also provide a first proposal, how an OCC may look like, based on customer specific requirements, and operational challenges.
- 489: The purpose of this task is to set up the main central monitors to manage the Operation Control Center. These monitors will permanently report the status of the business processes and related IT landscapes, including important business and technical exceptions. Non-SAP can be included as well.
- 490: The purpose of this task is to define the process and requirements for the Event Management. Some requirements that need to be covered are: the requirements assessment should cover: (a) a high-level definition of the To-Be process; (b) high-level description of knowledge management (where are operational procedure documents including troubleshooting guides being stored?); (c) planned integration with Incident Management; (d) plans regarding notifications: Who should be notified, and when? What are the desired notification channel?; (e) integration of 3rd party system management tools; and (f) roles &amp; responsibilities.
- 491: The purpose of this task is to set up the Event Management according to the results of the RSLF Workshop. This includes: (a) a detailed definition of each process step; (b) documentation of the tools being used (starting with the Alert Inbox in SAP Solution Manager); (c) documentation of the tools for running a first analysis; (d) definition when and how an event gets converted into an incident (manual / automated); (e) definition when and how a notification should be sent (manual / automated); and (f) definition what to document before closing an alert.
- 492: The purpose of this task is to set up the Continuous Improvement Process which optimizes the overall operational setup depending on newly identified requirements. The guiding principle is to demonstrate value to business and IT.
- 493: The purpose of this deliverable is to perform the cutover to the production software and go live. At this point, the organizational, business, functional, technical, and system aspects of the project are ready to be used in production.
- 494: The purpose of this task is to rehearse or simulate the cutover activities. During simulation, the main objective is to validate and document the tasks, sequence, and duration of items on the cutover plan.
- 495: This task verifies that master data support is set up and process is operational
- 496: The purpose of this task is to complete the Cut Over plan with results obtained from the Go Live simulations.
- 497: The objective of this task is to perform all the cutover preparation activities remaining to be closed prior to cutover weekend. The detailed cutover plan contains the complete listing of all pre-cutover activities, their dependencies, owners, and timing.
- 498: This task will confirm that the productive system is ready for Go Live.
- 499: The purpose of this task is the loading of production data from legacy systems into the production environment. Once all preparations and configurations on both the technical and application levels are completed, the final productive solution can be set up and data loaded. The solution is live in a production environment
- 500: Purpose of this task is to obtain customer approval (sign-off)
- 501: Purpose of this task is to hand over the finalized implementation project and it's content, and set up as a productive solution in SAP Solution Manager. This provides the basis for the follow up activities in the Operate Phase.

| ID | WBS | Task | Duration | Start | Finish | Predecessors | Total slack | Free slack | Resources | Work | Workstream | FLAVORS | Assembly Category |
| --- | --- | --- | --- | --- | --- | --- | --- | --- | --- | --- | --- | --- | --- |
| 502 | 5.10 | **Dress Rehearsal** | 4d | 2020-01-21 | 2020-01-24 | 493 | 46d | 0d |  | 32h | System & Data Migration | Waterfall ,Agile |  |
| 503 | 5.10.1 | Perform Cut-Over Rehearsal | 4d | 2020-01-21 | 2020-01-24 |  | 46d |  | Руководитель проекта (PM) | 32h | System & Data Migration | Waterfall ,Agile |  |
| 504 | 5.11 | **Production Support After Go Live** | 40d | 2020-02-05 | 2020-03-31 | 502 | 21d | 2d |  | 200h | System & Data Migration | Waterfall ,Agile |  |
| 505 | 5.11.1 | Provide Post Go Live Support | 10d | 2020-03-18 | 2020-03-31 |  | 21d |  | Руководитель проекта (PM) | 80h | System & Data Migration | Waterfall ,Agile | Non-core (N) |
| 506 | 5.11.2 | Monitoring Open Issues to Resolution | 4d | 2020-02-05 | 2020-02-10 |  | 44d | 0d | Руководитель проекта (PM) | 32h | System & Data Migration | Waterfall ,Agile | Non-core (N) |
| 507 | 5.11.3 | Resolve Functional Issues | 3d | 2020-02-17 | 2020-02-19 | 506 | 45d | 3d | Руководитель проекта (PM) | 24h | System & Data Migration | Waterfall ,Agile | Non-core (N) |
| 508 | 5.11.4 | Resolve Technical Issues | 3d | 2020-02-20 | 2020-02-24 | 506 | 42d | 0d | Руководитель проекта (PM) | 24h | System & Data Migration | Waterfall ,Agile | Non-core (N) |
| 509 | 5.11.5 | Complete Transition to Customers Production Support Organization | 3d | 2020-02-25 | 2020-02-27 | 507, 508 | 42d | 0d | Руководитель тестирования / QA (Testing Lead) | 24h | Transition to Operations | Waterfall ,Agile | Non-core (N) |
| 510 | 5.11.6 | Finalize Solution Manager Update - Solution Documentation | 1d | 2020-02-28 | 2020-02-28 | 509 | 42d | 0d | Технический консультант | 8h | Project Management | Waterfall ,Agile | Non-core (N) |
| 511 | 5.11.7 | Obtain Solution Transition to Production Acceptance Protocol Sign-off | 1d | 2020-03-02 | 2020-03-02 | 510 | 42d |  | Руководитель тестирования / QA (Testing Lead) | 8h | Project Management | Waterfall ,Agile | Non-core (N) |
| 512 | 5.12 | **Production Cutover** | 15d | 2020-01-27 | 2020-02-14 | 502 | 46d | 0d |  | 88h | System & Data Migration | Waterfall ,Agile |  |
| 513 | 5.12.1 | Convert Productive System (System Conversion) | 3d | 2020-01-27 | 2020-01-29 |  | 46d | 0d | Руководитель проекта (PM) | 24h | System & Data Migration | Waterfall ,Agile |  |
| 514 | 5.12.2 | Production Cutover (New Implementation) | 4d | 2020-01-30 | 2020-02-04 | 513 | 46d | 0d | Руководитель проекта (PM) | 32h | System & Data Migration | Waterfall ,Agile |  |
| 515 | 5.12.3 | Production Cutover (Landscape Transformation) | 4d | 2020-02-11 | 2020-02-14 | 514 | 46d |  | Руководитель проекта (PM) | 32h | System & Data Migration | Waterfall ,Agile |  |
| 516 | 5.13 | **Improvement Roadmap** | 5d | 2020-02-17 | 2020-02-21 | 512 | 46d | 27d |  | 64h | Project Management | Waterfall ,Agile |  |
| 517 | 5.13.1 | Perform Refinement and Improvement Planning Workshops | 5d | 2020-02-17 | 2020-02-21 |  | 46d |  | Функциональный консультант | 40h | Project Management | Waterfall ,Agile | Non-core (N) |
| 518 | 5.13.2 | Document Improvement Roadmap | 3d | 2020-02-17 | 2020-02-19 |  | 48d |  | Офис управления проектом / PMO (PMO) | 24h | Project Management | Waterfall ,Agile | Non-core (N) |
| 519 | 5.15 | **SAP Going Live Check - Verification Session** | 2d | 2020-04-01 | 2020-04-02 | 516 | 19d | 0d |  | 16h | Technical Architecture & Infrastructure | Waterfall ,Agile |  |
| 520 | 5.15.1 | Conduct SAP Going Live Check - Verification Session Remote | 2d | 2020-04-01 | 2020-04-02 |  | 19d |  | Руководитель проекта (PM) | 16h | Technical Architecture & Infrastructure | Waterfall ,Agile | Non-core (N) |
| 521 | 5.16 | **Post Go live End-User Training** | 11d | 2020-01-27 | 2020-02-10 | 477, 502 | 65d |  |  | 88h | Application: Solution Adoption | Waterfall ,Agile |  |
| 522 | 5.16.1 | Prepare End-User Training for SCOPE OPTION | 4d | 2020-01-27 | 2020-01-30 |  | 65d | 0d | Специалист по обучению и коммуникациям | 32h | Application: Solution Adoption | Waterfall ,Agile | Non-core (N) |
| 523 | 5.16.2 | Deliver End-User Training for SCOPE OPTION | 3d | 2020-01-31 | 2020-02-04 | 522 | 65d | 0d | Специалист по обучению и коммуникациям | 24h | Application: Solution Adoption | Waterfall ,Agile | Non-core (N) |
| 524 | 5.16.3 | Collect Training Evaluations feedback | 2d | 2020-02-05 | 2020-02-06 | 523 | 65d | 0d | Руководитель тестирования / QA (Testing Lead) | 16h | Application: Solution Adoption | Waterfall ,Agile | Non-core (N) |
| 525 | 5.16.4 | Perform People Readiness assessment | 2d | 2020-02-07 | 2020-02-10 | 524 | 65d |  | Специалист по обучению и коммуникациям | 16h | Application: Solution Adoption | Waterfall ,Agile | Non-core (N) |

Notes:
- 502: In preparation for the Go-Live of the transition project, it is imperative to execute an end-to-end dress rehearsal of the cutover procedures. The rehearsal should be executed about two to four weeks prior to the Go-Live. All changes intended to be included in the cutover should be available for the dress rehearsal. This includes any changes that result from the testing cycles, as even a single transport could greatly impact the duration of the process. .. From this point forward, changes to production should be restricted in order to mitigate risks to the cutover procedures (system conversion only). If there is a need to make a change to production after this point, it should be carefully evaluated and the impact should be fully understood. In some cases, there may be a requirement to postpone the Go-Live and re-execute the dress rehearsal in order to accommodate intrusive changes. .. Requirements and Constraints .. This activity is recommended for all scenarios. .. Prerequisite for this activity is: .. .. &nbsp;The detailed cutover plan with owners, dependencies and durations fully documented. .. &nbsp;The involvement of all task owners. .. &nbsp;A test environment representative of the source and target platforms for production. .. &nbsp;The technical cookbook, which details all of the required technical migration steps. . .. Procedure .. . .. &nbsp;Perform Cut-Over Rehearsal . . How SAP Can Support .. SAP offers the provisioning of a dress rehearsal as part of the &ldquo; Platform Execution&rdquo; &nbsp;service &ndash; see accelerator section for more information. .
- 503: The goal of this task is to execute an end-to-end dress rehearsal of the cutover procedures. Procedure Execute the cutover plan in its entirety in a non-productive environment, which is representative of the current state and end-state of production. The dress rehearsal is intended to be used to confirm the ownership, sequence, and duration of the cutover procedures. If significant changes to the process are required as a result of the dress rehearsal, there may be a need to postpone the Go-Live. It is also very critical to communicate the latest plan to related parties to ensure a smooth Production Cutover for the last time. .
- 504: The purpose of this deliverable is to confirm that the resources and processes are in place to support the ongoing solution and to complete the steps required to close the project and finish documentation. Note. * Production Incidenst should be capatued within ITSM (held in SolMan). * Production Support can access the Solution Information Assets in the &quot;PRODUCTION&quot; branch to help them resolve any incidents that are captured. * Any updates to the system, links or dodumenst should occur in the &quot;MAINTENANCE&quot; branch and released when chnage applied to &quot;PRODUCTION&quot;
- 505: The purpose of this task is to implement ongoing production support to the SAP software system users and to monitor and optimize system performance.
- 506: The purpose of this task is to achieve a closure of all open project issues which is a prerequisite for the final project closure. It is forseeable that issues arise during the hyper care period after cutover.The issues can be functional in nature or technology oriented. Normally, issue handling go thru below steps: 1. Record and register problem 2. Classify the problem and provide initial support 3. Check whether a solution exists 4. Provide existing solution 5. Forward the problem if no solution exists to the next support level 6. Analyze and diagnose the problem 7. Include the solution provided in the solution database 8. Provide solution/solve problem 9. Close the problem message
- 507: The purpose of this task is to resolve any functional issues identified during the hyper care period after cutover. It is crucial that the issues are re-tested and confirmed by users that reported them.
- 508: The purpose of this task is to.resolve any technical issues identified during the hyper care period after cutover. It is crucial that the issues are re-tested and confirmed by users that reported them.
- 509: The purpose of this task is to ensure knowledge transfer regarding the scope, customizations, and business processes in the customer's production environments to the long-term SAP support center team.
- 510: Purpose of this task is to hand over the finalized implementation project and it's content, and set up as a productive solution in SAP Solution Manager. This provides the basis for the follow up activities in the Operate Phase.
- 511: Purpose of this task is to obtain customer approval (sign-off)
- 512: The purpose of this deliverable is to perform the cutover to the production software and go live. .. Requirements and Constraints .. At this point, the organizational, business, functional, technical, and system aspects of the project are ready to be used in production. .. This activity is mandatory for all scenarios. The steps being performed are of course scenario specific. .. Procedure .. .. &nbsp;Convert Productive System (System Conversion) . .. or .. .. &nbsp;Production Cutover (New Implementation) . .. or .. .. &nbsp;Production Cutover (Landscape Transformation) . .. Results .. After completion of this activity, the productive SAP S/4HANA system is available for the end users. .. How SAP Can Support .. The &ldquo; SAP&nbsp;Going Live Support &rdquo; service component is part of the &ldquo; Safeguarding the Digital Transformation &rdquo; service. It is based on a standardized method to support critical situations during production cutover. SAP experts contribute their knowledge and expertise remotely to minimize the risks for the Go-Live. .. Sudden slowly running applications in the new productive SAP S/4HANA system are addressed by a&nbsp; Technical Performance Optimization &nbsp;service component&nbsp;(SAP Enterprise Support order the CQC for Technica lPerformance Optimization (TPO) instead): The technical performance optimization service component improves your SAP solution by helping you to configure your SAP S/4HANA system in an optimal way. The identification and elimination of costly performance bottlenecks optimizes the response times and throughput of your SAP solution. .. SAP Enterprise Support customers can request a Continuous Quality Check (CQC) for &ldquo;Going-Live Support&rdquo;. Ask your SAP Enterprise Support Adviser&nbsp;for details.
- 513: The goal of this task is to convert the productive system. .. Procedure .. Proceed as follows: .. .. &nbsp;Request Restore Point of Production System Prior to Final Cutover Activities .. &nbsp;Execute the conversion of the production system following the tasks defined in the cutover plan. .. &nbsp;Document the actual duration of each step to support future projects. .. &nbsp;Capture any variances to the plan along with decision maker who approved the change. .. &nbsp;The cutover manager(s) should proactively notify task owners of upcoming tasks, to ensure their availability. .. &nbsp;Regularly communicate status to stakeholders. .. &nbsp;After conversion has finished (including mandatory post-processing activities), the system has to be tested and validated .. &nbsp;Obtain system sign-off . .. Results .. The customer approval (sign-off) documents the agreement with the stakeholders that cutover tasks have been executed, the go-live acceptance criteria have been met, and the cutover is finished. It indicates formal approval to end the cutover activities. At this point, the solution is live in production. .. How SAP Can Support .. SAP offers the PRD conversion as part of the &ldquo; Platform Execution&rdquo; &nbsp;service&nbsp;(separate conversion, or as part of the &ldquo;Fast Start Bundle&rdquo;). See accelerator section for more information. The setup of the Fiori platform can be supported as well (scope option&nbsp; &ldquo;SAP Fiori Platform Setup&rdquo; ).
- 514: The goal of this task is to cut over production. .. Procedure .. .. Execute the cutover following the tasks defined in the cutover plan. This includes the final production data load. .. Document the actual duration of each step to support future projects. .. Capture any variances to the plan along with decision maker who approved the change. .. The cutover manager(s) should proactively notify task owners of upcoming tasks, to ensure their availability. .. Regularly communicate status to stakeholders. .. After the data is loaded, testing and data reconciliation must be completed. .. Obtain system sign-off . .. Results .. The customer approval (sign-off) documents the agreement with the stakeholders that cutover tasks have been executed, the go-live acceptance criteria have been met, and the cutover is finished. It indicates formal approval to end the cutover activities. At this point, the solution is live .. How SAP Can Support .. SAP offers the PRD installation as part of the &ldquo; Platform Execution &rdquo;&nbsp;service.
- 515: In accordance with the productive cut-over plan, the migration and upgrade process begins. .. Procedure .. The production cutover procedure depends on the landscape transformation scenario. .. For Client Transfer, proceed as follows: .. Examples of these settings include table and field mappings, exclusion of table entries, domains, rules, and mapping values. It is important to remember that a lot of the SAP LT Client Transfer activities can be executed well in advance of the actual downtime, which gives customers some more flexibility. .. .. A copy of the SAP LT Client Transfer package is created from the dress rehearsal to take over all the settings from the previous package. .. All users beside the technical migration and upgrade team are locked, when the downtime period starts. This also includes stopping all interfaces, as defined. Reschedule any batch jobs that are scheduled for the downtime period. .. Customers need to ensure that they can restore the system status of the S/4HANA receiver system to the status at the start of the downtime period, in case the migration fails. .. The system settings of the receiver system are changed as required. Customers need to consider the following: . .. .. &nbsp;Archive logging .. Dropping indexes .. Parameterization of the database . .. .. The required delta customizing need to be identified during the various project phases and implemented in the target system. .. Continuation of the migration and upgrade process, in accordance with the Productive Migration Plan. .. Monitoring of the migration and upgrade process in SAP LT Client Transfer - If problems occur during the migration and upgrade process that a customer cannot resolve (problems that would result in an inconsistent receiver system), the original receiver system state must be restored. .. Once the migration upgrade is complete, the log files in SAP LT Client Transfer should be checked. . .. Customers can find further information about the productive migration in the &lsquo;Client Transfer&rsquo; Product Road Map of SAP Landscape Transformation software, Refer to phase &lsquo;5 Productive Migration and Upgrade&rsquo;. .. For System Merge, proceed as follows: .. .. A copy of the SAP LT system merge package is created from the last test cycle to take over all the settings from the previous package. .. It is important to remember that a lot of the SAP LT system merge activities can be executed well in advance of the actual downtime, which gives customers some more flexibility. .. All users beside the technical migration and upgrade team are locked when the downtime period starts. This also includes stopping all interfaces as defined. Reschedule any batch jobs that are scheduled for the downtime period. .. Customers need to ensure that they can restore the system status of the S/4HANA receiver system to the status at the start of the downtime period in case the migration fails. .. The system settings of the receiver system are changed as required, customers need to consider the following:.. ... Backup, switch log to overwrite mode ... Parameterization of the database ... The required delta Customizing needs to be identified during the various project phases and implemented in the target system. ... Continuation of the migration and upgrade process in accordance with the productive migration plan ... Monitoring the migration and upgrade process from transfer (SAP LT) side and from system side. If problems occur during the migration and upgrade process that a customer cannot resolve(problems that would result in an inconsistent receiver system), the original receiver state must be restored. ... Once the migration is complete, the log files in SAP LT system merge should be checked. .. .. . .. Customers can find more information about the productive migration in the &lsquo;Client Transfer&rsquo; product road map of SAP Landscape Transformation software, see phase&lsquo;5 Productive Migration and Upgrade&rsquo;. .. How SAP Can Support .. SAP supports the Production Cutover activities of all landscape transformation scenarios as part of the &ldquo; Data Migration Execution&rdquo; service.
- 516: The purpose of the Improvement Roadmap deliverable is to outline a solution roadmap, which takes into account the whole of the customer solution, incorporates captured business requirement outside of the project scope, and potential improvements. .. . .. Procedure: .Outlined the solution roadmap with the customer solution and potential improvements in mind. .. .. Perform Refinement and Improvement Planning Workshops .. Document Improvement Roadmap . .
- 517: The purpose of the Perform Refinement and Improvement Planning Workshops task is to identify future potential improvements of the customer solution to maintain the solution standards. .&nbsp;
- 518: The purpose of the Document Improvement Roadmap task is to capture the results of the refinement and improvement planning workshop. The final document is shared with the virtual account team and the customer team. .&nbsp;
- 519: The purpose of the production support and transfer to solution deliverable is to confirm that the resources and processes are in place to support the ongoing solution and to complete the steps required to close the project and finish documentation.
- 520: The purpose of this task is to verify that the requirements identified in earlier sessions are met.
- 521: The purpose of EU training is to ensure that end users have adopted the solution, knowledge resources are maintained, and responses to the end-user acceptance survey are positive.
- 522: This purpose of this task is to adapt available training material and make it suitable for End User training.
- 523: This task executes the delivery of EU training as well as capturing feedback on both the training session and the trainer.
- 524: The purpose of this task is to capture feedback on both the training session and the trainer delivering the material
- 525: This task checks how prepared the people in the organization are with regards to the identified changes and received EU training.

| ID | WBS | Task | Duration | Start | Finish | Predecessors | Total slack | Free slack | Resources | Work | Workstream | FLAVORS | Assembly Category |
| --- | --- | --- | --- | --- | --- | --- | --- | --- | --- | --- | --- | --- | --- |
| 526 | 5.17 | **Release Closing** | 8d | 2020-04-03 | 2020-04-14 | 519, 504 | 19d |  |  | 64h | Project Management | Agile |  |
| 527 | 5.17.1 | Prepare the Product Backlog for Next the Release/Sprint | 4d | 2020-04-03 | 2020-04-08 |  | 19d | 0d | Функциональный консультант | 32h | Project Management | Agile | None (NONE) |
| 528 | 5.17.2 | Conduct Release Retrospective | 2d | 2020-04-09 | 2020-04-10 | 527 | 19d | 0d | Руководитель проекта (PM) | 16h | Project Management | Agile | None (NONE) |
| 529 | 5.17.3 | Update the Release and Sprint Plan | 2d | 2020-04-13 | 2020-04-14 | 528 | 19d |  | Координатор проекта / Администратор проекта (PC) | 16h | Project Management | Agile | None (NONE) |
| 530 | 6 | **Run** | 32d | 2020-04-15 | 2020-05-28 | 452 | 0d |  |  | 416h |  |  |  |
| 531 | 6.1 | **Operations Maturity Assessment** | 5d | 2020-04-15 | 2020-04-21 |  | 19d | 0d |  | 40h | Project Management | Waterfall ,Agile |  |
| 532 | 6.1.1 | Perform an Evaluation and Assessment of Operations Capabilities (including CoE Operational Setup) | 3d | 2020-04-15 | 2020-04-17 |  | 19d | 0d | Руководитель тестирования / QA (Testing Lead) | 24h | Project Management | Waterfall ,Agile | None (NONE) |
| 533 | 6.1.2 | Prepare the Maturity Assessment Report | 2d | 2020-04-20 | 2020-04-21 | 532 | 19d |  | Технический консультант | 16h | Project Management | Waterfall ,Agile | None (NONE) |
| 534 | 6.2 | **Solution Documentation Optimized** | 4d | 2020-04-22 | 2020-04-27 | 531 | 19d |  |  | 32h | Transition to Operations | Waterfall ,Agile |  |
| 535 | 6.2.1 | Perform Assessment of Solution Documentation Set Up | 4d | 2020-04-22 | 2020-04-27 |  | 19d |  | Офис управления проектом / PMO (PMO) | 32h | Transition to Operations | Waterfall ,Agile | None (NONE) |
| 536 | 6.3 | **Solution Implementation Optimized** | 4d | 2020-05-25 | 2020-05-28 | 534 | 0d |  |  | 32h | Technical Architecture & Infrastructure | Waterfall ,Agile |  |
| 537 | 6.3.1 | Perform Assessment of Solution Implementation Set Up | 4d | 2020-05-25 | 2020-05-28 |  | 0d |  | Руководитель проекта (PM) | 32h | Technical Architecture & Infrastructure | Waterfall ,Agile | None (NONE) |
| 538 | 6.4 | **Template Management Optimized** | 4d | 2020-05-13 | 2020-05-18 | 531 | 8d |  |  | 32h | Transition to Operations | Waterfall ,Agile |  |
| 539 | 6.4.1 | Perform Assessment of Template Management Set Up | 4d | 2020-05-13 | 2020-05-18 |  | 8d |  | Руководитель проекта (PM) | 32h | Transition to Operations | Waterfall ,Agile | None (NONE) |
| 540 | 6.5 | **Test Management Optimized** | 4d | 2020-05-19 | 2020-05-22 | 531 | 4d |  |  | 32h | Transition to Operations | Waterfall ,Agile |  |
| 541 | 6.5.1 | Perform Assessment of Test Management Set Up | 4d | 2020-05-19 | 2020-05-22 |  | 4d |  | Руководитель проекта (PM) | 32h | Transition to Operations | Waterfall ,Agile | None (NONE) |
| 542 | 6.6 | **Change Control Management Optimized** | 3d | 2020-05-08 | 2020-05-12 |  | 12d |  |  | 24h | Technical Architecture & Infrastructure | Waterfall ,Agile |  |
| 543 | 6.6.1 | Perform Assessment of Change Control Management Set Up | 3d | 2020-05-08 | 2020-05-12 |  | 12d |  | Руководитель проекта (PM) | 24h | Technical Architecture & Infrastructure | Waterfall ,Agile | None (NONE) |
| 544 | 6.7 | **Application Incident Management Optimized** | 6d | 2020-04-30 | 2020-05-07 |  | 15d |  |  | 48h | Application: Solution Adoption | Waterfall ,Agile |  |
| 545 | 6.7.1 | Perform Assessment of Incident Management Set Up | 6d | 2020-04-30 | 2020-05-07 |  | 15d |  | Руководитель проекта (PM) | 48h | Application: Solution Adoption | Waterfall ,Agile | None (NONE) |
| 546 | 6.8 | **Technical Operations Optimized** | 3d | 2020-04-23 | 2020-04-27 | 548 | 23d |  |  | 24h | Technical Architecture & Infrastructure | Waterfall ,Agile |  |
| 547 | 6.8.1 | Perform Assessment of Technical Operations Set Up | 3d | 2020-04-23 | 2020-04-27 |  | 23d |  | Технический консультант | 24h | Technical Architecture & Infrastructure | Waterfall ,Agile | None (NONE) |
| 548 | 6.9 | **Business Process Operations Optimized** | 6d | 2020-04-15 | 2020-04-22 |  | 23d | 0d |  | 32h | Application: Solution Adoption | Waterfall ,Agile |  |
| 549 | 6.9.1 | Perform assessment of Process Operations set up | 4d | 2020-04-15 | 2020-04-22 |  | 23d |  | Технический консультант | 32h | Application: Solution Adoption | Waterfall ,Agile | None (NONE) |

Notes:
- 526: The purpose of this deliverable is to formally close the release and prepare for next release and/or sprint planning meeting. .. Procedure: .Close the phase and prepare for the next release and the sprint planning meeting. .. .. Prepare the Product Backlog for Next the Release/Sprint .. Conduct Release Retrospective .. Update the Release and Sprint plan . .
- 527: The purpose of the Prepare the Product Backlog for Next the Release/Sprint&nbsp; task is to &#39;groom&#39; the product backlog. The product owner team needs to detail the user stories to ready them for next release/sprint planning meeting. The stories need to meet the definition of &ldquo;ready&rdquo; for &ldquo;build&rdquo; so they are understood by the SCRUM team and can be estimated during the sprint planning meeting. . . Prerequisite: .. .. Review the overview details in the Release Closing deliverable . .. Procedure: .Detail user stories and prepare them for the next sprint/release meeting. .. &nbsp;
- 528: The purpose of the Conduct Release Retrospective task is to conduct retrospective meeting with the project team to identify potential improvements of the SCRUM process. The objective of this task is to serve as continuous improvement mechanism for the team to adjust to changing project environment and needs. The team will select one or two key improvements to implement in the next iteration and handles them as user stories that are added to the product backlog, prioritized and tracked along with other user stories. . . Prerequisite: .. .. Prepare the Product Backlog for Next the Release/Sprint . .. Procedure: .Conduct the release retrospective meeting with the SCRUM team to improve the SCRUM process with any enhancements.
- 529: The purpose of the Update the Release and Sprint Plan task is to update the release and sprint plan according to changed priorities and focus of the team. It is accountability of product owner to maintain the release and sprint plan and keep it current during the project. . . Prerequisite: .. .. Conduct Release Retrospective . .. Procedure: .Updated the release and sprint plan given any changed priorities and team focus.
- 530: The purpose of this phase is&nbsp;to further optimize and automate the operability of the solution. Operability is the ability to maintain IT systems in a functioning and operating condition, guaranteeing systems availability and required performance levels to support the execution of the enterprise&rsquo;s business operations. ..
- 531: The purpose of the Operations Maturity Assessment deliverable is to evaluate the SAP customer&#39;s support operations to determine areas in need of optimization . . Prerequisite: .. .. Release Closing . .. Procedure: .Evaluate the SAP customer&rsquo;s support operations and identify areas for enhancements. .. .. Perform an Evaluation and Assessment of Operations Capabilities, (including CoE Operational Setup) .. Prepare the Maturity Assessment Report .
- 532: The purpose of the Perform an Evaluation and Assessment of Operations Capabilities (including CoE Operational Setup) task is to assess business and technical requirements for operations and to define what aspects of the operations need to be adjusted, enhanced or implemented. .&nbsp;
- 533: The purpose of the Prepare the Maturity Assessment Report is to detail assessment results and findings, including proposed actions for how to bridge identified gaps. .&nbsp; .. Procedure: .. .. Close Delploy Phase with Customer .. Conduct Project Handover to Customer .. Record Lessons Learned .
- 534: Centrally document and relate business processes and technical information of SAP and non-SAP Solutions ensuring transparency, efficient maintenance and collaboration
- 535: Perform assessment of the Solution Documentation processes.
- 536: Represents the identification, adaptation and implementation of new and enhanced future-proof business and technical scenarios Is a part of the application lifecycle and is designed to decouple technical installation from business innovation Uses the SAP Solution Manager to implement the innovation in the system landscape
- 537: Re-visit result of ALM roadmap workshop from the project preparation, lessons learned findings from the implementation project and determine if potential gaps exist for the Solution Implementation area.
- 538: The template management approach allows customers with multi-site SAP installations to efficiently manage their business processes across geographical distances - from initial template definition to template implementation and template optimization, for example as part of a global rollout
- 539: Re-visit result of ALM roadmap workshop from the project preparation, lessons learned findings from the implementation project and determine if potential gaps exist for the Template Management area.
- 540: The purpose of this task is to conduct functional and performance testing of SAP-centric business processes to ensure validated system behavior after software change events
- 541: Re-visit result of ALM roadmap workshop from the project preparation, lessons learned findings from the implementation project and determine if potential gaps exist for the Test Management area.
- 542: Workflow-based management of business and technology-driven changes, with integrated project management and synchronized deployment capabilities. Standardized process leading to improved reliability of solution and minimized risk through segregation of duties and transparency of changes Efficient solution management - all project and system information is saved in SAP Solution Manager
- 543: Re-visit result of ALM roadmap workshop from the project preparation, lessons learned findings from the implementation project and determine if potential gaps exist for the Change Control Management area.
- 544: The purpose of this task is to enable a centralized and common incident and issue message processing in multiple organization levels Offers a communication channel with all relevant stakeholders of an incident. The process includes business user, SAP experts@customer, SAP Service&amp;Support and Partner Support employees. Is integrated in all ALM processes of SAP Solution Manager, in any SAP Business Suite solution and could be connected to an Non-SAP Help Desk application Includes follow up activities as knowledge research, root cause analysis or Change Management
- 545: Re-visit result of ALM roadmap workshop from the project preparation, lessons learned findings from the implementation project and determine if potential gaps exist for the Incident Management area.
- 546: Represents all capabilities for monitoring, alerting, analysis and administration of SAP solutions Allows customers to reduce TCO by predefined content and centralized tools for all aspects of operations in SAP Solution Manager Provides End-to-End reporting functionality either out-of-the-box or individually created by customers
- 547: Re-visit result of ALM roadmap workshop from the project preparation, lessons learned findings from the implementation project and determine if potential gaps exist for the Technical Operations area.
- 548: SAP Business Process Integration & Automation Management (BPIAM) comprises the most important application related operations topics necessary to ensure the smooth and reliable flow of the core business processes to meet a company's business requirements.
- 549: Perform the assessment for the Process Operations processes.

| ID | WBS | Task | Duration | Start | Finish | Predecessors | Total slack | Free slack | Resources | Work | Workstream | FLAVORS | Assembly Category |
| --- | --- | --- | --- | --- | --- | --- | --- | --- | --- | --- | --- | --- | --- |
| 550 | 6.10 | **Maintenance Management Optimized** | 6d | 2020-04-15 | 2020-04-22 |  | 21d | 0d |  | 48h | Application: Solution Adoption | Waterfall ,Agile |  |
| 551 | 6.10.1 | Perform Assessment of Maintenance Management Set Up | 6d | 2020-04-15 | 2020-04-22 |  | 21d |  | Руководитель проекта (PM) | 48h | Application: Solution Adoption | Waterfall ,Agile | None (NONE) |
| 552 | 6.11 | **Value Management** | 5d | 2020-04-23 | 2020-04-29 | 550 | 21d |  |  | 72h | Application: Solution Adoption | Waterfall ,Agile |  |
| 553 | 6.11.1 | Establish and implement a value audit strategy | 5d | 2020-04-23 | 2020-04-29 |  | 21d |  | Руководитель проекта (PM) | 40h | Application: Solution Adoption | Waterfall ,Agile |  |
| 554 | 6.11.2 | Establish and implement a benchmarking strategy | 4d | 2020-04-23 | 2020-04-28 |  | 22d |  | Бизнес-аналитик (BA) | 32h | Application: Solution Adoption | Waterfall ,Agile |  |

Notes:
- 550: SAP Notes provide a solution for known issues. SAP Notes are usually applied upon request (e.g. current incident in productive environment, information from SAP about potential issue (Hot News, Security Notes)). SAP Notes are collected and released as Support Packages. Support Packages are applied to SAP solutions to comply with legal requirements or run on latest technology.
- 551: Re-visit result of ALM roadmap workshop from the project preparation, lessons learned findings from the implementation project and determine if potential gaps exist for the Maintenance Management area.
- 552: The objective is to ensure the customer plans for long-term value value management strategy. This would help in ensuring expected benefits are realized in the long term, and that any gaps which might develop are adressed. .
- 553: Define periodic analysis of the value dashboards to ensure expected value is being realized. Trend analysis reports should be defined to monitor KPI behavior long term. .
- 554: Execute periodic benchmarking analysis (to compare KPIs of organization with other similar organizations) to ensure competitive advantages are maintained or enhanced. The SAP Value Lifecycle Management tool can be leveraged for this task. .
